# Post LOS Schedule

Schedule from Primavera P6, 2024-12-02 to 2026-04-15, data date 2025-04-22, A marks actual dates.
Must finish by 2026-04-15

## Calendars

- B11-Standard 5 day Workweek: Mon-Fri 08:00-12:00, 13:00-17:00; Sat-Sun off. Exceptions (off unless hours are given): 2024-12-23 to 2024-12-27, 2024-12-30 to 2025-01-03, 2025-01-06, 2025-04-16 to 2025-04-18, 2025-04-21 to 2025-04-25, 2025-05-29, 2025-06-09, 2025-06-26, 2025-08-15, 2025-12-17 to 2025-12-19, 2025-12-22 to 2025-12-26, 2025-12-29 to 2026-01-02, 2026-01-05, 2026-04-03, 2026-04-06.
- B11-Standard 5 day workweek - No Shutdown: Mon-Fri 08:00-12:00, 13:00-17:00; Sat-Sun off. Exceptions (off unless hours are given): 2025-05-29, 2025-06-09, 2025-06-26, 2025-08-15.

## Resources

| Resource | Group | Notes |
| --- | --- | --- |
| External Affairs dist | equipment |  |
| Contract Preparation dist | equipment |  |
| Project Implementation Schedule dist | equipment |  |
| Approvals and Permits dist | equipment |  |
| Land Acquisition dist | equipment |  |
| Ground Security dist | equipment |  |
| COLAS | equipment |  |
| Geotechnical Test Pit Team | equipment |  |
| PRDW | labor |  |
| Baseline Study dist | equipment |  |
| PGES Preparation dist | equipment |  |
| Geotechnical Drilling Rig 1 | equipment |  |
| Site Survey dist | equipment |  |
| Jaco van der Merwe | labor | Resource Note |
| COLAS Design and Construct | equipment |  |
| Community Relation dist | equipment |  |

## Schedule

| ID | WBS | Activity | Type | Duration | Start | Finish | Predecessors | Complete | Planned start | Planned finish | Total float | Free float | Constraint | Calendar | Site Activity | Department | Level 3 WBS | Site Area | Business Area | Contract Area | ESMS Responsibility | Schedule Comments |
| --- | --- | --- | --- | --- | --- | --- | --- | --- | --- | --- | --- | --- | --- | --- | --- | --- | --- | --- | --- | --- | --- | --- |
|  | 1 | **Project Milestones** |  |  | 2024-12-02 | 2026-04-15 |  |  |  |  |  |  |  |  |  |  |  |  |  |  |  |  |
|  | 1 | **Key Milestones** |  |  | 2024-12-02 | 2026-04-15 |  |  |  |  |  |  |  |  |  |  |  |  |  |  |  |  |
| M1000 |  | Commence Post LoS activities | milestone | 0d | 2024-12-02 A | 2024-12-02 A |  | 100% |  |  |  |  |  |  | UDF_G1 | EA | 1 | OS |  |  |  |  |
| M1040 |  | Southern communities access and social licence obtained (ceremonies complete) | milestone | 0d | 2025-04-22 | 2025-04-22 | A1340 FF, A1275 FF |  |  |  | -0.21d | 0d | mandatory finish 2025-04-22 | B11-Standard 5 day workweek - No Shutdown | UDF_G1 | CR | 1 | BB | CTY | CA-06 |  |  |
| M1030 |  | Northern communities access and social licence obtained (ceremonies complete) | milestone | 0d | 2025-04-22 A | 2025-04-22 A | A1170 FF, A1095 FF, A1100 FF | 100% | 2025-05-02 | 2025-05-02 |  |  | finish on or after 2025-04-22 | B11-Standard 5 day workweek - No Shutdown | UDF_G1 | CR | 1 | MS | CTY | CA-05 |  |  |
| M1080 |  | Bankable Feasibility Study (BFS) Complete | milestone | 0d | 2025-06-20 | 2025-06-20 | A9540 FF-10d, A9600 FF+10d |  |  |  | 134d | 133.21d |  |  | UDF_G1 | PD | 1 | OS |  |  |  |  |
| M1050 |  | Marine geotechnical investigation start | milestone | 0d | 2025-07-03 | 2025-07-03 | A4870 FF, M1040 FF, A4970 FF, A10200 FF, A10280 SF+30d |  |  |  | 9.79d | 0d |  |  | UDF_G1 | T | 1 | BB | GEO |  |  |  |
| M1070 |  | EPCM post-FID SOW updated and Contracts awarded | milestone | 0d | 2025-07-23 | 2025-07-23 | A8580 FF, A8590 FF, A8600 FF, A8610 FF |  |  |  | 110d | 100.21d |  |  | UDF_G1 | PD | 1 | OS |  |  |  |  |
| M1330 |  | Stakeholder Disclosure Complete for all project areas | milestone | 0d | 2025-07-31 | 2025-07-31 | A3480 FF, A10210 FF, A10240 FF, M1030 FF, A10290 FF, M1040 FF, A10300 FF |  |  |  | 15.79d | 0d |  |  | UDF_G1 | ESMS | 2 | OS | ENV | CA-01 | SOC |  |
| M1340 |  | Baseline Studies Complete for all project areas | milestone | 0d | 2025-08-14 | 2025-08-14 | A3490 FF, A7880 FF, A10250 FF, A10280 FF, M1030 FF+10d, A10290 FF+10d, M1040 FF+10d, A10300 FF+10d |  |  |  | 0.79d | 0d |  |  | UDF_G1 | ESMS | 2 | OS | ENV | CA-01 | ENV |  |
| M1100 |  | Indicative offtake terms agreed with customers (non JV) | milestone | 0d | 2025-09-10 | 2025-09-10 | A8460 FF |  |  |  | 39d | 0d |  |  | UDF_G1 | PD | 1 | OS |  |  |  |  |
| M1310 |  | PIP update complete | milestone | 0d | 2025-10-02 | 2025-10-02 | A8620 FF |  |  |  | 92d | 91.21d |  |  | UDF_G1 | PD | 1 | OS | PCS |  |  | PIP Complete |
| M1150 |  | LGIM agreement complete | milestone | 0d | 2025-10-09 | 2025-10-09 | A8240 FF |  |  |  | 118d |  |  |  | UDF_G1 | L | 1 | OS |  |  |  |  |
| M1090 |  | PPA FEED portion of the power Contract awarded (Power plant) | milestone | 0d | 2025-10-23 | 2025-10-23 | A5620 FF |  |  |  | 22d | 0d |  |  | UDF_G1 | T | 1 | OS |  |  |  |  |
| M1130 |  | Permits and approvals for Port Causeway construction obtained | milestone | 0d | 2025-10-23 | 2025-10-23 | A3470 FF, A3540 FF |  |  |  | 27d | 20d |  |  | UDF_G1 | ESMS | 1 | BB | ENV |  | SOC |  |
| M1160 |  | Quarry and Borrow Pits PGES approved | milestone | 0d | 2025-10-30 | 2025-10-30 | A2650 FF, A3110 FF |  |  |  | 72d | 71.21d |  |  | UDF_G1 | ESMS | 1 | MS | ENV |  | SOC |  |
| M1120 |  | HRAA study complete | milestone | 0d | 2025-11-20 | 2025-11-20 | A4630 FF |  |  |  | 3.79d | 0d |  |  | UDF_G1 | ESMS | 1 | HRN | ENV |  | SOC | HRAA ......... |
| M1170 |  | Award HRS (Phase 1) EW access road and contractor pad and revetments construction contract | milestone | 0d | 2025-12-15 | 2025-12-15 | A4260 FF |  |  |  | 15.79d | 0d |  |  | UDF_G1 | T | 2 | BB |  |  |  | HRS - Haul Road South ? - Only budget for Pad in FY25 |
| M1110 |  | Access Roads and Camp PGES approved | milestone | 0d | 2026-01-09 | 2026-01-09 | A6640 FF |  |  |  | 20.79d | 0d |  |  | UDF_G1 | ESMS | 1 | CMP | ENV |  | SOC |  |
| M1240 |  | Ground Water Model update complete | milestone | 0d | 2026-01-15 | 2026-01-15 | A1620 FF |  |  |  | 37.79d | 37d |  |  | UDF_G1 | ESMS | 1 | MS | ENV |  | ENV |  |
| M1140 |  | Award pioneer contract (quarry materials stockpiling) | milestone | 0d | 2026-01-22 | 2026-01-22 | A3320 FF |  |  |  | 36.79d | 0d |  |  | UDF_G1 | T | 2 | MS |  |  |  | Ready for Award ? |
| M1300 |  | Water abstraction licence's obtained | milestone | 0d | 2026-02-13 | 2026-02-13 | A1590 FF, A2000 FF |  |  |  | 41.79d |  |  |  | UDF_G1 | ESMS | 1 | MS | ENV |  | SOC | Project ? |
| M1260 |  | Execute JV and offtake agreements | milestone | 0d | 2026-02-17 | 2026-02-17 | A8470 FF |  |  |  | 39d |  |  |  | UDF_G1 | PD | 1 | OS |  |  |  | ?? |
| M1190 |  | Financial model updated | milestone | 0d | 2026-02-23 | 2026-02-23 | A9490 FF |  |  |  | 10.69d | 0d |  |  | UDF_G1 | PD | 1 | OS | FIN |  |  | For FID ... what about initial ? |
| M1250 |  | Project PGE submitted for approval | milestone | 0d | 2026-03-09 | 2026-03-09 | A7990 FF |  |  |  | 0.79d | 0d |  |  | UDF_G1 | ESMS | 1 | OS | ENV |  | SOC |  |
| M1280 |  | Mine Site PGES approved | milestone | 0d | 2026-03-17 | 2026-03-17 | A5740 FF |  |  |  | 9.79d | 0d |  |  | UDF_G1 | ESMS | 1 | MS | ENV |  | SOC |  |
| M1210 |  | Export Facility and Marine PGES approved | milestone | 0d | 2026-03-18 | 2026-03-18 | A5000 FF |  |  |  | 9.79d | 0d |  |  | UDF_G1 | ESMS | 1 | BB | ENV |  | SOC |  |
| M1270 |  | Term Sheet Finalised | milestone | 0d | 2026-03-23 | 2026-03-23 | A8370 FF |  |  |  | 10.69d | 0d |  |  | UDF_G1 | PD | 1 | OS |  |  |  |  |
| M1220 |  | Haul Road North and Firehenana Bridge PGES approved | milestone | 0d | 2026-03-26 | 2026-03-26 | A4510 FF |  |  |  | 2.79d | 0d |  |  | UDF_G1 | ESMS | 1 | HRN | ENV |  | SOC |  |
| M1290 |  | Lender credit approval finalised | milestone | 0d | 2026-03-30 | 2026-03-30 | A8380 FF |  |  |  | 10.69d | 0d |  |  | UDF_G1 | PD | 1 | OS | FIN |  |  |  |
| M1230 |  | FID contracts (11) finalised | milestone | 0d | 2026-04-01 | 2026-04-01 | A4780 FF, A5170 FF, A5450 FF, A5600 FF, A6150 FF, A6450 FF, A6720 FF, A6940 FF, A7130 FF, A7260 FF, A7330 FF |  |  |  | 8.79d |  |  |  | UDF_G1 | T | 3 | OS | CAM |  |  | Ready for Award ? |
| M1320 |  | FID | milestone | 0d | 2026-04-15 | 2026-04-15 | A8010 FF, A3340 FF, A4270 FF+20d, A3660 FF+60d, A8450 FF, A9580 FF, A4450 FF, A9150 FF, A9250 FF, A9210 FF, A9220 FF, A2070 FF, A1720 FF, A1770 FF, A1820 FF, A1870 FF, A1910 FF, A1970 FF, A5590 FF, A4520 FF, A4530 FF, A5750 FF, A5710 FF, A6140 FF, A6940 FF, A7010 FF, A7060 FF, A7260 FF, A7130 FF, A7330 FF, A8390 FF, A8940 FF, A9370 FF, A9350 FF, A9390 FF, A9360 FF, A9330 FF, A9340 FF, A9380 FF, A4280 FF+35d, A3980 FF, A5010 FF, A5170 FF, A5450 FF, A6150 FF, A6320 FF, A6450 FF, M1300 FF, M1150 FF, M1260 FF, M1230 FF, A4780 FF, A6720 FF, A9470 FF, A7160 FF, A1170 FF, A9980 FF, A6600 FF, A2330 FF, A2350 FF, A2370 FF, A2380 FF, A8030 FF, M1290 FF+0.1d, A7350 FF, A9610 FF, A9970 SF+2d, A7720 (other project) FF, A7770 (other project) FF, A7820 (other project) FF, A10490 FF, A10540 FF, A10590 FF, A6270 FF, A6280 FF, M1220 FF, A6650 FF, A6790 FF, A1990 FF, M1110 FF |  |  |  | 0d |  |  |  | UDF_G1 | PD | 1 | OS |  |  |  |  |

Notes:
- M1000: Comments: 2024-10-03 00:00:00>Jaco van der Merwe / This is a test message

| ID | WBS | Activity | Duration | Start | Finish | Predecessors | Complete | Planned start | Planned finish | Total float | Free float | Constraint | Resources | Schedule Comments | Site Activity | Department | Business Area | Site Area | Level 3 WBS | Contract Area |
| --- | --- | --- | --- | --- | --- | --- | --- | --- | --- | --- | --- | --- | --- | --- | --- | --- | --- | --- | --- | --- |
|  | 2 | **Site Access Activities** |  | 2024-12-02 | 2025-05-02 |  |  |  |  |  |  |  |  |  |  |  |  |  |  |  |
|  | 1 | **Post LOS Mobilisation** |  | 2024-12-02 | 2024-12-20 |  |  |  |  |  |  |  |  |  |  |  |  |  |  |  |
| A1000 |  | Post LOS Mobilisation | 15d | 2024-12-02 A | 2024-12-20 A | M1000 | 100% |  |  |  |  |  |  | Remove M/Stone | UDF_G1 | CR | CTY | OS |  |  |
|  | 2 | **Access to Mine Site** |  | 2024-12-09 | 2025-05-02 |  |  |  |  |  |  |  |  |  |  |  |  |  |  |  |
|  | 1 | **Secure access to Mine site** |  | 2024-12-09 | 2025-05-02 |  |  |  |  |  |  |  |  |  |  |  |  |  |  |  |
| A1060 |  | LOS celebrations (Mine site access) | 10d | 2024-12-09 A | 2025-01-07 A | A1000 | 100% | 2025-01-07 | 2025-01-20 |  |  |  | Ground Security dist [80 h] |  | UDF_G3 | CR | CTY | MS | 3 | CA-05 |
| A1070 |  | Develop Joint action plan (JAP) with Prefect (Mine site access) | 5d | 2024-12-16 A | 2024-12-20 A | A1000 | 100% | 2025-01-07 | 2025-01-13 |  |  |  |  |  | UDF_G1 | EA | CTY | MS | 3 | CA-05 |
| A1075 |  | Brief Mayors of the Four Northern Communes on the official ceremony (Mine site access) | 1d | 2024-12-20 A | 2024-12-20 A | A1070 | 100% | 2025-01-13 | 2025-01-13 |  |  |  | External Affairs dist [8 h] |  | UDF_G1 | EA | CTY | MS | 3 | CA-05 |
| A1080 |  | Socialise JAP with the Prefect, Governors and Security Council (OMC) (Mine site access) | 5d | 2025-01-07 A | 2025-01-13 A | A1070, A1075 FF | 100% | 2025-01-20 | 2025-01-24 |  |  |  |  |  | UDF_G1 | EA | CTY | MS | 3 | CA-05 |
| A1090 |  | Update Social Agreement (Mine site access) | 5d | 2025-01-20 A | 2025-01-21 A | A1100 FF | 100% | 2025-01-27 | 2025-01-31 |  |  |  |  |  | UDF_G1 | CR | CTY | MS | 3 | CA-05 |
| A1095 |  | Binding Ceremony and Zebu killing (Mine site access) | 1d | 2025-01-24 A | 2025-01-24 A | A1060, A1070, A1075, A1080, A1090 | 100% | 2025-02-04 | 2025-02-05 |  |  |  | Ground Security dist [8 h] |  | UDF_G3 | CR | CTY | MS |  | CA-05 |
| A1120 |  | Discussions with MAZOTO & other mine site associations to list expectations for Social Agreement (Mine site access) | 7d | 2025-01-27 A | 2025-02-13 A | A1090 | 100% | 2025-01-27 | 2025-02-04 |  |  |  |  |  | UDF_G1 | CR | CTY | MS | 3 | CA-05 |
| A1110 |  | Review immediate social project and validate with the mine site stakeholders (Mine site access) | 5d | 2025-02-03 A | 2025-02-13 A | A1090 | 100% | 2025-02-03 | 2025-02-07 |  |  |  |  |  | UDF_G1 | CR | CTY | MS | 3 | CA-05 |
| A1130 |  | Negotiate the draft Social Agreement (Led by Governor and Prefect) (Mine site access) | 1d | 2025-02-14 A | 2025-02-14 A | A1120, A1110 | 100% |  |  |  |  |  | Community Relation dist [8 h] |  | UDF_G1 | CR | CTY | MS | 3 | CA-05 |
| A1140 |  | Second review and finalisation of Social Agreement (Mine site access) | 2d | 2025-02-17 A | 2025-02-18 A | A1130 | 100% |  |  |  |  | start on or after 2025-02-04 | Community Relation dist [16 h] |  | UDF_G1 | CR | CTY | MS | 3 | CA-05 |
| A1150 |  | Submit Social Agreement for approval (Mine site access) | 1d | 2025-02-19 A | 2025-02-19 A | A1140 | 100% |  |  |  |  |  | Community Relation dist [8 h] |  | UDF_G1 | CR | CTY | MS | 3 | CA-05 |
| A1160 |  | Arrange Social Agreement signing ceremony (Mine site access) | 2d | 2025-02-20 A | 2025-02-21 A | A1150 | 100% |  |  |  |  |  | Community Relation dist [40 h] |  | UDF_G1 | CR | CTY | MS | 3 | CA-05 |
| A1170 |  | Sign of Social Agreement (Mine site access) | 2d | 2025-02-24 A | 2025-02-25 A | A1160 | 100% |  |  |  |  |  | Community Relation dist [40 h]; Ground Security dist [16 h] |  | UDF_G3 | CR | CTY | MS | 5 | CA-05 |
| A1100 |  | Finalise Joint Action Plan (upon lifting of suspension) (Mine site access) | 5d | 2025-04-28 | 2025-05-02 | A1080 |  |  |  | 45d | 0d | start on or after 2025-04-07 |  |  | UDF_G1 | CR | CTY | MS | 3 | CA-05 |
|  | 3 | **Access to Batterie Beach** |  | 2024-12-02 | 2025-04-30 |  |  |  |  |  |  |  |  |  |  |  |  |  |  |  |
|  | 1 | **Secure access to batterie beach** |  | 2024-12-02 | 2025-04-30 |  |  |  |  |  |  |  |  |  |  |  |  |  |  |  |
| A1230 |  | LOS celebrations (Batterie Beach access) | 10d | 2024-12-02 A | 2024-12-16 A | M1000 SS, A1000 | 100% | 2025-02-05 | 2025-02-19 |  |  | start on or after 2025-02-05 | Ground Security dist [80 h] |  | UDF_G3 | CR | CTY | BB | 2 | CA-06 |
| A1240 |  | Develop Joint action plan (JAP) with Prefect (Batterie beach access) | 5d | 2024-12-16 A | 2024-12-20 A | A1000 | 100% | 2025-01-07 | 2025-01-13 |  |  |  |  |  | UDF_G1 | EA | CTY | BB | 2 | CA-06 |
| A1245 |  | Brief Mayors of Toliara I and Toliara II on the official ceremony in Batterie Beach (Batterie beach access) | 1d | 2024-12-20 A | 2024-12-20 A | A1240 | 100% | 2025-01-13 | 2025-01-13 |  |  |  | External Affairs dist [8 h] |  | UDF_G1 | EA | CTY | BB | 1 | CA-06 |
| A1250 |  | Socialise JAP with the Prefect, Governors and Security Council (OMC) (Batterie beach access) | 5d | 2025-01-28 A | 2025-02-04 A | A1240, A1245 FF | 100% |  |  |  |  |  |  |  | UDF_G1 | EA | CTY | BB | 2 | CA-06 |
| A1280 |  | Discussions with ZANADRIAKE & fisherman's associations to list expectations for Social Agreement (Batterie beach access) | 8d | 2025-02-18 A | 2025-02-28 A | A1260 | 100% |  |  |  |  |  | Community Relation dist [64 h] |  | UDF_G1 | CR | CTY | BB | 2 | CA-06 |
| A1290 |  | Review immediate social project and validate with the fisherman and batterie beach stakeholders (Batterie beach access) | 9d | 2025-02-25 A | 2025-03-07 A | A1245 | 100% |  |  |  |  | start on or after 2025-02-25 | Community Relation dist [72 h] |  | UDF_G1 | CR | CTY | BB | 2 | CA-06 |
| A1300 |  | Negotiate the draft Social Agreement (Led by Governor and Prefect) (Batterie beach access) | 1d | 2025-03-03 A | 2025-03-04 A | A1280, A1290 | 100% |  |  |  |  |  | Community Relation dist [8 h] |  | UDF_G1 | CR | CTY | BB | 2 | CA-06 |
| A1310 |  | Second review and finalisation of Social Agreement (Batterie beach access) | 4d | 2025-03-04 A | 2025-03-10 A | A1300 | 100% |  |  |  |  |  | Community Relation dist [32 h] |  | UDF_G1 | CR | CTY | BB | 2 | CA-06 |
| A1260 |  | Update the draft Social Agreement according to the JAP (Batterie beach access) | 1d | 2025-04-28 | 2025-04-28 | A1000, A1270 FF |  |  |  | -2d | 1d | start on or after 2025-04-07 | Community Relation dist [8 h] |  | UDF_G1 | CR | CTY | BB | 2 | CA-06 |
| A1270 |  | Finalise Joint action plan (Batterie beach access) | 1d | 2025-04-28 | 2025-04-28 | A1250 |  |  |  | -2d | 0d | start on or after 2025-04-07 | Community Relation dist [40 h] |  | UDF_G1 | CR | CTY | BB | 2 | CA-06 |
| A1320 |  | Submit Social Agreement for approval (Batterie beach access) | 1d | 2025-04-28 | 2025-04-28 | A1310 |  |  |  | -3d | 0d | start on or after 2025-04-07 | Community Relation dist [8 h] |  | UDF_G1 | CR | CTY | BB | 2 | CA-06 |
| A1330 |  | Arrange Social Agreement signing ceremony (Batterie beach access) | 1d | 2025-04-29 | 2025-04-29 | A1320 |  |  |  | -3d | 0d |  | Community Relation dist [40 h] |  | UDF_G1 | CR | CTY | BB | 2 | CA-06 |
| A1275 |  | Binding Ceremony and Zebu killing (Batterie beach access) | 1d | 2025-04-30 | 2025-04-30 | A1240, A1245, A1245 FF, A1250, A1260, A1340 FF |  |  |  | -3d | 0d |  | Ground Security dist [8 h]; Community Relation dist [8 h] |  | UDF_G3 | CR | CTY | BB |  | CA-06 |
| A1340 |  | Sign Social Agreement (Batterie beach access) | 1d | 2025-04-30 | 2025-04-30 | A1330, A1230 |  |  |  | -3d | 0d |  | Community Relation dist [40 h] |  | UDF_G1 | CR | CTY | BB | 4 | CA-06 |

Notes:
- A1120: Schedule Comments: Is this ZANADRIAKE? or MAZUTU

| ID | WBS | Activity | Duration | Start | Finish | Predecessors | Complete | Remaining | Planned start | Planned finish | Total float | Free float | Constraint | Resources | Site Activity | Department | Business Area | Site Area | Contract Area | Process | Level 3 WBS | Placeholder | Schedule Comments | Permit Verified By MB | ESMS Responsibility |
| --- | --- | --- | --- | --- | --- | --- | --- | --- | --- | --- | --- | --- | --- | --- | --- | --- | --- | --- | --- | --- | --- | --- | --- | --- | --- |
|  | 3 | **Early Works Activities** |  | 2024-12-09 | 2026-02-20 |  |  |  |  |  |  |  |  |  |  |  |  |  |  |  |  |  |  |  |  |
|  | SS | **Site Survey** |  | 2024-12-09 | 2025-08-11 |  |  |  |  |  |  |  |  |  |  |  |  |  |  |  |  |  |  |  |  |
|  | 3 | **Environmental** |  | 2025-04-28 | 2025-05-09 |  |  |  |  |  |  |  |  |  |  |  |  |  |  |  |  |  |  |  |  |
| A1350 |  | Obtain Environmental Permits for site survey | 10d | 2025-04-28 | 2025-05-09 | A1000 |  |  |  |  | 141d | 38d |  | Approvals and Permits dist [80 h] | UDF_G1 | AP | ENV | MS | CA-07 | PR-6 |  |  |  |  |  |
|  | 4 | **Technical** |  | 2024-12-09 | 2024-12-13 |  |  |  |  |  |  |  |  |  |  |  |  |  |  |  |  |  |  |  |  |
| A1360 |  | Prepare Strategy for site survey | 10d | 2024-12-09 A | 2024-12-13 A | A1000 | 100% |  | 2025-01-13 | 2025-01-24 |  |  |  |  | UDF_G1 | T | 18 | MS | CA-07 |  | 1 |  |  |  |  |
|  | 5 | **Procurement** |  | 2024-12-09 | 2025-02-21 |  |  |  |  |  |  |  |  |  |  |  |  |  |  |  |  |  |  |  |  |
| A1370 |  | Prepare RFT and issue to contractors for site survey | 10d | 2024-12-09 A | 2024-12-13 A | A1360 FF | 100% |  | 2025-01-13 | 2025-01-24 |  |  |  |  | UDF_G1 | T | PRO | MS | CA-07 | PR-13 | 2 |  |  |  |  |
| A1630 |  | Receive Tenders for site survey | 40d | 2024-12-14 A | 2025-01-28 A | A1370 | 100% |  | 2025-01-20 | 2025-03-14 |  |  |  |  | UDF_G1 | T | PRO | MS | CA-07 |  |  | UDF_G4 |  |  |  |
| A1640 |  | Adjudicate, clarify and select preferred contractor for site survey | 15d | 2025-01-28 A | 2025-02-21 A | A1630 | 100% |  | 2025-01-28 | 2025-02-18 |  |  | finish on or after 2025-02-12 |  | UDF_G1 | T | PRO | MS | CA-07 | PR-17 |  |  |  |  |  |
| A1380 |  | Award construction contract for site survey | 9d | 2025-02-20 A | 2025-02-21 A | A1370, A1640 | 100% |  | 2025-02-21 | 2025-03-06 |  |  |  |  | UDF_G1 | T | PRO | MS | CA-07 |  | 3 |  |  |  |  |
|  | 7 | **Construction** |  | 2025-06-23 | 2025-08-11 |  |  |  |  |  |  |  |  |  |  |  |  |  |  |  |  |  |  |  |  |
| A1390 |  | Mobilise contractor to site for site survey | 10d | 2025-06-23 | 2025-07-07 | A1380, M1030 |  |  |  |  | 14d | 0d | start on or after 2025-06-22 | Ground Security dist [80 h] | UDF_G3 | T | 18 | MS | CA-07 | PR-18 |  |  |  |  |  |
| A1400 |  | Install control beacons for site survey | 15d | 2025-07-08 | 2025-07-28 | A1390, A1350, A1150 |  |  |  |  | 103d | 0d |  | Ground Security dist [120 h] | UDF_G3 | T | 18 | MS | CA-07 |  | 4 |  |  |  |  |
| A1430 |  | Survey port causeway for site survey | 10d | 2025-07-08 | 2025-07-21 | A1000, A1390 |  |  |  |  | 14d | 7d | start on or after 2025-06-15 | Ground Security dist [80 h]; Site Survey dist [40 h] | UDF_G3 | T | 18 | PRT | CA-07 |  |  |  |  |  |  |
| A1410 |  | Survey Haul road south center lines for site survey | 10d | 2025-07-29 | 2025-08-11 | A1400, A1360 |  |  |  |  | 104d | 88.21d |  | Ground Security dist [80 h]; Site Survey dist [80 h] | UDF_G3 | T | 18 | BB | CA-07 |  |  |  |  |  |  |
| A1440 |  | Survey existing fibre optic line for site survey | 10d | 2025-07-29 | 2025-08-11 | A1400, A1360 |  |  |  |  | 103d | 87.21d |  | Ground Security dist [80 h]; Site Survey dist [40 h] | UDF_G3 | T | 18 | MS | CA-07 |  | 5 |  | Will be done closer to construction |  |  |
|  | GWD (PW) | **Ground Water Development (Process Water)** |  | 2024-12-09 | 2026-02-19 |  |  |  |  |  |  |  |  |  |  |  |  |  |  |  |  |  |  |  |  |
|  | 2 | **Permits and Approvals** |  | 2025-04-28 | 2025-05-05 |  |  |  |  |  |  |  |  |  |  |  |  |  |  |  |  |  |  |  |  |
| A10130 |  | Social Permit (Notification of National Departments (ONE, DREDD, Mines, etc)) | 6d | 2025-04-28 | 2025-05-05 | M1000 |  |  |  |  | 39d | 24.21d |  | Approvals and Permits dist [48 h] | UDF_G1 | AP |  | BB | CA-08 | PR-6 | 5 |  |  | UDF_G3 |  |
| A10180 |  | PAPs verification & compensation (GWM) | 5d | 2025-04-28 | 2025-05-02 | M1030 |  |  |  |  | 39d | 0d |  | Approvals and Permits dist [424 h] | UDF_G1 | AP |  | BB | CA-08 | PR-6 |  |  |  | UDF_G3 |  |
| A10190 |  | Vegetation Clearance Permit (GWM) | 5d | 2025-04-29 | 2025-05-05 | A10180 FF+1d, M1030 |  |  |  |  | 39d | 24.21d |  | Approvals and Permits dist [400 h] | UDF_G1 | AP |  | CMP | CA-08 | PR-6 |  |  |  | UDF_G3 |  |
|  | 3 | **Environmental** |  | 2025-03-24 | 2026-02-13 |  |  |  |  |  |  |  |  |  |  |  |  |  |  |  |  |  |  |  |  |
| A1980 |  | Engage with ANDEA to understand permitting process (All boreholes) | 30d | 2025-03-24 A | 2025-06-02 | A1000, M1030 FF+3d |  | 25d | 2025-03-24 | 2025-05-15 | 48d | 0d |  | External Affairs dist [240 h] | UDF_G1 | ESMS | ENV | MS | CA-08 | PR-19 | 10 |  |  |  | SOC |
| A1540 |  | Obtain drilling authorisation permit from ANDEA (Process water) | 20d | 2025-05-05 | 2025-06-02 | M1000 FF, A1000, A1980 FF, M1030 FF+5d |  |  |  |  | 48d | 10.21d |  | Approvals and Permits dist [160 h] | UDF_G1 | AP | ENV | MS | CA-08 | PR-19 | 11 |  |  |  |  |
| A1590 |  | Apply for process water boreholes abstraction permit | 1d | 2026-01-15 | 2026-01-16 | A1580, A1620 |  |  |  |  | 41.79d | 0d |  | Approvals and Permits dist [8 h] | UDF_G1 | AP | ENV | MS | CA-08 | PR-19 |  |  |  |  |  |
| A2000 |  | Obtain water abstraction permit application review by ANDEA | 20d | 2026-01-16 | 2026-02-13 | A1590 |  |  |  |  | 41.79d | 0d |  | Approvals and Permits dist [160 h] | UDF_G1 | AP | ENV | MS | CA-08 | PR-19 |  |  |  |  |  |

| ID | WBS | Activity | Duration | Start | Finish | Predecessors | Complete | Planned start | Planned finish | Total float | Free float | Constraint | Resources | Site Activity | Department | Business Area | Site Area | Contract Area | Process | Level 3 WBS |
| --- | --- | --- | --- | --- | --- | --- | --- | --- | --- | --- | --- | --- | --- | --- | --- | --- | --- | --- | --- | --- |
|  | 4 | **Technical** |  | 2024-12-09 | 2026-01-15 |  |  |  |  |  |  |  |  |  |  |  |  |  |  |  |
| A1600 |  | KP to confirm borehole locations (Process Water + PW Monitoring Bores) | 10d | 2024-12-09 A | 2024-12-20 A | A1000, A8530 | 100% | 2025-02-18 | 2025-03-03 |  |  |  | Ground Security dist [80 h] | UDF_G3 | T | 20 | MS | CA-08 |  |  |
| A1610 |  | Investigate of northern borehole is viable and verify diameter TPW-2 (Process Water) | 0d | 2025-01-27 A | 2025-01-27 A | A1600 | 100% |  |  |  |  |  | Jaco van der Merwe; Ground Security dist | UDF_G3 | T | 20 | MS | CA-08 |  |  |
| A1620 |  | Update the Ground Water Model and Prepare Report (Process Water) | 30d | 2025-11-14 | 2026-01-15 | A1710, A1760, A1810, A1860, A1920, A10470 |  |  |  | 37.79d | 0d |  | COLAS [240 h] | UDF_G1 | T | 20 | MS | CA-08 |  |  |
|  | 5 | **Procurement** |  | 2025-01-30 | 2025-03-03 |  |  |  |  |  |  |  |  |  |  |  |  |  |  |  |
| A2020 |  | Receive tenders for drilling contract (Process Water + PW Monitoring Bores) | 1d | 2025-01-30 A | 2025-01-30 A | M1000 | 100% |  |  |  |  | finish on 2025-01-30 |  | UDF_G1 | T |  | MS | CA-08 |  |  |
| A2030 |  | Adjudicate Clarify and select prefered contractor (Process Water + PW Monitoring Bores) | 10d | 2025-01-31 A | 2025-02-13 A | A2020 | 100% |  |  |  |  |  |  | UDF_G1 | T |  | MS | CA-08 | PR-17 |  |
| A1660 |  | Legal review of contract (Process Water + PW Monitoring Bores) | 5d | 2025-02-14 A | 2025-02-20 A | A2030 | 100% |  |  |  |  |  |  | UDF_G1 | T |  | MS | CA-08 | PR-16 |  |
| A1650 |  | Draft contract and letter of acceptance (Process Water + PW Monitoring Bores) | 4d | 2025-02-20 A | 2025-02-25 A | A2030, A1660 | 100% | 2025-02-11 | 2025-02-14 |  |  | start on or after 2025-01-31 |  | UDF_G1 | T |  | MS | CA-08 |  |  |
| A1670 |  | Award drilling contract (Process Water + PW Monitoring Bores) | 1d | 2025-03-03 A | 2025-03-03 A | A1660, A1650 | 100% | 2025-03-17 | 2025-03-17 |  |  | start on or after 2025-03-17 |  | UDF_G1 | T |  | MS | CA-08 |  |  |
|  | 7 | **Construction** |  | 2025-05-05 | 2026-02-19 |  |  |  |  |  |  |  |  |  |  |  |  |  |  |  |
|  | 1 | **Borehole 1** |  | 2025-05-05 | 2025-07-17 |  |  |  |  |  |  |  |  |  |  |  |  |  |  |  |
| A1690 |  | Mobilise contractor to Borehole 1 (Process Water) | 30d | 2025-05-05 | 2025-06-18 | A1600 FF+5d, A1000, A1670 FS+7d, M1030 |  |  |  | 14.79d | 0d | as late as possible | Ground Security dist [240 h] | UDF_G3 | T | 20 | MS | CA-08 | PR-18 | 1 |
| A1680 |  | Clear vegetation for Water Borehole 1 (Process Water) | 5d | 2025-06-11 | 2025-06-18 | A1600, A1000, M1030, A10190, A1690 FF, A10250 SS+15d, A10130 |  |  |  | 14.79d | 0d |  | Ground Security dist [40 h] | UDF_G3 | T | 20 | MS | CA-08 |  | 1 |
| A1700 |  | Drill Borehole 1 (Process Water) | 10d | 2025-06-18 | 2025-07-03 | A1690, A1610, A1540, A1680 |  |  |  | 37.79d | 0d |  | Ground Security dist [160 h] | UDF_G3 | T | 20 | MS | CA-08 | PR-8 | 1 |
| A1720 |  | Test Water Quality on Borehole 1 (Process Water) | 10d | 2025-07-03 | 2025-07-17 | A1700 |  |  |  | 177.79d |  |  | Ground Security dist [80 h] | UDF_G3 | T | 20 | MS | CA-08 |  | 1 |
| A1710 |  | Step test Borehole 1 (Process Water) | 5d | 2025-07-10 | 2025-07-16 | A1700, A2080 |  |  |  | 113d | 5d |  | Ground Security dist [24 h] | UDF_G3 | T | 20 | MS | CA-08 | PR-7 | 1 |
|  | 2 | **Borehole 2** |  | 2025-06-18 | 2025-08-05 |  |  |  |  |  |  |  |  |  |  |  |  |  |  |  |
| A1730 |  | Clear vegetation for Borehole 2 (Process Water) | 5d | 2025-06-18 | 2025-06-25 | A1600, A1000, A1680 |  |  |  | 19.79d | 0d |  | Ground Security dist [40 h] | UDF_G3 | T | 20 | MS | CA-08 |  | 2 |
| A1740 |  | Mobilise contractor to Borehole 2 (Process Water) | 3d | 2025-07-03 | 2025-07-08 | A1700 |  |  |  | 37.79d | 0d |  | Ground Security dist [96 h] | UDF_G3 | T | 20 | MS | CA-08 | PR-8 | 2 |
| A1750 |  | Drill Borehole 2 (Process Water) | 10d | 2025-07-08 | 2025-07-22 | A1740 |  |  |  | 37.79d | 0d |  | Ground Security dist [160 h] | UDF_G3 | T | 20 | MS | CA-08 | PR-8 | 2 |
| A1770 |  | Test Water Quality on Borehole 2 (Process Water) | 10d | 2025-07-22 | 2025-08-05 | A1750 |  |  |  | 164.79d |  |  | Ground Security dist [80 h] | UDF_G3 | T | 20 | MS | CA-08 |  | 2 |
| A1760 |  | Step test Borehole 2 (Process Water) | 5d | 2025-07-24 | 2025-07-30 | A1750, A1710, A2090 |  |  |  | 108d | 6.21d |  | Ground Security dist [24 h] | UDF_G3 | T | 20 | MS | CA-08 | PR-7 | 2 |
|  | 3 | **Borehole 3** |  | 2025-06-25 | 2025-08-25 |  |  |  |  |  |  |  |  |  |  |  |  |  |  |  |
| A1780 |  | Clear vegetation for Borehole 3 (Process Water) | 5d | 2025-06-25 | 2025-07-03 | A1600, A1000, A1730 |  |  |  | 24.79d | 0d |  | Ground Security dist [40 h] | UDF_G3 | T | 20 | MS | CA-08 |  | 3 |
| A1790 |  | Mobilise contractor to Borehole 3 (Process Water) | 3d | 2025-07-22 | 2025-07-25 | A1750 |  |  |  | 37.79d | 0d |  | Ground Security dist [96 h] | UDF_G3 | T | 20 | MS | CA-08 | PR-8 | 3 |
| A1800 |  | Drill Borehole 3 (Process Water) | 10d | 2025-07-25 | 2025-08-08 | A1790 |  |  |  | 37.79d | 0d |  | Ground Security dist [160 h] | UDF_G3 | T | 20 | MS | CA-08 | PR-8 | 3 |
| A1810 |  | Step test Borehole 3 (Process Water) | 5d | 2025-08-08 | 2025-08-18 | A1800, A1760, A2100 |  |  |  | 101.79d | 64d |  | Ground Security dist [24 h] | UDF_G3 | T | 20 | MS | CA-08 | PR-7 | 3 |
| A1820 |  | Test Water Quality on Borehole 3 (Process Water) | 10d | 2025-08-08 | 2025-08-25 | A1800 |  |  |  | 151.79d |  |  | Ground Security dist [80 h] | UDF_G3 | T | 20 | MS | CA-08 |  | 3 |

Notes:
- A1610: Comments: 2024-10-04 14:07:53>Jaco van der Merwe / This is a test comment / 2024-10-04 14:36:55>Jaco van der Merwe / This is a very long comment to see how the panel stretches if the panel / comment streatches over more than one line / 2024-10-04 15:04:00>Jaco van der Merwe / This is a qil l messa ge. / Lets see if it works Ang this is in / bold / 2024-10-04 16:46:09>Jaco van der Merwe / This is working now / 2024-10-05 08:56:50>Jaco van der Merwe / This is a check to see if this is working

| ID | WBS | Activity | Duration | Start | Finish | Predecessors | Total float | Free float | Resources | Site Activity | Department | Level 3 WBS | Business Area | Site Area | Contract Area | Process |
| --- | --- | --- | --- | --- | --- | --- | --- | --- | --- | --- | --- | --- | --- | --- | --- | --- |
|  | 4 | **Borehole 4** |  | 2025-07-03 | 2025-09-11 |  |  |  |  |  |  |  |  |  |  |  |
| A1830 |  | Clear vegetation for Borehole 4 (Process Water) | 5d | 2025-07-03 | 2025-07-10 | A1000, A1600, A1780 | 24.79d | 0d | Ground Security dist [40 h] | UDF_G3 | T | 4 | 20 | MS | CA-08 |  |
| A1840 |  | Mobilise contractor to Borehole 4 (Process Water) | 3d | 2025-08-08 | 2025-08-13 | A1800 | 37.79d | 0d | Ground Security dist [96 h] | UDF_G3 | T | 4 | 20 | MS | CA-08 | PR-8 |
| A1850 |  | Drill Borehole 4 (Process Water) | 10d | 2025-08-13 | 2025-08-28 | A1840 | 37.79d | 0d | Ground Security dist [160 h] | UDF_G3 | T | 4 | 20 | MS | CA-08 | PR-8 |
| A1860 |  | Step test Borehole 4 (Process Water) | 5d | 2025-08-28 | 2025-09-04 | A1850, A2110 | 88.79d | 51d | Ground Security dist [24 h] | UDF_G3 | T | 4 | 20 | MS | CA-08 | PR-7 |
| A1870 |  | Test Water Quality on Borehole 4 (Process Water) | 10d | 2025-08-28 | 2025-09-11 | A1850 | 138.79d |  | Ground Security dist [80 h] | UDF_G3 | T | 4 | 20 | MS | CA-08 |  |
|  | 5 | **Borehole 5** |  | 2025-07-10 | 2025-09-30 |  |  |  |  |  |  |  |  |  |  |  |
| A1880 |  | Clear vegetation for Borehole 5 (Process Water) | 5d | 2025-07-10 | 2025-07-17 | A1000, A1600, A1830 | 24.79d | 0d | Ground Security dist [40 h] | UDF_G3 | T | 5 | 20 | MS | CA-08 |  |
| A1890 |  | Mobilise contractor to Borehole 5 (Process Water) | 3d | 2025-08-28 | 2025-09-02 | A1850 | 37.79d | 0d | Ground Security dist [96 h] | UDF_G3 | T | 5 | 20 | MS | CA-08 | PR-8 |
| A1900 |  | Drill Borehole 5 (Process Water) | 10d | 2025-09-02 | 2025-09-16 | A1890 | 37.79d | 0d | Ground Security dist [160 h] | UDF_G3 | T | 5 | 20 | MS | CA-08 | PR-8 |
| A1910 |  | Test Water Quality on Borehole 5 (Process Water) | 10d | 2025-09-16 | 2025-09-30 | A1900 | 125.79d |  | Ground Security dist [80 h] | UDF_G3 | T | 5 | 20 | MS | CA-08 |  |
| A1920 |  | Step test Borehole 5 (Process Water) | 5d | 2025-09-16 | 2025-09-23 | A1900, A2120 | 75.79d | 38d | Ground Security dist [240 h] | UDF_G3 | T | 5 | 20 | MS | CA-08 | PR-7 |
|  | 7 | **Borehole 6** |  | 2025-07-17 | 2025-11-14 |  |  |  |  |  |  |  |  |  |  |  |
| A10480 |  | Clear vegetation for Borehole 6 (Process Water) | 5d | 2025-07-17 | 2025-07-24 | A1000, A1600, A1880 | 24.79d | 0d | Ground Security dist [40 h] | UDF_G3 | T | 5 | 20 | MS | CA-08 |  |
| A10450 |  | Mobilise contractor to Borehole 6 (Process Water) | 3d | 2025-09-16 | 2025-09-19 | A1900 | 37.79d | 0d | Ground Security dist [96 h] | UDF_G3 | T | 5 | 20 | MS | CA-08 | PR-8 |
| A10460 |  | Drill Borehole 6 (Process Water) | 10d | 2025-09-19 | 2025-10-03 | A10450 | 37.79d | 0d | Ground Security dist [160 h] | UDF_G3 | T | 5 | 20 | MS | CA-08 | PR-8 |
| A10470 |  | Step test Borehole 6 (Process Water) | 30d | 2025-10-03 | 2025-11-14 | A10460 | 37.79d | 0d | Ground Security dist [240 h] | UDF_G3 | T | 5 | 20 | MS | CA-08 | PR-7 |
| A10490 |  | Test Water Quality on Borehole 6 (Process Water) | 10d | 2025-10-03 | 2025-10-17 | A10460 | 112.79d |  | Ground Security dist [80 h] | UDF_G3 | T | 5 | 20 | MS | CA-08 |  |
|  | 8 | **Borehole 7** |  | 2025-07-24 | 2025-12-05 |  |  |  |  |  |  |  |  |  |  |  |
| A10530 |  | Clear vegetation for Borehole 7 (Process Water) | 5d | 2025-07-24 | 2025-07-31 | A1000, A1600, A10480 | 24.79d | 0d | Ground Security dist [40 h] | UDF_G3 | T | 5 | 20 | MS | CA-08 |  |
| A10500 |  | Mobilise contractor to Borehole 7 (Process Water) | 3d | 2025-10-03 | 2025-10-08 | A10460 | 38.79d | 0d | Ground Security dist [96 h] | UDF_G3 | T | 5 | 20 | MS | CA-08 | PR-8 |
| A10510 |  | Drill Borehole 7 (Process Water) | 10d | 2025-10-08 | 2025-10-22 | A10500 | 38.79d | 0d | Ground Security dist [160 h] | UDF_G3 | T | 5 | 20 | MS | CA-08 | PR-8 |
| A10520 |  | Step test Borehole 7 (Process Water) | 5d | 2025-11-14 | 2025-11-21 | A10510, A10470 | 37.79d | 0d | Ground Security dist [240 h] | UDF_G3 | T | 5 | 20 | MS | CA-08 | PR-7 |
| A10540 |  | Test Water Quality on Borehole 7 (Process Water) | 10d | 2025-11-21 | 2025-12-05 | A10520 | 77.79d |  | Ground Security dist [80 h] | UDF_G3 | T | 5 | 20 | MS | CA-08 |  |

| ID | WBS | Activity | Duration | Start | Finish | Predecessors | Remaining | Planned start | Planned finish | Total float | Free float | Resources | Site Activity | Department | Level 3 WBS | Business Area | Site Area | Contract Area | Process |
| --- | --- | --- | --- | --- | --- | --- | --- | --- | --- | --- | --- | --- | --- | --- | --- | --- | --- | --- | --- |
|  | 9 | **Borehole 8** |  | 2025-07-31 | 2025-12-12 |  |  |  |  |  |  |  |  |  |  |  |  |  |  |
| A10580 |  | Clear vegetation for Borehole 8 (Process Water) | 5d | 2025-07-31 | 2025-08-07 | A1000, A1600, A10530 |  |  |  | 24.79d | 0d | Ground Security dist [40 h] | UDF_G3 | T | 5 | 20 | MS | CA-08 |  |
| A10550 |  | Mobilise contractor to Borehole 8 (Process Water) | 3d | 2025-10-22 | 2025-10-27 | A10510 |  |  |  | 38.79d | 0d | Ground Security dist [96 h] | UDF_G3 | T | 5 | 20 | MS | CA-08 | PR-8 |
| A10560 |  | Drill Borehole 8 (Process Water) | 10d | 2025-10-27 | 2025-11-10 | A10550 |  |  |  | 38.79d | 0d | Ground Security dist [160 h] | UDF_G3 | T | 5 | 20 | MS | CA-08 | PR-8 |
| A10570 |  | Step test Borehole 8 (Process Water) | 5d | 2025-11-21 | 2025-11-28 | A10560, A10520 |  |  |  | 37.79d | 0d | Ground Security dist [240 h] | UDF_G3 | T | 5 | 20 | MS | CA-08 | PR-7 |
| A10590 |  | Test Water Quality on Borehole 8 (Process Water) | 10d | 2025-11-28 | 2025-12-12 | A10570 |  |  |  | 72.79d |  | Ground Security dist [80 h] | UDF_G3 | T | 5 | 20 | MS | CA-08 |  |
|  | 6 | **Borehole 9** |  | 2025-08-07 | 2026-02-19 |  |  |  |  |  |  |  |  |  |  |  |  |  |  |
| A1930 |  | Clear vegetation for Borehole 9 (Process Water) | 5d | 2025-08-07 | 2025-08-14 | A1000, A1600, A10580 |  |  |  | 24.79d | 14.79d | Ground Security dist [40 h] | UDF_G3 | T | 6 | 20 | MS | CA-08 |  |
| A1940 |  | Mobilise contractor to Borehole 9 (Process Water) | 3d | 2025-11-10 | 2025-11-13 | A10560 |  |  |  | 38.79d | 0d | Ground Security dist [96 h] | UDF_G3 | T | 6 | 20 | MS | CA-08 | PR-8 |
| A1950 |  | Drill Borehole 9 (Process Water) | 10d | 2025-11-13 | 2025-11-27 | A1940 |  |  |  | 38.79d | 1d | Ground Security dist [160 h] | UDF_G3 | T | 6 | 20 | MS | CA-08 | PR-8 |
| A1960 |  | Step test Borehole 9 (Process Water) | 5d | 2025-11-28 | 2025-12-05 | A1950, A2130, A10570 |  |  |  | 37.79d | 0d | Ground Security dist [24 h] | UDF_G3 | T | 6 | 20 | MS | CA-08 | PR-7 |
| A1970 |  | Test Water Quality on Borehole 9 (Process Water) | 10d | 2025-12-05 | 2026-01-08 | A1950, A1960 |  |  |  | 67.79d |  | Ground Security dist [80 h] | UDF_G3 | T | 6 | 20 | MS | CA-08 |  |
| A1990 |  | Borehole construction duration allowance | 40d | 2025-12-05 | 2026-02-19 | A1960 |  |  |  | 37.79d |  |  | UDF_G3 | T |  | 20 | MS | CA-08 |  |
|  | GWD (MB) | **Ground Water Development (Monitoring Bores)** |  | 2025-04-28 | 2025-09-18 |  |  |  |  |  |  |  |  |  |  |  |  |  |  |
|  | 3 | **Environmental** |  |  |  |  |  |  |  |  |  |  |  |  |  |  |  |  |  |
|  | 7 | **Construction** |  | 2025-04-28 | 2025-09-18 |  |  |  |  |  |  |  |  |  |  |  |  |  |  |
| A2070 |  | Mobilise drilling contractor (Process Water Monitoring Bores) | 40d | 2025-04-28 | 2025-06-24 | A1000, M1030, A1670 FS+5d |  |  |  | 10d | 0d | Ground Security dist [80 h] | UDF_G3 | T |  | 20 | MS | CA-09 | PR-18 |
| A2080 |  | Drill 2 monitoring boreholes for Borehole 1 (Process Water Monitoring Bores) | 10d | 2025-06-25 | 2025-07-09 | A1000, A2070, A1680 |  |  |  | 10d | 0d | Ground Security dist [80 h] | UDF_G3 | T | 1 | 20 | MS | CA-09 |  |
| A2090 |  | Drill 2 monitoring boreholes for Borehole 2 (Process Water Monitoring Bores) | 10d | 2025-07-10 | 2025-07-23 | A1730, A2080, A2070 |  |  |  | 10d | 0d | Ground Security dist [80 h] | UDF_G3 | T | 2 | 20 | MS | CA-09 |  |
| A2100 |  | Drill 2 monitoring boreholes for Borehole 3 (Process Water Monitoring Bores) | 10d | 2025-07-24 | 2025-08-06 | A1780, A2090, A2070 |  |  |  | 10d | 0d | Ground Security dist [80 h] | UDF_G3 | T | 3 | 20 | MS | CA-09 |  |
| A2110 |  | Drill 2 monitoring boreholes for Borehole 4 (Process Water Monitoring Bores) | 10d | 2025-08-07 | 2025-08-21 | A1830, A2100, A2070 |  |  |  | 10d | 0d | Ground Security dist [80 h] | UDF_G3 | T | 4 | 20 | MS | CA-09 |  |
| A2120 |  | Drill 2 monitoring boreholes for Borehole 5 (Process Water Monitoring Bores) | 10d | 2025-08-22 | 2025-09-04 | A1880, A2110, A2070 |  |  |  | 10d | 0d | Ground Security dist [80 h] | UDF_G3 | T | 5 | 20 | MS | CA-09 |  |
| A2130 |  | Drill 2 monitoring boreholes for Borehole 6 (Process Water Monitoring Bores) | 10d | 2025-09-05 | 2025-09-18 | A1930, A2120, A2070 |  |  |  | 10d | 0d | Ground Security dist [80 h] | UDF_G3 | T | 6 | 20 | MS | CA-09 |  |
|  | GWD (CW) | **Ground Water Development (Construction Water)** |  | 2025-03-03 | 2025-11-13 |  |  |  |  |  |  |  |  |  |  |  |  |  |  |
|  | 3 | **Environmental** |  | 2025-03-03 | 2025-05-19 |  |  |  |  |  |  |  |  |  |  |  |  |  |  |
| A2230 |  | Obtain drilling authorisation permit from ANDEA (Construction water) | 20d | 2025-03-03 A | 2025-05-19 | A1000 | 15.74d | 2025-03-03 | 2025-03-31 | 182.26d | 89.26d | Approvals and Permits dist [160 h] | UDF_G1 | AP | 11 | ENV | MS | CA-10 | PR-19 |

| ID | WBS | Activity | Duration | Start | Finish | Predecessors | Total float | Free float | Resources | Site Activity | Department | Level 3 WBS | Business Area | Site Area | Contract Area | Process | ESMS Responsibility |
| --- | --- | --- | --- | --- | --- | --- | --- | --- | --- | --- | --- | --- | --- | --- | --- | --- | --- |
|  | 4 | **Technical** |  | 2025-04-28 | 2025-06-10 |  |  |  |  |  |  |  |  |  |  |  |  |
| A2280 |  | Identify Borehole locations (Construction Water) | 30d | 2025-04-28 | 2025-06-10 | A1000, M1030 | 93d | 0d | Ground Security dist [240 h] | UDF_G3 | T | 1 | 20 | MS | CA-10 |  |  |
|  | 5 | **Procurement** |  | 2025-06-11 | 2025-09-18 |  |  |  |  |  |  |  |  |  |  |  |  |
| A2290 |  | Prepare RFT, Tender and Adjudicate Drilling proposals (Construction Water) | 60d | 2025-06-11 | 2025-09-04 | A1000, A2280 | 93d | 0d |  | UDF_G1 | T | 1 | PRO | MS | CA-10 | PR-13 |  |
| A2300 |  | Award Drilling Contract (Construction Water) | 10d | 2025-09-05 | 2025-09-18 | A2290 | 93d | 0d |  | UDF_G1 | T | 1 | CAM | MS | CA-10 |  |  |
|  | 7 | **Construction** |  | 2025-09-19 | 2025-11-13 |  |  |  |  |  |  |  |  |  |  |  |  |
| A2310 |  | Mobilise Drilling Contractor to Borehole 1 (Construction Water) | 5d | 2025-09-19 | 2025-09-25 | A2300, A1000, A2280, M1030 | 93d | 0d | Ground Security dist [40 h] | UDF_G3 | T | 1 | 20 | MS | CA-10 | PR-18 |  |
| A2320 |  | Drill borehole 1 (Construction Water) | 20d | 2025-09-26 | 2025-10-23 | A2310, A2230, A2280 | 93d | 0d | Ground Security dist [160 h] | UDF_G3 | T | 1 | 20 | MS | CA-10 |  |  |
| A2330 |  | Perform Abstraction Test for Borehole 1 (Construction Water) | 5d | 2025-10-24 | 2025-10-30 | A2320 | 103d |  | Ground Security dist [40 h] | UDF_G3 | T | 1 | 20 | MS | CA-10 |  |  |
| A2340 |  | Mobilise Contractor to Borehole 2 (Construction Water) | 5d | 2025-10-24 | 2025-10-30 | A2320 | 93d | 0d | Ground Security dist [40 h] | UDF_G3 | T | 1 | 20 | MS | CA-10 |  |  |
| A2350 |  | Test Water Quality for Borehole 1 (Construction Water) | 5d | 2025-10-24 | 2025-10-30 | A2320 | 103d |  | Ground Security dist [40 h] | UDF_G3 | T | 1 | 20 | MS | CA-10 |  |  |
| A2360 |  | Drill Borehole 2 (Construction Water) | 5d | 2025-10-31 | 2025-11-06 | A2340, A2340 FF | 93d | 0d | Ground Security dist [40 h] | UDF_G3 | T | 1 | 20 | MS | CA-10 |  |  |
| A2370 |  | Perform Abstraction Test for Borehole 2 (Construction Water) | 5d | 2025-11-07 | 2025-11-13 | A2360 | 93d |  | Ground Security dist [40 h] | UDF_G3 | T | 1 | 20 | MS | CA-10 |  |  |
| A2380 |  | Test Water Quality for Borehole 2 (Construction Water) | 5d | 2025-11-07 | 2025-11-13 | A2360 | 93d |  | Ground Security dist [40 h] | UDF_G3 | T | 1 | 20 | MS | CA-10 |  |  |
|  | PQ | **Pioneer Quarries & Borrow Pits** |  | 2025-02-14 | 2026-02-20 |  |  |  |  |  |  |  |  |  |  |  |  |
|  | 2 | **Permits and Approvals** |  | 2025-10-10 | 2026-01-22 |  |  |  |  |  |  |  |  |  |  |  |  |
| A2530 |  | Obtain Ankilimanike Mayor and Council approval for development (Quarries & Borrow Pits) | 20d | 2025-10-10 | 2025-11-07 | A1000, A3180, A3220 | 26.79d | 0d | Approvals and Permits dist [160 h] | UDF_G1 | AP |  |  | MS | CA-12 | PR-19 |  |
| A2540 |  | Obtain approval from Governor (Quarries & Borrow Pits) | 20d | 2025-11-07 | 2025-12-05 | A1000, A3180, A3220, A2530 | 26.79d | 0d | Approvals and Permits dist [160 h] | UDF_G1 | AP |  |  | MS | CA-12 | PR-19 |  |
| A2550 |  | Obtain approval from department of lands (Quarries & Borrow Pits) | 20d | 2025-12-05 | 2026-01-22 | A1000, A3180, A3220, A2540 | 26.79d | 0d | Approvals and Permits dist [160 h] | UDF_G1 | AP |  |  | MS | CA-12 | PR-19 |  |
| A2560 |  | Obtain approval from department of mines (Quarries & Borrow Pits) | 20d | 2025-12-05 | 2026-01-22 | A1000, A3180, A3220, A2540 | 26.79d | 0d | Approvals and Permits dist [160 h] | UDF_G1 | AP |  |  | MS | CA-12 | PR-19 |  |
| A2570 |  | Obtain MOU with the department of public works (Quarries & Borrow Pits) | 20d | 2025-12-05 | 2026-01-22 | A1000, A3180, A3220, A2540 | 26.79d | 0d | Approvals and Permits dist [160 h] | UDF_G1 | AP |  |  | MS | CA-12 | PR-19 |  |
|  | 3 | **Environmental** |  | 2025-04-28 | 2025-11-28 |  |  |  |  |  |  |  |  |  |  |  |  |
|  | 5 | **River sand** |  | 2025-04-28 | 2025-11-28 |  |  |  |  |  |  |  |  |  |  |  |  |
| A3030 |  | Confirm potential harvesting location (River Sand) | 10d | 2025-04-28 | 2025-05-09 | A1000, M1040 | 52d | 0d | Ground Security dist [80 h] | UDF_G3 | ESMS |  | ENV | FB | CA-12 |  | ENV |
| A3040 |  | Engage ANDEA, APMF, regional dept of water and O.N.E (Stakeholder Disclosure) (River Sand) | 10d | 2025-05-12 | 2025-05-23 | A3030 | 52d | 0d | External Affairs dist [160 h] | UDF_G1 | ESMS |  | ENV | FB | CA-12 | PR-1 | SOC |
| A3050 |  | Conduct EIA baseline studies (River Sand) | 20d | 2025-05-26 | 2025-06-24 | A3040 | 52d | 0d | Ground Security dist [160 h]; Baseline Study dist [160 h] | UDF_G3 | ESMS |  | ENV | FB | CA-12 | PR-2 | ENV |
| A3060 |  | Prepare Environmental Impact Assessment (River Sand) | 20d | 2025-06-25 | 2025-07-23 | A3050 | 52d | 0d |  | UDF_G1 | ESMS |  | ENV | FB | CA-12 |  | ENV |
| A3070 |  | Submit EIA to O.N.E (River Sand) | 1d | 2025-07-24 | 2025-07-24 | A3060 | 52d | 0d |  | UDF_G1 | ESMS |  | ENV | FB | CA-12 |  | SOC |
| A3080 |  | O.N.E review EIA (River Sand) | 30d | 2025-07-24 | 2025-09-04 | A3070 SS | 52d | 0d |  | UDF_G1 | ESMS |  | ENV | FB | CA-12 |  | SOC |
| A3090 |  | O.N.E issue environment permit (River Sand) | 1d | 2025-09-05 | 2025-09-05 | A3080 | 52d | 0d | Approvals and Permits dist [8 h] | UDF_G1 | AP |  | ENV | FB | CA-12 | PR-19 |  |
| A3100 |  | PE issued by MoM (River Sand) | 20d | 2025-09-05 | 2025-10-02 | A3090 SS | 52d | 0d |  | UDF_G1 | ESMS |  | ENV | FB | CA-12 |  | SOC |
| A3110 |  | Update Quarry construction PGES (River Sand) | 20d | 2025-10-03 | 2025-10-30 | A3100, A8070, A3090 SS, A1000 FS-10d | 52d | 0d |  | UDF_G1 | ESMS |  | ENV | FB | CA-12 |  | ENV |
| A3120 |  | Obtain E&S site disturbance permit (River Sand) | 10d | 2025-10-31 | 2025-11-13 | A3110 | 62d | 11d |  | UDF_G1 | ESMS |  | ENV | FB | CA-12 | PR-19 | SOC |
| A3130 |  | Obtain vegetation clearing permit from DREDD (River Sand) | 20d | 2025-10-31 | 2025-11-27 | A3110 | 52d | 1d | Approvals and Permits dist [160 h] | UDF_G1 | AP |  | ENV | FB | CA-12 | PR-19 |  |
| A3140 |  | Obtain harvesting permit (River Sand) | 1d | 2025-11-28 | 2025-11-28 | A3110 FS+20d, A3130 FF, A3120 FF | 56d | 55.21d | Approvals and Permits dist [8 h] | UDF_G1 | AP |  | ENV | FB | CA-12 | PR-19 |  |

| ID | WBS | Activity | Duration | Start | Finish | Predecessors | Complete | Remaining | Planned start | Planned finish | Total float | Free float | Resources | Schedule Comments | Site Activity | Department | Site Area | Contract Area | Level 3 WBS | Process |
| --- | --- | --- | --- | --- | --- | --- | --- | --- | --- | --- | --- | --- | --- | --- | --- | --- | --- | --- | --- | --- |
|  | 5 | **Technical** |  | 2025-02-14 | 2025-10-10 |  |  |  |  |  |  |  |  |  |  |  |  |  |  |  |
| A3150 |  | MTLA Site visit (Date TBC) | 5d | 2025-02-14 A | 2025-02-21 A | M1040 FF, M1030 FF | 100% |  | 2025-03-11 | 2025-03-18 |  |  | Ground Security dist [40 h] | Visit on 13-Feb | UDF_G3 | T | MS | CA-12 |  |  |
| A3160 |  | Determine timing / stockpiling requirements for construction (Quarries & Borrow Pits) | 50d | 2025-03-31 A | 2025-07-09 | A1000 | 5% | 50d | 2025-03-31 | 2025-06-23 | 80d | 65.21d |  |  | UDF_G1 | T | OS | CA-12 | 2 |  |
|  | 1 | **Quarries within the mine lease PE37242** |  | 2025-07-24 | 2025-10-10 |  |  |  |  |  |  |  |  |  |  |  |  |  |  |  |
| A3170 |  | Undertake geotechnical investigations (Quarries & Borrow Pits within mine lease) | 15d | 2025-07-24 | 2025-08-14 | A8560, A8510, A3150, M1030, A8530, A4150, A3210, A10250 SS+45d |  |  |  |  | 14.79d | 0d | Ground Security dist [40 h]; Geotechnical Drilling Rig 1 [120 h] |  | UDF_G3 | T | MS | CA-12 | 3 | PR-4 |
| A3180 |  | Geotechnical Lab testing and reports (Quarries & Borrow Pits within mine lease) | 40d | 2025-08-14 | 2025-10-10 | A3170 |  |  |  |  | 14.79d | 0d |  |  | UDF_G1 | T | MS | CA-12 | 3 | PR-5 |
|  | 3 | **Chinese quarry in Ranobe / PK32 protected area** |  | 2025-07-03 | 2025-09-19 |  |  |  |  |  |  |  |  |  |  |  |  |  |  |  |
| A3210 |  | Undertake geotechnical investigations (Chinese Quarry) | 15d | 2025-07-03 | 2025-07-24 | A8560, A8510, A3150, M1030, A8530, A4150, A10250 SS+30d |  |  |  |  | 14.79d | 0d | Ground Security dist [160 h]; Geotechnical Drilling Rig 1 [120 h] |  | UDF_G3 | T | HRN | CA-12 | 3 | PR-4 |
| A3220 |  | Geotechnical Lab testing and reports (Chinese Quarry) | 40d | 2025-07-24 | 2025-09-19 | A3210 |  |  |  |  | 29.79d | 15d |  |  | UDF_G1 | T | HRN | CA-12 | 3 | PR-5 |
|  | 6 | **Procurement** |  | 2025-10-10 | 2026-01-22 |  |  |  |  |  |  |  |  |  |  |  |  |  |  |  |
| A3270 |  | Prepare RFT (Quarries & Borrow Pits) | 10d | 2025-10-10 | 2025-10-24 | A3160, A3180, A3220 |  |  |  |  | 14.79d | 0d |  |  | UDF_G1 | T | MS | CA-12 | 4 | PR-13 |
| A3280 |  | Issue RFT to contractors, conduct site inspections and receive tenders (Quarries & Borrow Pits) | 20d | 2025-10-24 | 2025-11-21 | A3270 |  |  |  |  | 14.79d | 0d | Ground Security dist [160 h] |  | UDF_G3 | T | MS | CA-12 | 5 | PR-14 |
| A3290 |  | Adjudicate, clarify and select preferred contractor (Quarries & Borrow Pits) | 10d | 2025-11-21 | 2025-12-05 | A3280 |  |  |  |  | 14.79d | 0d |  |  | UDF_G1 | T | MS | CA-12 | 6 | PR-17 |
| A3300 |  | Draft contract and letter of acceptance (Quarries & Borrow Pits) | 5d | 2025-12-05 | 2025-12-12 | A3290 |  |  |  |  | 36.79d | 0d |  |  | UDF_G1 | T | MS | CA-12 | 7 |  |
| A3310 |  | Legal review of contract (Quarries & Borrow Pits) | 5d | 2025-12-12 | 2026-01-08 | A3300 |  |  |  |  | 36.79d | 0d |  |  | UDF_G1 | T | MS | CA-12 | 8 | PR-16 |
| A3320 |  | Conclude agreement for early works and award contract (Quarries & Borrow Pits) | 10d | 2026-01-08 | 2026-01-22 | A3310 |  |  |  |  | 36.79d | 0d |  |  | UDF_G1 | T | MS | CA-12 | 9 |  |
|  | 7 | **Construction** |  | 2026-01-22 | 2026-02-20 |  |  |  |  |  |  |  |  |  |  |  |  |  |  |  |
| A3330 |  | Mobilise quarry contractor (Quarries & Borrow Pits) | 20d | 2026-01-22 | 2026-02-19 | A2530, A2540, A2550, A2560, A2570, M1140 |  |  |  |  | 36.79d | 0d | Ground Security dist [160 h] |  | UDF_G3 | T | MS | CA-12 | 9 |  |
| A3340 |  | Commence stockpiling (Quarries & Borrow Pits) | 1d | 2026-02-19 | 2026-02-20 | A2900, A2890, A2870, A3330 |  |  |  |  | 36.79d |  | Ground Security dist [8 h] |  | UDF_G3 | T | MS | CA-12 | 9 |  |
|  | PC | **Port Causeway** |  | 2025-02-25 | 2026-01-08 |  |  |  |  |  |  |  |  |  |  |  |  |  |  |  |
|  | 2 | **Permits and Approvals** |  | 2025-07-31 | 2025-10-23 |  |  |  |  |  |  |  |  |  |  |  |  |  |  |  |
| A3430 |  | Obtain Ankilimanike Mayor and Council approval for development (Port Causeway) | 20d | 2025-07-31 | 2025-08-28 | A3580 |  |  |  |  | 27d | 0d | Approvals and Permits dist [160 h] |  | UDF_G1 | AP | PRT | CA-13 |  | PR-19 |
| A3440 |  | Obtain approval from Governor (Port Causeway) | 20d | 2025-08-29 | 2025-09-25 | A3580, A3430 |  |  |  |  | 27d | 0d | Approvals and Permits dist [160 h] |  | UDF_G1 | AP | PRT | CA-13 |  | PR-19 |
| A3450 |  | Obtain approval from department of lands (Port Causeway) | 20d | 2025-09-26 | 2025-10-23 | A3580, A3440 |  |  |  |  | 77d | 76.21d | Approvals and Permits dist [160 h] |  | UDF_G1 | AP | PRT | CA-13 |  | PR-19 |
| A3460 |  | Obtain MOU with the department of transport (Port Causeway) | 20d | 2025-09-26 | 2025-10-23 | A3580, A3440 |  |  |  |  | 77d | 76.21d | Approvals and Permits dist [160 h] |  | UDF_G1 | EA | PRT | CA-13 |  | PR-19 |
| A3470 |  | Obtain MOU with the department of public works (Port Causeway) | 20d | 2025-09-26 | 2025-10-23 | A3580, A3440 |  |  |  |  | 27d | 0d | Approvals and Permits dist [160 h] |  | UDF_G1 | EA | PRT | CA-13 |  | PR-19 |

| ID | WBS | Activity | Duration | Start | Finish | Predecessors | Complete | Planned start | Planned finish | Total float | Free float | Constraint | Calendar | Resources | Site Activity | Department | Level 3 WBS | Business Area | Site Area | Contract Area | Process | ESMS Responsibility | Permit Verified By MB |
| --- | --- | --- | --- | --- | --- | --- | --- | --- | --- | --- | --- | --- | --- | --- | --- | --- | --- | --- | --- | --- | --- | --- | --- |
|  | 3 | **Environmental** |  | 2025-04-28 | 2025-08-13 |  |  |  |  |  |  |  |  |  |  |  |  |  |  |  |  |  |  |
| A3480 |  | Conduct Stakeholder disclosure (Port Causeway) | 5d | 2025-04-28 | 2025-05-02 | A7850, A3550 |  |  |  | 7d | 0d | start on or after 2025-04-08 |  | Ground Security dist [80 h]; External Affairs dist [80 h] | UDF_G3 | ESMS | 9 | ENV | PRT | CA-13 | PR-1 | SOC |  |
| A3490 |  | Conduct baseline studies (Port Causeway) | 20d | 2025-05-05 | 2025-06-02 | A3480 |  |  |  | 7d | 0d |  |  | Ground Security dist [160 h]; Baseline Study dist [160 h] | UDF_G3 | ESMS | 9 | ENV | PRT | CA-13 | PR-2 | ENV |  |
| A3500 |  | Discuss & evaluate environmental requirements (Port Causeway) | 20d | 2025-05-05 | 2025-06-02 | A1000, A3490 SS |  |  |  | 7d | 0d |  |  | External Affairs dist [160 h] | UDF_G1 | ESMS | 1 | ENV | PRT | CA-13 |  | SOC |  |
| A3540 |  | Obtain E&S site disturbance permits (Port Causeway) | 10d | 2025-07-31 | 2025-08-13 | A3490, A8070, A3580 |  |  |  | 77d | 50d |  |  |  | UDF_G1 | ESMS | 9 | ENV | PRT | CA-13 | PR-19 | SOC |  |
|  | 5 | **Technical** |  | 2025-02-25 | 2025-07-30 |  |  |  |  |  |  |  |  |  |  |  |  |  |  |  |  |  |  |
| A3550 |  | Discuss with APMF their plans for the Causeway Bridge | 5d | 2025-02-25 A | 2025-02-25 A | A1000 FS+15d | 100% | 2025-02-25 | 2025-03-03 |  |  | start on or after 2025-02-25 |  |  | UDF_G1 | T | 2 |  | PRT | CA-13 |  |  |  |
| A3560 |  | Present selected option to APMF and reach agreement (Port Causeway) (Option study done by PRDW) | 20d | 2025-06-03 | 2025-07-02 | A3550, A3500, A4130 |  |  |  | 7d | 0d |  |  |  | UDF_G1 | T | 3 |  | PRT | CA-13 |  |  |  |
| A3570 |  | Prepare MOU and obtain APMF signatures (Port Causeway) | 10d | 2025-07-03 | 2025-07-16 | A3560 |  |  |  | 97d | 90d |  |  |  | UDF_G1 | EA | 4 |  | PRT | CA-13 |  |  |  |
| A3580 |  | Confirm Design & prepare drawings (Port Causeway) | 20d | 2025-07-03 | 2025-07-30 | A3560 |  |  |  | 7d | 0d |  |  | PRDW [160 h] | UDF_G1 | ENG | 5 |  | PRT | CA-13 |  |  |  |
|  | 6 | **Procurement** |  | 2025-07-31 | 2025-11-20 |  |  |  |  |  |  |  |  |  |  |  |  |  |  |  |  |  |  |
| A3590 |  | Prepare RFT (Port Causeway) | 20d | 2025-07-31 | 2025-08-28 | A3580, A1430 |  |  |  | 7d | 0d |  |  |  | UDF_G1 | T | 6 |  | PRT | CA-13 | PR-13 |  |  |
| A3600 |  | Issue RFT to contractors, conduct site inspections and receive tenders (Port Causeway) | 40d | 2025-08-29 | 2025-10-23 | A3590 |  |  |  | 7d | 0d |  |  | Ground Security dist [320 h] | UDF_G3 | T | 7 |  | PRT | CA-13 | PR-14 |  |  |
| A3610 |  | Adjudicate, clarify and select preferred contractor (Port Causeway) | 10d | 2025-10-24 | 2025-11-06 | A3600 |  |  |  | 7d | 0d |  |  |  | UDF_G1 | T | 8 |  | PRT | CA-13 | PR-17 |  |  |
| A3620 |  | Draft contract and letter of acceptance (Port Causeway) | 5d | 2025-11-07 | 2025-11-13 | A3610 |  |  |  | 7d | 0d |  |  |  | UDF_G1 | T | 9 |  | PRT | CA-13 |  |  |  |
| A3630 |  | Legal review of contract (Port Causeway) | 5d | 2025-11-14 | 2025-11-20 | A3620 |  |  |  | 7d | 0d |  |  |  | UDF_G1 | T | 10 |  | PRT | CA-13 | PR-16 |  |  |
| A3640 |  | Award construction contract (Port Causeway) | 1d | 2025-11-20 | 2025-11-20 | A3630 FF |  |  |  | 7d | 0d |  |  |  | UDF_G1 | T | 11 |  | PRT | CA-13 |  |  |  |
|  | 7 | **Construction** |  | 2025-11-21 | 2026-01-08 |  |  |  |  |  |  |  |  |  |  |  |  |  |  |  |  |  |  |
| A3650 |  | Mobilise to site (Port Causeway) | 20d | 2025-11-21 | 2026-01-07 | A3640, A3570, A3540, A3490, M1040, M1130 |  |  |  | 7d | 0d |  |  | Ground Security dist [160 h] | UDF_G3 | T | 12 |  | PRT | CA-13 |  |  |  |
| A3660 |  | Construction Start (Port Causeway) | 1d | 2026-01-08 | 2026-01-08 | A3650, A9330 |  |  |  | 7d |  |  | B11-Standard 5 day workweek - No Shutdown | PRDW [8 h]; Ground Security dist [8 h] | UDF_G3 | T | 12 |  | PRT | CA-13 |  |  |  |
|  | BB | **Batterie Beach Access Road + Contractor Laydown Pads (Phase 1)** |  | 2025-02-03 | 2026-02-02 |  |  |  |  |  |  |  |  |  |  |  |  |  |  |  |  |  |  |
|  | 2 | **Permits and Approvals** |  | 2025-02-03 | 2025-12-12 |  |  |  |  |  |  |  |  |  |  |  |  |  |  |  |  |  |  |
| A3750 |  | Social Permit (Notification of National Departments (ONE, DREDD, Mines, etc)) (Exp Facility + HRS) | 6d | 2025-02-03 A | 2025-02-10 A | A1000 | 100% |  |  |  |  | start on or after 2025-02-03 |  | Approvals and Permits dist [40 h] | UDF_G1 | AP |  |  | BB | CA-14 | PR-6 |  | UDF_G3 |
| A3880 |  | Notification to Governor of the South-West Region (Exp Facility + HRS) | 2d | 2025-04-02 A | 2025-04-04 A | A3750 | 100% |  |  |  |  | start on or after 2025-04-02 |  | Approvals and Permits dist [40 h] | UDF_G1 | AP |  |  | BB | CA-14 | PR-6 |  | UDF_G3 |
| A3930 |  | Notification of Regional Authorities (Exp Facility + HRS) | 5d | 2025-04-28 | 2025-05-02 | A3880 |  |  |  | 30d | 0d |  |  | Approvals and Permits dist [144 h] | UDF_G1 | AP |  |  | BB | CA-14 | PR-6 |  | UDF_G3 |
| A4000 |  | PAPs verification & compensation (Exp Facility + HRS) | 10d | 2025-04-28 | 2025-05-09 | A1000, M1040 |  |  |  | 40d | 30.21d |  |  | Approvals and Permits dist [424 h] | UDF_G1 | AP |  |  | BB | CA-14 | PR-6 |  | UDF_G3 |
| A3940 |  | Notification of District & Municipal Authorities (Exp Facility + HRS) | 5d | 2025-05-05 | 2025-05-09 | A3930 |  |  |  | 30d | 0d |  |  | Approvals and Permits dist [168 h] | UDF_G1 | AP |  |  | BB | CA-14 | PR-6 |  | UDF_G3 |
| A3990 |  | Notification of Local Village & Chief (Exp Facility + HRS) | 5d | 2025-05-12 | 2025-05-16 | A3940 |  |  |  | 30d | 20.21d |  |  | Approvals and Permits dist [40 h] | UDF_G1 | AP |  |  | BB | CA-14 | PR-6 |  | UDF_G3 |
| A3760 |  | Obtain Toliara I Mayor and Council approval for development (Exp Facility + HRS) | 20d | 2025-09-19 | 2025-10-17 | A1000, A7070 |  |  |  | 15.79d | 0d |  |  | Approvals and Permits dist [160 h] | UDF_G1 | AP |  |  | BB | CA-14 | PR-19 |  |  |
| A3770 |  | Obtain approval from Governor (Exp Facility + HRS) | 20d | 2025-10-17 | 2025-11-14 | A1000, A7070, A3760 |  |  |  | 15.79d | 0d |  |  | Approvals and Permits dist [160 h] | UDF_G1 | AP |  |  | BB | CA-14 | PR-19 |  |  |
| A3780 |  | Obtain approval from department of lands (Exp Facility + HRS) | 20d | 2025-11-14 | 2025-12-12 | A1000, A7070, A3770 |  |  |  | 15.79d | 0d |  |  | Approvals and Permits dist [160 h] | UDF_G1 | AP |  |  | BB | CA-14 | PR-19 |  |  |
| A3790 |  | Obtain MOU with the department of public works (Exp Facility + HRS) | 20d | 2025-11-14 | 2025-12-12 | A1000, A7070, A3770 |  |  |  | 15.79d | 0d |  |  | Approvals and Permits dist [160 h] | UDF_G1 | AP |  |  | BB | CA-14 | PR-19 |  |  |

| ID | WBS | Activity | Duration | Start | Finish | Predecessors | Complete | Planned start | Planned finish | Total float | Free float | Constraint | Resources | Site Activity | Department | Level 3 WBS | Business Area | Site Area | Contract Area | Process | ESMS Responsibility | Permit Verified By MB |
| --- | --- | --- | --- | --- | --- | --- | --- | --- | --- | --- | --- | --- | --- | --- | --- | --- | --- | --- | --- | --- | --- | --- |
|  | 3 | **Environmental** |  | 2025-06-03 | 2026-01-23 |  |  |  |  |  |  |  |  |  |  |  |  |  |  |  |  |  |
| A3820 |  | Obtain E&S site disturbance permit for the HRS and EF geotechnical investigations | 10d | 2025-06-03 | 2025-06-18 | A10280 SS+10d |  |  |  | 9.79d | 0d |  |  | UDF_G1 | ESMS | 5 | ENV | BB | CA-14 | PR-19 | SOC |  |
| A3870 |  | Obtain E&S site disturbance permits for the HRS and EF Early works construction | 10d | 2026-01-09 | 2026-01-23 | A3760, M1110 |  |  |  | 20.79d | 5d |  |  | UDF_G1 | ESMS | 5 | ENV | BB | CA-14 | PR-19 | SOC |  |
|  | 5 | **Technical** |  | 2025-02-27 | 2025-08-29 |  |  |  |  |  |  |  |  |  |  |  |  |  |  |  |  |  |
| A4130 |  | PRDW Site visit | 5d | 2025-02-27 A | 2025-03-03 A | M1040 FS-20d, M1030 FS-20d | 100% | 2025-03-03 | 2025-03-10 |  |  | start on or after 2025-02-27 | Ground Security dist [40 h] | UDF_G3 | T |  |  | BB | CA-14 |  |  |  |
| A4660 |  | Renegotiate COLAS geotech contract (Haul Road North) | 10d | 2025-02-28 A | 2025-03-13 A | A4650 | 100% |  |  |  |  |  |  | UDF_G1 | T |  |  | HRN | CA-15 |  |  |  |
| A4140 |  | PRDW design revetment (construction of revetments to be done in two phases) | 30d | 2025-04-28 | 2025-06-10 | A4130 |  |  |  | 50d | 35.21d |  | PRDW [240 h] | UDF_G1 | ENG | 1 |  | BB | CA-14 |  |  |  |
| A4150 |  | Remobilise COLAS for geotechnical investigations | 25d | 2025-04-28 | 2025-06-02 | A8560, A1000 FF, M1040, A4660, A8530 |  |  |  | 20d | 10.21d |  | Ground Security dist [320 h]; COLAS [320 h] | UDF_G3 | T | 1 | GEO | BB | CA-14 | PR-3 |  |  |
| A4160 |  | Geotechnical investigations test pits for HRS | 10d | 2025-06-18 | 2025-07-03 | A4150, A3820, A3750, M1040, A3990, A4000 FS-5d, A4150 FF, A10280 SS+20d |  |  |  | 9.79d | 0d |  | Ground Security dist [160 h]; Geotechnical Test Pit Team [80 h] | UDF_G3 | T | 1 |  | BB | CA-14 | PR-22 |  |  |
| A4170 |  | Lab analysis & Geotech report for HRS and export facility onshore | 10d | 2025-07-03 | 2025-07-17 | A4160 |  |  |  | 9.79d | 0d |  |  | UDF_G1 | T | 1 | GEO | BB | CA-14 | PR-5 |  |  |
| A4180 |  | Road design to IFT for HRS Early Works (Phase 1) | 30d | 2025-07-17 | 2025-08-29 | A4170 |  |  |  | 9.79d | 0d |  |  | UDF_G1 | ENG | 1 |  | BB | CA-14 |  |  |  |
| A4190 |  | Keller/Lycopodium design temporary platforms (piling construction pad and laydown area) | 30d | 2025-07-17 | 2025-08-29 | A4170, A8550 |  |  |  | 24.79d | 10d |  |  | UDF_G1 | ENG | 1 |  | BB | CA-14 |  |  |  |
| A4200 |  | Design approval from DoT and DoPW | 10d | 2025-07-31 | 2025-08-14 | A4170, A4180 SS+10d, A1000 FS+10d |  |  |  | 101.79d | 86d |  | Approvals and Permits dist [80 h] | UDF_G1 | AP | 1 | ENG | BB | CA-14 |  |  |  |
|  | 6 | **Procurement** |  | 2025-07-31 | 2025-12-15 |  |  |  |  |  |  |  |  |  |  |  |  |  |  |  |  |  |
| A4210 |  | Zutari Prepare RFT for Phase 1 (P1=EW: Access road, platform and protection revetments) | 30d | 2025-07-31 | 2025-09-12 | A4180 FF+10d, A4190 FF, A4140 |  |  |  | 14.79d | 0d |  |  | UDF_G1 | T | 1 | CIV | BB | CA-14 | PR-13 |  |  |
| A4220 |  | Issue RFT to contractors, conduct site inspections and receive tenders (Access road, platform and protection revetments) | 40d | 2025-09-12 | 2025-11-07 | A4210 |  |  |  | 14.79d | 0d |  | Ground Security dist [320 h] | UDF_G3 | T | 1 | CIV | BB | CA-14 | PR-14 |  |  |
| A4230 |  | Adjudicate, clarify and select preferred contractor (Access road, platform and protection revetments) | 20d | 2025-11-07 | 2025-12-05 | A4220 |  |  |  | 14.79d | 0d |  |  | UDF_G1 | T | 1 | PRO | BB | CA-14 | PR-17 |  |  |
| A4240 |  | Draft contract and letter of acceptance (Access road, platform and protection revetments) | 10d | 2025-11-21 | 2025-12-05 | A4230 FF |  |  |  | 16.79d | 0d |  |  | UDF_G1 | T | 1 | CAM | BB | CA-14 |  |  |  |
| A4250 |  | Legal review of contract (Access road, platform and protection revetments) | 5d | 2025-12-05 | 2025-12-12 | A4240 |  |  |  | 16.79d | 1d |  |  | UDF_G1 | T | 1 | CAM | BB | CA-14 | PR-16 |  |  |
| A4260 |  | Award contract phase 1 (Access road, platform and protection revetments) | 1d | 2025-12-12 | 2025-12-15 | A4250 FF, A1410 FF, A1000 FF, A3770, A3780, A3790, A3760, A1440 |  |  |  | 15.79d | 0d |  |  | UDF_G1 | T | 1 | CAM | BB | CA-14 |  |  |  |
|  | 7 | **Construction** |  | 2025-12-15 | 2026-02-02 |  |  |  |  |  |  |  |  |  |  |  |  |  |  |  |  |  |
| A4270 |  | Mobilise to site for phase 1 construction | 20d | 2025-12-15 | 2026-01-30 | A4200, A3870 FF, A9340, M1170, A10440 |  |  |  | 15.79d | 0d |  | PRDW [160 h]; Ground Security dist [160 h] | UDF_G3 | T | 1 | CAM | BB | CA-14 |  |  |  |
| A4280 |  | Commence Construction on phase 1 | 1d | 2026-01-30 | 2026-02-02 | A4270 |  |  |  | 15.79d |  |  | Ground Security dist [40 h] | UDF_G3 | T |  |  | BB | CA-14 |  |  |  |
|  | 4 | **FID Readiness Activities** |  | 2024-12-12 | 2026-04-13 |  |  |  |  |  |  |  |  |  |  |  |  |  |  |  |  |  |
|  | HRN | **Haul Road North (HRN) Contract** |  | 2025-01-07 | 2026-04-13 |  |  |  |  |  |  |  |  |  |  |  |  |  |  |  |  |  |
|  | 2 | **Permits and Approvals** |  | 2025-02-11 | 2026-03-26 |  |  |  |  |  |  |  |  |  |  |  |  |  |  |  |  |  |
| A4390 |  | Social Permit (Notification of National Departments (ONE, DREDD, Mines, etc)) (Haul Road North) | 6d | 2025-02-11 A | 2025-02-18 A | M1030 | 100% |  |  |  |  |  | Approvals and Permits dist [48 h] | UDF_G1 | AP | 3 |  | HRN | CA-15 | PR-6 |  | UDF_G3 |
| A4540 |  | Notification to Governor of the South-West Region (Haul Road North) | 6d | 2025-04-28 | 2025-05-05 | A4390, M1030 |  |  |  | 45d | 0d |  | Approvals and Permits dist [48 h] | UDF_G1 | AP |  |  | HRN | CA-15 | PR-6 |  | UDF_G3 |
| A6060 |  | PAPs verification & compensation (Haul Road North) | 60d | 2025-04-28 | 2025-07-23 | A4390, M1030 |  |  |  | 38d | 15.21d |  | Approvals and Permits dist [488 h] | UDF_G1 | AP |  |  | HRN | CA-15 | PR-6 |  | UDF_G3 |
| A9820 |  | Vegetation Clearance Permit (Haul Road North) | 60d | 2025-04-28 | 2025-07-23 | M1030 |  |  |  | 38d | 15.21d |  | Approvals and Permits dist [544 h] | UDF_G1 | AP |  |  | HRN | CA-15 | PR-6 |  | UDF_G3 |
| A5930 |  | Notification of Regional Authorities (Haul Road North) | 19d | 2025-05-06 | 2025-06-02 | A4540 |  |  |  | 45d | 0d |  | Approvals and Permits dist [152 h] | UDF_G1 | AP |  |  | HRN | CA-15 | PR-6 |  | UDF_G3 |
| A6040 |  | Notification of District & Municipal Authorities (Haul Road North) | 15d | 2025-06-03 | 2025-06-24 | A5930 |  |  |  | 45d | 0d |  | Approvals and Permits dist [160 h] | UDF_G1 | AP |  |  | HRN | CA-15 | PR-6 |  | UDF_G3 |
| A6050 |  | Notification of Local Village & Chief (Haul Road North) | 13d | 2025-06-25 | 2025-07-14 | A6040 |  |  |  | 45d | 22.21d |  | Approvals and Permits dist [104 h] | UDF_G1 | AP |  |  | HRN | CA-15 | PR-6 |  | UDF_G3 |
| A4370 |  | Obtain MOU with the department of transport for construction of HRN | 20d | 2025-11-27 | 2026-01-14 | A4720 |  |  |  | 58.79d | 50d |  | External Affairs dist [160 h] | UDF_G1 | EA |  |  | HRN | CA-15 | PR-19 |  |  |
| A4380 |  | Obtain MOU with the department of public works for construction of HRN | 20d | 2025-11-27 | 2026-01-14 | A4720 |  |  |  | 58.79d | 50d |  | External Affairs dist [160 h] | UDF_G1 | EA |  |  | HRN | CA-15 | PR-19 |  |  |
| A4400 |  | Obtain letter of support from Fokotany and Ankilimanike Commune (Haul Road North) | 10d | 2025-11-27 | 2025-12-11 | A4720 |  |  |  | 12.79d | 0d |  | External Affairs dist [80 h] | UDF_G1 | EA |  |  | HRN | CA-15 | PR-19 |  |  |
| A4410 |  | Obtain Ankilimanike Mayor and Council approval (Haul Road North) | 10d | 2025-12-11 | 2026-01-14 | A4400 |  |  |  | 12.79d | 0d |  | Approvals and Permits dist [160 h] | UDF_G1 | AP |  |  | HRN | CA-15 | PR-19 |  |  |
| A4420 |  | Obtain approval from Governor (Haul Road North) | 15d | 2026-01-14 | 2026-02-04 | A4400, A4410 |  |  |  | 12.79d | 0d |  | Approvals and Permits dist [160 h] | UDF_G1 | AP |  |  | HRN | CA-15 | PR-19 |  |  |
| A4430 |  | Obtain approval from department of lands (Haul Road North) | 10d | 2026-02-04 | 2026-02-18 | A4400, A4420, A5420 |  |  |  | 18.79d | 6d |  | Approvals and Permits dist [160 h] | UDF_G1 | AP |  |  | HRN | CA-15 | PR-19 |  |  |
| A4440 |  | Obtain approval from department of mines (Haul Road North) | 15d | 2026-02-05 | 2026-02-26 | A4400, A4420 FS+1d, A5420 |  |  |  | 12.79d | 0d |  | Approvals and Permits dist [160 h] | UDF_G1 | AP |  |  | HRN | CA-15 | PR-19 |  |  |
| A4450 |  | Apply for road servitude registration (Haul Road North) | 20d | 2026-02-26 | 2026-03-26 | A4410, A4420, A4430, A4440 |  |  |  | 12.79d |  |  | Approvals and Permits dist [240 h] | UDF_G1 | T |  |  | HRN | CA-15 | PR-19 |  |  |

| ID | WBS | Activity | Duration | Start | Finish | Predecessors | Complete | Planned start | Planned finish | Total float | Free float | Constraint | Calendar | Resources | Site Activity | Department | Level 3 WBS | Business Area | Site Area | Contract Area | Process | ESMS Responsibility |
| --- | --- | --- | --- | --- | --- | --- | --- | --- | --- | --- | --- | --- | --- | --- | --- | --- | --- | --- | --- | --- | --- | --- |
|  | 3 | **Environmental** |  | 2025-01-07 | 2026-04-13 |  |  |  |  |  |  |  |  |  |  |  |  |  |  |  |  |  |
| A4520 |  | Obtain initial (first 6 months) clearing permit (Haul Road North) | 10d | 2026-03-26 | 2026-04-13 | M1220 |  |  |  | 2.79d |  |  |  | Approvals and Permits dist [80 h] | UDF_G1 | AP | 4 | ENV | HRN | CA-15 | PR-19 |  |
| A4530 |  | Obtain E&S site distubance permit (Haul Road North) | 5d | 2026-03-26 | 2026-04-02 | M1220 |  |  |  | 7.79d |  |  |  |  | UDF_G1 | ESMS | 4 | ENV | HRN | CA-15 | PR-19 | SOC |
|  | 1 | **Haul Road Assessment Analysis (IFC) Study** |  | 2025-01-07 | 2025-11-20 |  |  |  |  |  |  |  |  |  |  |  |  |  |  |  |  |  |
| A4550 |  | Engage and Mobilise specialist IFC environmental study consultants (Haul Road North) | 36d | 2025-01-07 A | 2025-02-25 A | M1000 | 100% |  |  |  |  | start on or after 2025-01-07 |  |  | UDF_G1 | ESMS | 1 | ENV | HRN | CA-16 |  | SOC |
| A4580 |  | Perform HRAA field studies (Haul Road North) | 60d | 2025-05-19 | 2025-08-14 | A4550, M1030 FS+10d, A10290 FS+10d, A10210 SS+10d |  |  |  | 3.79d | 0d |  | B11-Standard 5 day workweek - No Shutdown | Ground Security dist [480 h] | UDF_G3 | ESMS | 1 | ENV | HRN | CA-16 |  | ENV |
| A4590 |  | Multi-criteria assessment (Haul Road North) | 40d | 2025-07-24 | 2025-09-19 | A4580 SS+15d, A4580 FS-15d |  |  |  | 3.79d | 0d |  |  |  | UDF_G1 | ESMS | 1 | ENV | HRN | CA-16 |  | ENV |
| A4600 |  | HRAA Phase 2 report preparation (Haul Road North) | 40d | 2025-08-14 | 2025-10-10 | A4590 SS+15d, A4590 FF+15d |  |  |  | 3.79d | 0d |  |  |  | UDF_G1 | ESMS | 1 | ENV | HRN | CA-16 |  | ENV |
| A4610 |  | Submit HRAA Report to IFC (Haul Road North) | 5d | 2025-10-10 | 2025-10-17 | A4600 |  |  |  | 3.79d | 0d |  |  |  | UDF_G1 | ESMS | 1 | ENV | HRN | CA-16 |  | SOC |
| A4620 |  | IFC review and approval (Haul Road North) | 20d | 2025-10-17 | 2025-11-14 | A4610 |  |  |  | 3.79d | 0d |  |  |  | UDF_G1 | ESMS | 1 | ENV | HRN | CA-16 |  | SOC |
| A4630 |  | Finalise HRAA report with IFC comments (Haul Road North) | 10d | 2025-11-06 | 2025-11-20 | A4620 FF+4d |  |  |  | 3.79d | 0d |  |  |  | UDF_G1 | ESMS | 1 | ENV | HRN | CA-16 |  | SOC |
|  | 5 | **Technical** |  | 2025-01-27 | 2025-11-27 |  |  |  |  |  |  |  |  |  |  |  |  |  |  |  |  |  |
| A4650 |  | Engage Geotech contractor COLAS (Haul Road North) | 14d | 2025-01-27 A | 2025-02-18 A | A1000, M1030 | 100% | 2025-02-10 | 2025-02-27 |  |  |  |  |  | UDF_G1 | T | 1 |  | HRN | CA-15 |  |  |
| A4640 |  | Knight Piesold and Zutari Roads site visit | 8d | 2025-02-17 A | 2025-03-03 A | M1040 FS-20d, M1030 FS-20d | 100% | 2025-02-17 | 2025-02-27 |  |  | start on or after 2025-02-11 |  | Ground Security dist [80 h] | UDF_G3 | T |  |  | HRN | CA-15 |  |  |
| A4670 |  | Undertake geotechnical investigations (Test Pits) | 20d | 2025-08-14 | 2025-09-12 | A4150, A4580 FS-20d, A6050, A6060, A9820, M1030, A10290 FS+55d, A10250 |  |  |  | 22.79d | 10d |  |  | Ground Security dist [40 h]; Geotechnical Test Pit Team [40 h] | UDF_G3 | T |  |  | HRN | CA-15 | PR-22 |  |
| A4710 |  | Road design, hydrology, RN9 intersection and community crossing design to IFT | 50d | 2025-09-11 | 2025-11-20 | A4700 FF, M1120 FF |  |  |  | 8.79d | 0d |  |  |  | UDF_G1 | T | 6 |  | HRN | CA-15 |  |  |
| A4680 |  | Undertake geotechnical investigations (PK32 & RN9 intersection drilling) | 5d | 2025-09-19 | 2025-09-26 | M1030, A9820, A6050, A6060, A4150, A4580 FS-20d, A6360, M1040 FS+70d, A10290 FS+70d, A10300 FS+70d, A10250 |  |  |  | 9.79d | 0d |  |  | Ground Security dist [160 h]; Geotechnical Drilling Rig 1 [160 h] | UDF_G3 | T | 3 |  | HRN | CA-15 | PR-4 |  |
| A4690 |  | Lab analysis (Haul Road North) | 10d | 2025-09-26 | 2025-10-10 | A4680, A4670 |  |  |  | 12.79d | 0d |  |  |  | UDF_G1 | T | 4 |  | HRN | CA-15 | PR-5 |  |
| A4700 |  | Geotech report (Haul Road North) | 25d | 2025-10-10 | 2025-11-14 | A4690 |  |  |  | 12.79d | 4d |  |  |  | UDF_G1 | T | 5 |  | HRN | CA-15 | PR-5 |  |
| A4720 |  | Design approval from DoT and DoPW (Haul Road North) | 5d | 2025-11-20 | 2025-11-27 | A4700, A4710 |  |  |  | 8.79d | 0d |  |  | Approvals and Permits dist [80 h] | UDF_G1 | AP |  |  | HRN | CA-15 |  |  |
|  | 6 | **Procurement** |  | 2025-10-30 | 2026-04-01 |  |  |  |  |  |  |  |  |  |  |  |  |  |  |  |  |  |
| A4730 |  | Prepare RFT (Haul Road North) | 20d | 2025-10-30 | 2025-11-27 | A4710 FF+5d |  |  |  | 8.79d | 0d |  |  |  | UDF_G1 | T | 7 |  | HRN | CA-15 | PR-13 |  |
| A4740 |  | Issue RFT to contractors, conduct site inspections and receive tenders (Haul Road North) | 40d | 2025-11-27 | 2026-02-11 | A4730, A4720 |  |  |  | 8.79d | 0d |  |  | Ground Security dist [320 h] | UDF_G3 | T | 8 |  | HRN | CA-15 | PR-14 |  |
| A4750 |  | Adjudicate, clarify and select preferred contractor (Haul Road North) | 20d | 2026-02-11 | 2026-03-11 | A4740 |  |  |  | 8.79d | 0d |  |  |  | UDF_G1 | T | 9 |  | HRN | CA-15 | PR-17 |  |
| A4760 |  | Draft contract and letter of acceptance (Haul Road North) | 10d | 2026-03-11 | 2026-03-25 | A4750 |  |  |  | 8.79d | 0d |  |  |  | UDF_G1 | T | 10 |  | HRN | CA-15 |  |  |
| A4770 |  | Legal review of contract (Haul Road North) | 5d | 2026-03-25 | 2026-04-01 | A4760 |  |  |  | 8.79d | 0d |  |  |  | UDF_G1 | T | 11 |  | HRN | CA-15 | PR-16 |  |
| A4780 |  | Conclude conform agreement (Haul Road North) | 5d | 2026-03-25 | 2026-04-01 | A4770 FF, A4370, A4380 |  |  |  | 8.79d | 0d |  |  |  | UDF_G1 | T | 12 |  | HRN | CA-15 |  |  |

| ID | WBS | Activity | Duration | Start | Finish | Predecessors | Complete | Remaining | Planned start | Planned finish | Total float | Free float | Constraint | Calendar | Resources | Site Activity | Permit Verified By MB | Department | Level 3 WBS | Site Area | Contract Area | Process | Business Area | Schedule Comments |
| --- | --- | --- | --- | --- | --- | --- | --- | --- | --- | --- | --- | --- | --- | --- | --- | --- | --- | --- | --- | --- | --- | --- | --- | --- |
|  | JET | **Marine (Jetty) Contract** |  | 2024-12-12 | 2026-03-31 |  |  |  |  |  |  |  |  |  |  |  |  |  |  |  |  |  |  |  |
|  | 2 | **Permits and Approvals** |  | 2025-02-03 | 2026-02-26 |  |  |  |  |  |  |  |  |  |  |  |  |  |  |  |  |  |  |  |
| A4870 |  | Social Permit (Notification of National Departments (ONE, DREDD, Mines, etc)) (Jetty) | 6d | 2025-02-03 A | 2025-02-10 A | A1000 | 100% |  |  |  |  |  | start on or after 2025-02-03 |  | Approvals and Permits dist [48 h] | UDF_G1 | UDF_G3 | AP | 1 | BB | CA-17 | PR-6 |  |  |
| A4860 |  | Approvals & permits for seismic survey | 30d | 2025-03-31 A | 2025-06-02 | A1000 FS+20d | 50% | 25d | 2025-03-31 | 2025-05-22 | 20d | 10.21d |  |  | Approvals and Permits dist [240 h] | UDF_G1 |  | AP | 1 | BB | CA-17 | PR-6 |  |  |
| A7540 |  | Notification to Governor of the South-West Region (Jetty) | 5d | 2025-03-31 A | 2025-04-07 A | A4870 | 100% |  |  |  |  |  |  |  | Approvals and Permits dist [40 h] | UDF_G1 | UDF_G3 | AP |  | BB | CA-17 | PR-6 |  |  |
| A4880 |  | Obtain MOU with the port authority APMF (Jetty) | 20d | 2025-04-28 | 2025-05-23 | A1000 |  |  |  |  | 162d | 150.21d |  |  | Approvals and Permits dist [160 h] | UDF_G1 |  | EA |  | BB | CA-17 | PR-6 |  |  |
| A4940 |  | Obtain Approval from regional director of fisheries and blue economy of the southern zone | 10d | 2025-04-28 | 2025-05-09 | M1040 |  |  |  |  | 10d | 0.21d |  |  |  | UDF_G1 | UDF_G3 | AP |  | BB | CA-17 | PR-6 |  |  |
| A7550 |  | Notification of Regional Authorities (Jetty) | 5d | 2025-05-05 | 2025-05-12 | A7540 |  |  |  |  | 21.79d | 0d | start on or after 2025-05-05 |  | Approvals and Permits dist [152 h] | UDF_G1 | UDF_G3 | AP |  | BB | CA-17 | PR-6 |  |  |
| A7560 |  | Notification of District & Municipal Authorities (Jetty) | 5d | 2025-05-15 | 2025-05-22 | A7550 FF+8d |  |  |  |  | 21.79d | 0d |  |  | Approvals and Permits dist [160 h] | UDF_G1 | UDF_G3 | AP |  | BB | CA-17 | PR-6 |  |  |
| A7570 |  | Notification of Local Village & Chief (Jetty) | 5d | 2025-05-22 | 2025-05-30 | A7560 |  |  |  |  | 21.79d | 12d |  |  | Approvals and Permits dist [40 h] | UDF_G1 | UDF_G3 | AP |  | BB | CA-17 | PR-6 |  |  |
| A4890 |  | Obtain Toliara I Mayor and Council approval for development (Jetty) | 10d | 2026-01-15 | 2026-01-29 | A1000, A5140, A4880 |  |  |  |  | 11.79d | 0d |  |  | Approvals and Permits dist [160 h] | UDF_G1 |  | AP |  | BB | CA-17 | PR-19 |  |  |
| A4900 |  | Obtain approval from Governor (Jetty) | 10d | 2026-01-29 | 2026-02-12 | A1000, A5140, A4890 FF, A4890 |  |  |  |  | 11.79d | 0d |  |  | Approvals and Permits dist [160 h] | UDF_G1 |  | AP |  | BB | CA-17 | PR-19 |  |  |
| A4910 |  | Obtain approval from department of lands (Jetty) | 10d | 2026-02-12 | 2026-02-26 | A1000, A5140, A4900 FF+5d, A4900 |  |  |  |  | 11.79d | 11d |  |  | Approvals and Permits dist [160 h] | UDF_G1 |  | AP |  | BB | CA-17 | PR-19 |  |  |
| A4920 |  | Obtain approval from department of mines (Jetty) | 10d | 2026-02-12 | 2026-02-26 | A1000, A5140, A4900 FF+5d, A4900 |  |  |  |  | 11.79d | 11d |  |  | Approvals and Permits dist [160 h] | UDF_G1 |  | AP |  | BB | CA-17 | PR-19 |  |  |
| A4930 |  | Obtain MOU with the department of transport (Jetty) | 10d | 2026-02-12 | 2026-02-26 | A1000, A5140, A4900 |  |  |  |  | 11.79d | 11d |  |  | Approvals and Permits dist [160 h] | UDF_G1 |  | EA |  | BB | CA-17 | PR-19 |  |  |
|  | 3 | **Environmental** |  | 2025-06-03 | 2026-03-31 |  |  |  |  |  |  |  |  |  |  |  |  |  |  |  |  |  |  |  |
| A4960 |  | Obtain E&S site disturbance permit for seismic survey (Jetty) | 10d | 2025-06-03 | 2025-06-18 | A10280 SS+10d |  |  |  |  | 9.79d | 0d |  |  | Approvals and Permits dist [80 h] | UDF_G1 |  | AP | 8 | BB | CA-17 | PR-19 | ENV |  |
| A4970 |  | Obtain E&S site distubance permit for marine geotechnical investigations (Jetty) | 10d | 2025-06-18 | 2025-07-03 | A10280 SS+20d |  |  |  |  | 9.79d | 0d |  |  | Approvals and Permits dist [80 h] | UDF_G1 |  | AP | 8 | BB | CA-17 | PR-19 | ENV |  |
| A5010 |  | Obtain E&S site disturbance permits (Jetty) | 9d | 2026-03-18 | 2026-03-31 | M1210 |  |  |  |  | 9.79d |  |  |  | Approvals and Permits dist [80 h] | UDF_G1 |  | AP | 8 | BB | CA-17 | PR-19 | ENV |  |
|  | 5 | **Technical** |  | 2024-12-12 | 2025-11-07 |  |  |  |  |  |  |  |  |  |  |  |  |  |  |  |  |  |  |  |
| A8080 |  | Issue Marine Geotech RFT | 5d | 2024-12-12 A | 2025-01-15 A | M1000 | 100% |  | 2024-12-12 | 2024-12-18 |  |  | finish on or after 2025-01-15 |  |  | UDF_G1 |  | T |  | BB | CA-17 |  |  |  |
| A5020 |  | Update Seismic Quotations and Negotiations (Jetty) | 20d | 2025-01-07 A | 2025-02-03 A | A1000 | 100% |  |  |  |  |  |  |  | PRDW [160 h] | UDF_G1 |  | T | 1 | BB | CA-17 |  |  |  |
| A5030 |  | Receive and Adjudicate Marine Geotech tenders (Jetty) | 40d | 2025-01-13 A | 2025-03-07 A | A8080 | 100% |  |  |  |  |  | finish on or after 2025-03-14 |  | PRDW [320 h] | UDF_G1 |  | T |  | BB | CA-17 |  |  | Closing Date 15-Feb |
| A5040 |  | Award Seismic Survey Contract (Jetty) | 10d | 2025-03-31 A | 2025-05-02 | A5020 | 95% | 5d | 2025-03-31 | 2025-04-14 | 20d | 10.21d |  |  | PRDW [80 h] | UDF_G1 |  | T | 1 | BB | CA-17 |  |  |  |
| A5050 |  | Award Marine Geotech Drilling Contract (Jetty) | 5d | 2025-03-31 A | 2025-04-07 A | A5030 | 100% |  |  |  |  |  |  |  | PRDW [80 h] | UDF_G1 |  | T | 1 | BB | CA-17 |  |  |  |
| A5070 |  | Mobilise Geotech Drilling Equipment to Site (Jetty) | 30d | 2025-05-12 | 2025-06-25 | A5050, M1040, A4940 |  |  |  |  | 9.79d | 0d | as late as possible | B11-Standard 5 day workweek - No Shutdown | PRDW [160 h]; Ground Security dist [160 h] | UDF_G3 |  | T | 1 | BB | CA-17 | PR-18 |  |  |
| A5060 |  | Mobilise Seismic Equipment to site (Jetty) | 20d | 2025-05-19 | 2025-06-18 | A5040, A5050, M1040 |  |  |  |  | 9.79d | 0d | as late as possible |  | Ground Security dist [160 h]; PRDW [160 h] | UDF_G3 |  | T |  | BB | CA-17 | PR-18 |  |  |
| A5080 |  | Undertake Seismic Survey (Jetty) | 10d | 2025-06-18 | 2025-07-03 | A5060, A4960, A4860, M1040, A10280 SS+20d, A7570 |  |  |  |  | 9.79d | 0d |  |  | Ground Security dist [80 h]; PRDW [80 h] | UDF_G3 |  | T |  | BB | CA-17 | PR-23 |  |  |
| A10200 |  | Assemble Geotech Drilling Equipment (Jetty) | 5d | 2025-06-25 | 2025-07-03 | A7570, A5070 |  |  |  |  | 9.79d | 0d | as late as possible | B11-Standard 5 day workweek - No Shutdown | PRDW [160 h]; Ground Security dist [160 h] | UDF_G3 |  | T | 1 | BB | CA-17 | PR-18 |  |  |
| A5090 |  | Issue Seismic Survey report (Jetty) | 10d | 2025-07-03 | 2025-07-17 | A5080 |  |  |  |  | 89.79d | 80d |  |  | PRDW [80 h] | UDF_G1 |  | T |  | BB | CA-17 |  |  |  |
| A5100 |  | Undertake Marine Geotechnical Investigations (Jetty) | 35d | 2025-07-03 | 2025-08-22 | A7570, M1050, A4150, A1000, M1040, A5080 |  |  |  |  | 9.79d | 0d |  |  | Ground Security dist [160 h]; PRDW [160 h] | UDF_G3 |  | T | 1 | BB | CA-17 | PR-23 |  |  |
| A5110 |  | Perform Sample Laboratory Analysis (Jetty) | 50d | 2025-08-22 | 2025-10-31 | A5100 |  |  |  |  | 9.79d | 0d |  |  | PRDW [320 h] | UDF_G1 |  | T | 1 | BB | CA-17 | PR-5 |  |  |
| A5120 |  | Issue Geotechnical Report (Jetty) | 5d | 2025-10-31 | 2025-11-07 | A5110 |  |  |  |  | 9.79d | 0d |  |  | PRDW [80 h] | UDF_G1 |  | T | 1 | BB | CA-17 |  |  |  |

| ID | WBS | Activity | Duration | Start | Finish | Predecessors | Complete | Total float | Free float | Constraint | Calendar | Resources | Site Activity | Department | Level 3 WBS | Site Area | Contract Area | Process | Schedule Comments | Permit Verified By MB | Business Area |
| --- | --- | --- | --- | --- | --- | --- | --- | --- | --- | --- | --- | --- | --- | --- | --- | --- | --- | --- | --- | --- | --- |
|  | 6 | **Procurement** |  | 2025-11-07 | 2026-03-03 |  |  |  |  |  |  |  |  |  |  |  |  |  |  |  |  |
| A5130 |  | Issue Final Geotech Information to Shortlisted Bidders (Jetty) | 5d | 2025-11-07 | 2025-11-14 | A5090, A5120 |  | 9.79d | 0d |  |  | PRDW [40 h] | UDF_G1 | T | 1 | BB | CA-17 |  |  |  |  |
| A5140 |  | Receive Best And Final Offers (Jetty) | 30d | 2025-11-14 | 2026-01-15 | A5130, A5130 FF |  | 9.79d | 0d |  |  | PRDW [480 h] | UDF_G1 | T | 1 | BB | CA-17 | PR-17 |  |  |  |
| A5150 |  | Evaluate and Negotiate with Preferred Bidder (Jetty) | 25d | 2026-01-15 | 2026-02-19 | A5140 |  | 29.79d | 0d |  |  | PRDW [200 h] | UDF_G1 | T | 1 | BB | CA-17 |  |  |  |  |
| A5160 |  | Base Legal Review and Lender Approvals for Conformed Agreement (Jetty) | 20d | 2026-02-03 | 2026-03-03 | A5150 FS-12d |  | 29.79d | 0d |  |  |  | UDF_G1 | T |  | BB | CA-17 | PR-16 |  |  |  |
| A5170 |  | Conclude Conform Agreement (Jetty) | 1d | 2026-03-02 | 2026-03-03 | A5160 FF |  | 29.79d | 21d |  |  | PRDW [8 h] | UDF_G1 | T |  | BB | CA-17 |  | Duration ? |  |  |
|  | FB | **Firehenana Bridge Contract** |  | 2025-01-20 | 2026-03-19 |  |  |  |  |  |  |  |  |  |  |  |  |  |  |  |  |
|  | 2 | **Permits and Approvals** |  | 2025-02-03 | 2026-02-05 |  |  |  |  |  |  |  |  |  |  |  |  |  |  |  |  |
| A5250 |  | Social Permit (Notification of National Departments (ONE, DREDD, Mines, etc)) (Firehenana Bridge) | 6d | 2025-02-03 A | 2025-02-10 A | A1000 | 100% |  |  | start on or after 2025-02-03 |  | Approvals and Permits dist [48 h] | UDF_G1 | AP | 1 | FB | CA-18 | PR-6 |  | UDF_G3 |  |
| A6070 |  | Notification to Governor of the South-West Region (Firehenana Bridge) | 5d | 2025-03-31 A | 2025-04-07 A | A5250 | 100% |  |  |  |  | Approvals and Permits dist [40 h] | UDF_G1 | AP |  | FB | CA-18 | PR-6 |  | UDF_G3 |  |
| A7420 |  | PAPs verification & compensation (Firehenana Bridge) | 10d | 2025-04-28 | 2025-05-09 | A1000, M1040 |  | 18d | 15.21d |  |  | Approvals and Permits dist [320 h] | UDF_G1 | AP |  | FB | CA-18 | PR-6 |  | UDF_G3 |  |
| A7390 |  | Notification of Regional Authorities (Firehenana Bridge) | 5d | 2025-05-05 | 2025-05-12 | A6070 |  | 7.79d | 0d | start on or after 2025-05-05 |  | Approvals and Permits dist [120 h] | UDF_G1 | AP |  | FB | CA-18 | PR-6 |  | UDF_G3 |  |
| A7400 |  | Notification of District & Municipal Authorities (Firehenana Bridge) | 5d | 2025-05-12 | 2025-05-19 | A7390 |  | 7.79d | 0d |  | B11-Standard 5 day workweek - No Shutdown | Approvals and Permits dist [80 h] | UDF_G1 | AP |  | FB | CA-18 | PR-6 |  | UDF_G3 |  |
| A7410 |  | Notification of Local Village & Chief (Firehenana Bridge) | 5d | 2025-05-19 | 2025-05-26 | A7400 |  | 7.79d | 5d |  |  | Approvals and Permits dist [40 h] | UDF_G1 | AP |  | FB | CA-18 | PR-6 |  | UDF_G3 |  |
| A5260 |  | Obtain approvals DoT and DoPW (Firehenana Bridge) | 15d | 2026-01-15 | 2026-02-05 | A5420 |  | 47.79d | 30d |  |  | Approvals and Permits dist [120 h] | UDF_G1 | AP | 7 | FB | CA-18 | PR-19 |  |  | CTY |
|  | 3 | **Environmental** |  | 2025-04-28 | 2025-05-23 |  |  |  |  |  |  |  |  |  |  |  |  |  |  |  |  |
| A5270 |  | Obtain MOUs with DGF (Firehenana Bridge) | 20d | 2025-04-28 | 2025-05-23 | A1000 |  | 213d |  |  |  | External Affairs dist [160 h] | UDF_G1 | EA | 4 | FB | CA-18 |  |  |  | ENV |
|  | 5 | **Technical** |  | 2025-01-20 | 2026-01-15 |  |  |  |  |  |  |  |  |  |  |  |  |  |  |  |  |
| A5340 |  | Update Phase 1 bridge Design Contract (including geotechnical investigations) with COLAS | 30d | 2025-01-20 A | 2025-02-28 A | M1000 SS, A1000 | 100% |  |  |  |  |  | UDF_G1 | T |  | FB | CA-18 |  | Might be delayed by a week or two |  |  |
| A5360 |  | Mobilise Contractor for geotechnical investigation (Firehenana Bridge) | 20d | 2025-05-05 | 2025-06-03 | M1000 SS, A5340 |  | 2.79d | 0d | as late as possible |  | Ground Security dist [80 h]; Geotechnical Test Pit Team [80 h] | UDF_G3 | T | 2 | FB | CA-18 | PR-18 |  |  |  |
| A5370 |  | Undertake hydrology study (incl 2020 river runoff data) (Firehenana Bridge) | 40d | 2025-05-12 | 2025-07-09 | A1000, M1040 FS+10d |  | 33d | 0d |  |  | Ground Security dist [320 h] | UDF_G3 | T | 5 | FB | CA-18 |  |  |  |  |
| A5390 |  | Phase 1 Geotechnical investigations for bridge (Firehenana Bridge) | 55d | 2025-06-03 | 2025-08-22 | A5340, A5360, A7410, A7420, M1040 FS+20d, A10290 FS+20d, A10300 FS+20d, M1030 FS+20d, A10210 SS+10d |  | 2.79d | 0d |  |  | Ground Security dist [320 h] | UDF_G3 | T | 4 | FB | CA-18 | PR-4 |  |  |  |
| A5380 |  | Issue preliminary hydrology report (Firehenana Bridge) | 10d | 2025-07-10 | 2025-07-23 | A5370 |  | 33d | 30.21d |  |  |  | UDF_G1 | T | 6 | FB | CA-18 |  |  |  |  |
| A5400 |  | Update Preliminary design (Firehenana Bridge) | 50d | 2025-08-22 | 2025-10-31 | A5390, A5380 SS, A7170 SS |  | 2.79d | 0d |  |  |  | UDF_G1 | T | 8 | FB | CA-18 |  |  |  |  |
| A7170 |  | Phase 1 Geotech Lab Analysis (Firehenana Bridge) | 30d | 2025-08-22 | 2025-10-03 | A5390 |  | 2.79d | 0d |  |  |  | UDF_G1 | T |  | FB | CA-18 | PR-5 |  |  |  |
| A5410 |  | Geotech Report (Firehenana Bridge) | 40d | 2025-10-03 | 2025-11-28 | A7170 |  | 7.79d | 5d |  |  |  | UDF_G1 | T | 9 | FB | CA-18 |  |  |  |  |
| A5420 |  | Structural and Detail Design (Firehenana Bridge) | 40d | 2025-10-31 | 2026-01-15 | A5410 FF+15d, A5400 |  | 2.79d | 0d |  |  |  | UDF_G1 | T |  | FB | CA-18 |  |  |  |  |

| ID | WBS | Activity | Duration | Start | Finish | Predecessors | Complete | Remaining | Planned start | Planned finish | Total float | Free float | Constraint | Resources | Site Activity | Department | Level 3 WBS | Site Area | Contract Area | Business Area | Permit Verified By MB | Process |
| --- | --- | --- | --- | --- | --- | --- | --- | --- | --- | --- | --- | --- | --- | --- | --- | --- | --- | --- | --- | --- | --- | --- |
|  | 6 | **Procurement** |  | 2026-01-15 | 2026-03-19 |  |  |  |  |  |  |  |  |  |  |  |  |  |  |  |  |  |
| A5430 |  | Colas updates construction cost and schedule (Firehenana Bridge) | 20d | 2026-01-15 | 2026-02-12 | A5420 |  |  |  |  | 17.79d | 0d |  | COLAS Design and Construct [160 h] | UDF_G1 | T | 10 | FB | CA-18 |  |  |  |
| A5440 |  | Negotiate EPC agreement and Legal review (Firehenana Bridge) | 10d | 2026-02-12 | 2026-02-26 | A5430 |  |  |  |  | 17.79d | 0d |  | COLAS Design and Construct [80 h] | UDF_G1 | T | 12 | FB | CA-18 |  |  |  |
| A5450 |  | Conclude conform agreement | 10d | 2026-03-05 | 2026-03-19 | A5430 FF, A5440 FS+5d, A5260 FF, A1000 FF |  |  |  |  | 17.79d | 9d |  | COLAS Design and Construct [80 h] | UDF_G1 | T | 11 | FB | CA-18 | CAM |  |  |
|  | PPA | **Power Supply Contract (Axian-NEA)** |  | 2025-01-07 | 2026-02-12 |  |  |  |  |  |  |  |  |  |  |  |  |  |  |  |  |  |
|  | 2 | **Permits and Approvals** |  | 2025-04-28 | 2026-01-29 |  |  |  |  |  |  |  |  |  |  |  |  |  |  |  |  |  |
| A7590 |  | Social Permit (Notification of National Departments (ONE, DREDD, Mines, etc)) | 6d | 2025-04-28 | 2025-05-05 | A1000, M1030 |  |  |  |  | 98d | 0d |  | Approvals and Permits dist [48 h] | UDF_G1 | AP |  | MS | CA-19 |  | UDF_G3 | PR-6 |
| A7640 |  | PAPs verification & compensation (Power plant) | 60d | 2025-04-28 | 2025-07-23 | M1030 |  |  |  |  | 87d | 65.21d |  | Approvals and Permits dist [488 h] | UDF_G1 | AP |  | MS | CA-19 |  | UDF_G3 | PR-6 |
| A7650 |  | Vegetation Clearance Permit (Power plant) | 53d | 2025-04-28 | 2025-07-14 | M1030 |  |  |  |  | 94d | 72.21d |  | Approvals and Permits dist [424 h] | UDF_G1 | AP |  | MS | CA-19 |  | UDF_G3 | PR-6 |
| A7600 |  | Notification to Governor of the South-West Region (Power plant) | 5d | 2025-05-06 | 2025-05-12 | A7590 |  |  |  |  | 98d | 0d |  | Approvals and Permits dist [40 h] | UDF_G1 | AP |  | MS | CA-19 |  | UDF_G3 | PR-6 |
| A7610 |  | Notification of Regional Authorities (Power plant) | 5d | 2025-05-13 | 2025-05-19 | A7600 |  |  |  |  | 98d | 0d |  | Approvals and Permits dist [40 h] | UDF_G1 | AP |  | MS | CA-19 |  | UDF_G3 | PR-6 |
| A7620 |  | Notification of District & Municipal Authorities (Power plant) | 20d | 2025-05-20 | 2025-06-18 | A7610 |  |  |  |  | 98d | 0d |  | Approvals and Permits dist [160 h] | UDF_G1 | AP |  | MS | CA-19 |  | UDF_G3 | PR-6 |
| A7630 |  | Notification of Local Village & Chief (Power plant) | 13d | 2025-06-19 | 2025-07-08 | A7620 |  |  |  |  | 98d | 76.21d |  | Approvals and Permits dist [104 h] | UDF_G1 | AP |  | MS | CA-19 |  | UDF_G3 | PR-6 |
| A5530 |  | Obtain design / construction approval from department of mines (Power Plant) (Ministry of energy?) | 20d | 2025-12-12 | 2026-01-29 | A1000, A5590 FF-10d |  |  |  |  | 21.79d | 21d |  | Approvals and Permits dist [160 h] | UDF_G1 | AP | 1 | MS | CA-19 | ENV |  | PR-19 |
|  | 5 | **Technical** |  | 2025-01-07 | 2026-02-12 |  |  |  |  |  |  |  |  |  |  |  |  |  |  |  |  |  |
| A5540 |  | Complete Technical Review (Power plant) | 43d | 2025-01-07 A | 2025-05-23 | M1000 | 40% | 20d | 2025-01-07 | 2025-03-06 | 22d | 0d |  |  | UDF_G1 | T |  | MS | CA-19 |  |  |  |
| A5550 |  | Complete Legal Review (Power plant) | 43d | 2025-01-07 A | 2025-05-23 | M1000 | 40% | 20d | 2025-01-07 | 2025-03-06 | 22d | 0d | finish on or after 2025-02-28 |  | UDF_G1 | T |  | MS | CA-19 |  |  |  |
| A5560 |  | Develop Board Presentation (Power plant) | 20d | 2025-05-26 | 2025-06-24 | A5540, A5550 |  |  |  |  | 22d | 0d |  |  | UDF_G1 | T |  | MS | CA-19 |  |  |  |
| A5570 |  | Board Review (Power plant) | 20d | 2025-06-25 | 2025-07-23 | A5560 |  |  |  |  | 22d | 0d |  |  | UDF_G1 | T |  | MS | CA-19 |  |  |  |
| A5580 |  | Undertake geotechnical investigations for power plant location | 15d | 2025-10-24 | 2025-11-14 | M1090, A7630, A7640, A7650, A4150, A4680, A7340, A10250 |  |  |  |  | 21.79d | 0d |  | Ground Security dist [160 h]; Geotechnical Drilling Rig 1 [120 h] | UDF_G3 | T | 4 | MS | CA-19 |  |  | PR-4 |
| A7180 |  | Geotechnical Lab analysis (Power plant) | 10d | 2025-11-14 | 2025-11-28 | A5580 |  |  |  |  | 21.79d | 0d |  |  | UDF_G1 | T |  | MS | CA-19 |  |  | PR-5 |
| A5590 |  | Axian FEED process | 40d | 2025-11-28 | 2026-02-12 | A5600, A5580, M1090, A7180 |  |  |  |  | 21.79d | 0d |  |  | UDF_G1 | T |  | MS | CA-19 |  |  |  |
|  | 6 | **Procurement** |  | 2025-07-24 | 2025-10-23 |  |  |  |  |  |  |  |  |  |  |  |  |  |  |  |  |  |
| A5600 |  | Conclude power purchase agreement subect to FID (Power plant) | 20d | 2025-07-24 | 2025-08-21 | A8500, A5570 |  |  |  |  | 22d | 0d |  |  | UDF_G1 | T | 6 | MS | CA-19 |  |  |  |
| A5610 |  | Axian lenders approval | 40d | 2025-08-22 | 2025-10-16 | A5600 |  |  |  |  | 22d | 0d |  |  | UDF_G1 | T |  | MS | CA-19 |  |  |  |
| A5620 |  | Award FEED portion of the PPA Contract (Power plant) | 5d | 2025-10-17 | 2025-10-23 | A5570, A8500, A5600, A5610 |  |  |  |  | 22d | 0d |  |  | UDF_G1 | T |  | MS | CA-19 |  |  |  |

Notes:
- A5580: Resolution: Require Environmental and Community access

| ID | WBS | Activity | Duration | Start | Finish | Predecessors | Complete | Total float | Free float | Constraint | Calendar | Resources | Site Activity | Permit Verified By MB | Department | Site Area | Contract Area | Process | Level 3 WBS | Business Area |
| --- | --- | --- | --- | --- | --- | --- | --- | --- | --- | --- | --- | --- | --- | --- | --- | --- | --- | --- | --- | --- |
|  | MS | **Process plants bulk earthworks Contract** |  | 2025-02-03 | 2026-03-31 |  |  |  |  |  |  |  |  |  |  |  |  |  |  |  |
|  | 2 | **Permits and Approvals** |  | 2025-02-03 | 2025-09-09 |  |  |  |  |  |  |  |  |  |  |  |  |  |  |  |
| A9830 |  | Social Permit (Notification of National Departments (ONE, DREDD, Mines, etc)) (Process Plant Bulk Earthworks) | 6d | 2025-02-03 A | 2025-02-10 A | A1000 | 100% |  |  | start on or after 2025-02-03 |  | Approvals and Permits dist [48 h] | UDF_G1 | UDF_G3 | AP | MS | CA-20 | PR-6 |  |  |
| A9840 |  | Notification to Governor of the South-West Region (Process Plant Bulk Earthworks Geotech) | 5d | 2025-04-28 | 2025-05-02 | A9830, M1030 |  | 71d | 0d |  |  | Approvals and Permits dist [40 h] | UDF_G1 | UDF_G3 | AP | MS | CA-20 | PR-6 |  |  |
| A9880 |  | PAPs verification & compensation (Process Plant Bulk Earthworks) | 53d | 2025-04-28 | 2025-07-14 | A1000, M1030 |  | 62d | 52.21d |  |  | Approvals and Permits dist [424 h] | UDF_G1 | UDF_G3 | AP | MS | CA-20 | PR-6 |  |  |
| A9890 |  | Vegetation Clearance Permit (Process Plant Bulk Earthworks) | 52d | 2025-04-28 | 2025-07-11 | A1000, M1030 |  | 63d | 53.21d |  |  | Approvals and Permits dist [416 h] | UDF_G1 | UDF_G3 | AP | MS | CA-20 | PR-6 |  |  |
| A9850 |  | Notification of Regional Authorities (Process Plant Bulk Earthworks Geotech) | 19d | 2025-05-05 | 2025-05-30 | A9840 |  | 71d | 0d |  |  | Approvals and Permits dist [152 h] | UDF_G1 | UDF_G3 | AP | MS | CA-20 | PR-6 |  |  |
| A9860 |  | Notification of District & Municipal Authorities (Process Plant Bulk Earthworks Geotech) | 15d | 2025-06-02 | 2025-06-23 | A9850 |  | 71d | 0d |  |  | Approvals and Permits dist [160 h] | UDF_G1 | UDF_G3 | AP | MS | CA-20 | PR-6 |  |  |
| A9870 |  | Notification of Local Village & Chief (Process Plant Bulk Earthworks Geotech) | 5d | 2025-06-24 | 2025-07-01 | A9860 |  | 71d | 61.21d |  |  | Approvals and Permits dist [40 h] | UDF_G1 | UDF_G3 | AP | MS | CA-20 | PR-6 |  |  |
| A5710 |  | Obtain construction approval from department of mines (Process Plant Bulk Earthworks) | 20d | 2025-08-12 | 2025-09-09 | A1000, A6090 |  | 140d |  |  |  | Approvals and Permits dist [160 h] | UDF_G1 |  | AP | MS | CA-20 | PR-19 | 7 | ENV |
|  | 3 | **Environmental** |  | 2026-03-17 | 2026-03-31 |  |  |  |  |  |  |  |  |  |  |  |  |  |  |  |
| A5750 |  | Obtain clearing permit for the mine site | 10d | 2026-03-17 | 2026-03-31 | A1000, M1280 |  | 9.79d |  |  |  | Approvals and Permits dist [80 h] | UDF_G1 |  | AP | MS | CA-20 | PR-19 | 7 | ENV |
|  | 5 | **Technical** |  | 2025-04-28 | 2025-11-07 |  |  |  |  |  |  |  |  |  |  |  |  |  |  |  |
| A6080 |  | Update minesite hydrology (DFS appendix 9.6) | 30d | 2025-04-28 | 2025-06-10 | A1000, M1030, A8550 |  | 75d | 23d | finish on or after 2025-06-10 |  |  | UDF_G1 |  | T | MS | CA-20 |  | 1 |  |
| A6090 |  | Process plants earthworks design IFT | 20d | 2025-07-15 | 2025-08-11 | A6080, A9250 FS-30d |  | 52d | 0d |  |  |  | UDF_G1 |  | T | MS | CA-20 |  | 2 |  |
| A7340 |  | Conduct geotechnical investigations and testing at WCP and Monazite (New position) | 20d | 2025-09-26 | 2025-10-24 | A9870, A9880, A9890, M1030, A4150, A10250, A3210, A4680 |  | 9.79d | 0d |  |  | Ground Security dist [200 h]; Geotechnical Drilling Rig 1 [160 h] | UDF_G3 |  | T | MS | CA-20 | PR-4 |  |  |
| A7350 |  | Geotechnical Lab analysis (Process Plant Bulk Earthworks) | 10d | 2025-10-24 | 2025-11-07 | A7340 |  | 9.79d | 0d |  |  |  | UDF_G1 |  | T | MS | CA-20 | PR-5 |  |  |
|  | 6 | **Procurement** |  | 2025-10-10 | 2026-02-16 |  |  |  |  |  |  |  |  |  |  |  |  |  |  |  |
| A6100 |  | Prepare bulk earthworks RFT | 20d | 2025-10-10 | 2025-11-07 | A6090, A7350 FF |  | 9.79d | 0d |  |  |  | UDF_G1 |  | T | MS | CA-20 |  | 3 |  |
| A6110 |  | Issue RFT to contractors, conduct site inspections and receive tenders (Process Plant Bulk Earthworks) | 30d | 2025-11-07 | 2025-12-19 | A6100 |  | 9.79d | 0d |  | B11-Standard 5 day workweek - No Shutdown | Ground Security dist [240 h] | UDF_G3 |  | T | MS | CA-20 | PR-14 | 4 |  |
| A6120 |  | Adjudicate, clarify and select preferred contractor (Process Plant Bulk Earthworks) | 20d | 2025-12-19 | 2026-01-16 | A6110 |  | 9.79d | 0d |  | B11-Standard 5 day workweek - No Shutdown |  | UDF_G1 |  | T | MS | CA-20 | PR-17 | 5 |  |
| A6130 |  | Draft contract and letter of acceptance (Process Plant Bulk Earthworks) | 10d | 2026-01-16 | 2026-01-30 | A6120 |  | 40.79d | 0d |  |  |  | UDF_G1 |  | T | MS | CA-20 |  | 5 |  |
| A6140 |  | Legal review of contract (Process Plant Bulk Earthworks) | 10d | 2026-01-30 | 2026-02-13 | A6130, A6090 |  | 40.79d | 0d |  |  |  | UDF_G1 |  | T | MS | CA-20 | PR-16 | 5 |  |
| A6150 |  | Conclude conform agreement | 1d | 2026-02-13 | 2026-02-16 | A6140 |  | 40.79d | 32d |  |  |  | UDF_G1 |  | T | MS | CA-20 |  |  |  |

Notes:
- A6090: Schedule Comments: Do you need to complete the civils/structural and mechanical design to complete?

| ID | WBS | Activity | Duration | Start | Finish | Predecessors | Complete | Total float | Free float | Constraint | Resources | Site Activity | Permit Verified By MB | Department | Level 3 WBS | Site Area | Contract Area | Process | Business Area |
| --- | --- | --- | --- | --- | --- | --- | --- | --- | --- | --- | --- | --- | --- | --- | --- | --- | --- | --- | --- |
|  | EF | **Export Facility Piling Contract** |  | 2025-02-03 | 2026-03-31 |  |  |  |  |  |  |  |  |  |  |  |  |  |  |
|  | 2 | **Permits and Approvals** |  | 2025-02-03 | 2026-03-19 |  |  |  |  |  |  |  |  |  |  |  |  |  |  |
| A6230 |  | Social Permit (Notification of National Departments (ONE, DREDD, Mines, etc)) (Export Facility Piling) | 6d | 2025-02-03 A | 2025-02-10 A | A1000 | 100% |  |  | finish on or after 2025-03-04 | Approvals and Permits dist [48 h] | UDF_G1 | UDF_G3 | AP | 5 | BB | CA-21 | PR-6 |  |
| A7490 |  | Notification to Governor of the South-West Region (Export Facility Piling) | 5d | 2025-04-28 | 2025-05-02 | A6230, M1040 |  | 43d | 0d |  | Approvals and Permits dist [40 h] | UDF_G1 | UDF_G3 | AP |  | BB | CA-21 | PR-6 |  |
| A7530 |  | PAPs verification & compensation (Export Facility Piling) | 10d | 2025-04-28 | 2025-05-09 | M1040 |  | 77d | 70.21d |  | Approvals and Permits dist [424 h] | UDF_G1 | UDF_G3 | AP |  | BB | CA-21 | PR-6 |  |
| A7500 |  | Notification of Regional Authorities (Export Facility Piling) | 19d | 2025-05-05 | 2025-05-30 | A7490 |  | 43d | 0d |  | Approvals and Permits dist [152 h] | UDF_G1 | UDF_G3 | AP |  | BB | CA-21 | PR-6 |  |
| A7510 |  | Notification of District & Municipal Authorities (Export Facility Piling) | 15d | 2025-06-02 | 2025-06-23 | A7500 |  | 43d | 0d |  | Approvals and Permits dist [160 h] | UDF_G1 | UDF_G3 | AP |  | BB | CA-21 | PR-6 |  |
| A7520 |  | Notification of Local Village & Chief (Export Facility Piling) | 5d | 2025-06-24 | 2025-07-01 | A7510 |  | 43d | 36.21d |  | Approvals and Permits dist [40 h] | UDF_G1 | UDF_G3 | AP |  | BB | CA-21 | PR-6 |  |
| A6240 |  | APMF MOU for the export facility construction & operation | 10d | 2026-01-08 | 2026-01-22 | A1000, A6400 FF+5d |  | 6.79d | 0d |  |  | UDF_G1 |  | EA | 1 | BB | CA-21 | PR-19 |  |
| A6250 |  | Obtain Toliara I Mayor and Council approval for development (Export Facility Piling) | 10d | 2026-01-22 | 2026-02-05 | A1000, A6400, A6240 |  | 6.79d | 0d |  | Approvals and Permits dist [160 h] | UDF_G1 |  | AP |  | BB | CA-21 | PR-19 |  |
| A6260 |  | Obtain approval from Governor (Export Facility Piling) | 10d | 2026-02-05 | 2026-02-19 | A1000, A6400, A6250 |  | 6.79d | 0d |  | Approvals and Permits dist [160 h] | UDF_G1 |  | AP |  | BB | CA-21 | PR-19 |  |
| A6270 |  | Obtain approval from department of lands (Export Facility Piling) | 20d | 2026-02-19 | 2026-03-19 | A1000, A6400, A6260 |  | 17.79d |  |  | Approvals and Permits dist [160 h] | UDF_G1 |  | AP |  | BB | CA-21 | PR-19 |  |
| A6280 |  | Obtain MOU with the department of public works (Export Facility Piling) | 20d | 2026-02-19 | 2026-03-19 | A1000, A6400, A6260 |  | 17.79d |  |  | Approvals and Permits dist [160 h] | UDF_G1 |  | EA |  | BB | CA-21 | PR-19 |  |
|  | 3 | **Environmental** |  | 2026-03-18 | 2026-03-31 |  |  |  |  |  |  |  |  |  |  |  |  |  |  |
| A6320 |  | Obtain E&S site disturbance permits for Piling | 9d | 2026-03-18 | 2026-03-31 | A5000 |  | 9.79d |  |  | Approvals and Permits dist [80 h] | UDF_G1 |  | AP |  | BB | CA-21 | PR-19 | ENV |
|  | 5 | **Technical** |  | 2025-04-28 | 2026-01-29 |  |  |  |  |  |  |  |  |  |  |  |  |  |  |
| A6330 |  | Commence design negotiations with Franki (Export Facility Piling) (Franki BQR pricing) | 20d | 2025-04-28 | 2025-05-23 | A1000, A8550 |  | 76d | 0d |  |  | UDF_G1 |  | T | 1 | BB | CA-21 |  |  |
| A6340 |  | Award Phase 1 - design portion (Export Facility Piling) | 1d | 2025-05-26 | 2025-05-26 | A6330 |  | 76d | 0d | finish on or after 2025-03-29 |  | UDF_G1 |  | T | 2 | BB | CA-21 |  |  |
| A6370 |  | Liaison between Lyco's and Keller to optimise piling vs differential settlement (Export Facility Piling) | 40d | 2025-05-27 | 2025-07-24 | A6340, A8550 |  | 76d | 0d |  |  | UDF_G1 |  | T | 3 | BB | CA-21 |  |  |
| A6380 |  | Initial design (Export Facility Piling) | 40d | 2025-05-27 | 2025-07-24 | A6340, A6370 SS |  | 76d | 69.21d |  |  | UDF_G1 |  | T | 4 | BB | CA-21 |  | ENG |
| A6360 |  | Undertake geotechnical drilling (Export Facility Piling) | 20d | 2025-08-22 | 2025-09-19 | A6230, A7520, A7530, A8560, A8510, M1040, A4150, A10280 SS+37d, A5390 |  | 6.79d | 0d |  | Ground Security dist [160 h]; Geotechnical Drilling Rig 1 [160 h] | UDF_G3 |  | T | 6 | BB | CA-21 | PR-4 |  |
| A6390 |  | Lab analysis & Geotech report (Export Facility Piling) | 30d | 2025-09-19 | 2025-10-31 | A6360 |  | 6.79d | 0d |  |  | UDF_G1 |  | T | 7 | BB | CA-21 | PR-5 | GEO |
| A6400 |  | Piling design update by contractor (Export Facility Piling) | 40d | 2025-10-31 | 2026-01-15 | A6390, A6380 |  | 6.79d | 0d |  |  | UDF_G1 |  | T | 8 | BB | CA-21 |  |  |
| A6410 |  | Peer review (Export Facility Piling) | 10d | 2026-01-15 | 2026-01-29 | A6400 |  | 12.79d | 0d |  |  | UDF_G1 |  | T | 9 | BB | CA-21 |  |  |

| ID | WBS | Activity | Duration | Start | Finish | Predecessors | Complete | Total float | Free float | Constraint | Resources | Site Activity | Department | Level 3 WBS | Site Area | Contract Area | Process | Permit Verified By MB | Business Area |
| --- | --- | --- | --- | --- | --- | --- | --- | --- | --- | --- | --- | --- | --- | --- | --- | --- | --- | --- | --- |
|  | 6 | **Procurement** |  | 2026-01-29 | 2026-03-26 |  |  |  |  |  |  |  |  |  |  |  |  |  |  |
| A6420 |  | Update contract pricing (Phase 2 contract) (Export Facility Piling) | 15d | 2026-01-29 | 2026-02-19 | A6410 |  | 12.79d | 0d |  |  | UDF_G1 | T | 10 | BB | CA-21 |  |  |  |
| A6430 |  | Negotiate contract with Keller (Export Facility Piling) | 15d | 2026-02-19 | 2026-03-12 | A6420 |  | 12.79d | 0d |  |  | UDF_G1 | T | 11 | BB | CA-21 |  |  |  |
| A6440 |  | Legal review of contract (Export Facility Piling) | 5d | 2026-03-19 | 2026-03-26 | A6430 FS+5d |  | 12.79d | 0d |  |  | UDF_G1 | T | 12 | BB | CA-21 | PR-16 |  |  |
| A6450 |  | Conclude conform agreement (Export Facility Piling) | 5d | 2026-03-19 | 2026-03-26 | A6440 FF |  | 12.79d | 4d |  |  | UDF_G1 | T | 13 | BB | CA-21 |  |  |  |
|  | RAR | **Ranobe Access Road + Camp bulk earthworks Contract** |  | 2025-02-03 | 2026-03-19 |  |  |  |  |  |  |  |  |  |  |  |  |  |  |
|  | 2 | **Permits and Approvals** |  | 2025-02-03 | 2026-03-19 |  |  |  |  |  |  |  |  |  |  |  |  |  |  |
| A6540 |  | Social Permit (Notification of National Departments (ONE, DREDD, Mines, etc) of Mine Plan and key changes) (Ranobe Road) | 6d | 2025-02-03 A | 2025-02-10 A | A1000 | 100% |  |  | start on or after 2025-02-03 | Approvals and Permits dist [48 h] | UDF_G1 | AP | 5 | CMP | CA-22 | PR-6 | UDF_G3 |  |
| A7430 |  | Notification to Governor of the South-West Region (Ranobe Access Road) | 5d | 2025-04-28 | 2025-05-02 | A6540, M1030 |  | 56d | 0d |  | Approvals and Permits dist [40 h] | UDF_G1 | AP |  | CMP | CA-22 | PR-6 | UDF_G3 |  |
| A7470 |  | PAPs verification & compensation (Ranobe Access Road) | 30d | 2025-04-28 | 2025-06-10 | A1000, M1030 |  | 60d | 45.21d |  | Approvals and Permits dist [400 h] | UDF_G1 | AP |  | CMP | CA-22 | PR-6 | UDF_G3 |  |
| A7480 |  | Vegetation Clearance Permit (Ranobe Access Road) | 30d | 2025-04-28 | 2025-06-10 | A1000, M1030 |  | 60d | 45.21d |  | Approvals and Permits dist [400 h] | UDF_G1 | AP |  | CMP | CA-22 | PR-6 | UDF_G3 |  |
| A7440 |  | Notification of Regional Authorities (Ranobe Access Road) | 18d | 2025-05-05 | 2025-05-28 | A7430 |  | 56d | 0d |  | Approvals and Permits dist [144 h] | UDF_G1 | AP |  | CMP | CA-22 | PR-6 | UDF_G3 |  |
| A7450 |  | Notification of District & Municipal Authorities (Ranobe Access Road) | 19d | 2025-05-12 | 2025-06-06 | A7440 SS+5d, A7440 FF+5d |  | 56d | 0d |  | Approvals and Permits dist [152 h] | UDF_G1 | AP |  | CMP | CA-22 | PR-6 | UDF_G3 |  |
| A7460 |  | Notification of Local Village & Chief (Ranobe Access Road) | 5d | 2025-06-10 | 2025-06-16 | A7450 |  | 56d | 41.21d |  | Approvals and Permits dist [40 h] | UDF_G1 | AP |  | CMP | CA-22 | PR-6 | UDF_G3 |  |
| A6550 |  | Obtain letter of support from Fokotany and Ankilimanike Commune (Ranobe Road) | 10d | 2025-11-07 | 2025-11-21 | A6690 |  | 17.79d | 0d |  | Approvals and Permits dist [80 h] | UDF_G1 | AP |  | CMP | CA-22 | PR-19 |  |  |
| A6560 |  | Obtain Ankilimanike Mayor and Council approval (Ranobe Road) | 20d | 2025-11-21 | 2026-01-08 | A6550 |  | 17.79d | 0d |  | Approvals and Permits dist [160 h] | UDF_G1 | AP |  | CMP | CA-22 | PR-19 |  |  |
| A6570 |  | Obtain approval from Governor (Ranobe Road) | 15d | 2026-01-08 | 2026-01-29 | A6550, A6560 |  | 17.79d | 0d |  | Approvals and Permits dist [160 h] | UDF_G1 | AP |  | CMP | CA-22 | PR-19 |  |  |
| A6580 |  | Obtain approval from department of lands (Ranobe Road) | 15d | 2026-01-29 | 2026-02-19 | A6550, A6570 |  | 17.79d | 0d |  | Approvals and Permits dist [160 h] | UDF_G1 | AP |  | CMP | CA-22 | PR-19 |  |  |
| A6590 |  | Obtain approval from department of mines (Ranobe Road) | 15d | 2026-01-29 | 2026-02-19 | A6550, A6570 |  | 17.79d | 0d |  | Approvals and Permits dist [160 h] | UDF_G1 | AP |  | CMP | CA-22 | PR-19 |  |  |
| A6600 |  | Apply for road servitude registration (Ranobe Road) | 20d | 2026-02-19 | 2026-03-19 | A6560, A6570, A6580, A6590 |  | 17.79d |  |  | Approvals and Permits dist [240 h] | UDF_G1 | AP |  | CMP | CA-22 | PR-19 |  |  |
|  | 3 | **Environmental** |  | 2026-01-09 | 2026-02-20 |  |  |  |  |  |  |  |  |  |  |  |  |  |  |
| A6650 |  | Obtain E&S clearing permit for the Ranobe Road construction (Ranobe Access Road) | 30d | 2026-01-09 | 2026-02-20 | A1000, M1110 |  | 36.79d |  |  | Approvals and Permits dist [320 h] | UDF_G1 | AP | 6 | CMP | CA-22 | PR-19 |  | ENV |
|  | 5 | **Technical** |  | 2025-06-03 | 2025-11-07 |  |  |  |  |  |  |  |  |  |  |  |  |  |  |
| A6660 |  | Investigate route alternatives (Ranobe Access Road) | 20d | 2025-06-03 | 2025-07-02 | A8540, A1100 FS+20d |  | 45d | 30.21d |  |  | UDF_G1 | T |  | CMP | CA-22 |  |  | 20 |
| A6670 |  | Conduct geotechnical investigations and testing (Ranobe Access Road) | 10d | 2025-08-14 | 2025-08-29 | A6660, A6540, M1030, A7460, A7470, A7480, A4150, A10250 |  | 14.79d | 0d |  | Ground Security dist [160 h]; Geotechnical Test Pit Team [80 h] | UDF_G3 | T | 1 | CMP | CA-22 | PR-22 |  | GEO |
| A6680 |  | Geotech lab analysis and report (Ranobe Access Road) | 20d | 2025-08-29 | 2025-09-26 | A6670 |  | 14.79d | 0d |  | COLAS [80 h] | UDF_G1 | T | 2 | CMP | CA-22 | PR-5 |  | GEO |
| A6690 |  | Update Site access road designs to IFC (Ranobe Access Road) | 40d | 2025-09-12 | 2025-11-07 | A6680 FS-10d |  | 14.79d | 0d |  |  | UDF_G1 | T | 3 | CMP | CA-22 |  |  | ENG |

| ID | WBS | Activity | Duration | Start | Finish | Predecessors | Complete | Remaining | Planned start | Planned finish | Total float | Free float | Constraint | Resources | Site Activity | Department | Level 3 WBS | Site Area | Contract Area | Business Area | Process | Placeholder |
| --- | --- | --- | --- | --- | --- | --- | --- | --- | --- | --- | --- | --- | --- | --- | --- | --- | --- | --- | --- | --- | --- | --- |
|  | 6 | **Procurement** |  | 2025-06-25 | 2026-01-23 |  |  |  |  |  |  |  |  |  |  |  |  |  |  |  |  |  |
| A6700 |  | Re-negotiate contract with Ferris/Raubex or re-tender | 60d | 2025-06-25 | 2025-09-19 | A6850, A6860, A6840 |  |  |  |  | 69.88d | 0d | start on or after 2025-06-06 |  | UDF_G1 | T | 6 | CMP | CA-22 |  |  |  |
| A6710 |  | Finalise contract with Ferris/Raubex or ANO | 5d | 2025-09-19 | 2025-09-26 | A6700 |  |  |  |  | 126.88d | 70.08d |  |  | UDF_G1 | T | 6 | CMP | CA-22 |  |  |  |
| A10600 |  | Issue RFT for Ranobe acces road | 40d | 2025-11-07 | 2026-01-22 | A6690 |  |  |  |  | 14.79d | 0d |  |  | UDF_G1 | T |  | CMP | CA-22 |  |  |  |
| A6720 |  | Conclude conform agreement | 1d | 2026-01-22 | 2026-01-23 | A6690, A6710, A10600 |  |  |  |  | 56.79d | 48d |  |  | UDF_G1 | T | 4 | CMP | CA-22 | CAM |  |  |
|  | CDC | **Camp Design and Construction Contract** |  | 2025-01-13 | 2026-02-20 |  |  |  |  |  |  |  |  |  |  |  |  |  |  |  |  |  |
|  | 2 | **Permits and Approvals** |  | 2025-08-14 | 2025-10-10 |  |  |  |  |  |  |  |  |  |  |  |  |  |  |  |  |  |
| A6730 |  | Accommodation camp phase 1 building permits (Municipal council) | 20d | 2025-08-14 | 2025-09-12 | A1000, A6900 |  |  |  |  | 86.88d | 0d |  | Approvals and Permits dist [160 h] | UDF_G1 | AP | 6 | CMP | CA-23 | ENV | PR-19 |  |
| A6740 |  | Accommodation camp phase 1 building permits (Ministry of public works) | 20d | 2025-09-12 | 2025-10-10 | A1000, A6730 |  |  |  |  | 86.88d | 86.08d |  | Approvals and Permits dist [160 h] | UDF_G1 | AP | 6 | CMP | CA-23 | ENV | PR-19 |  |
|  | 3 | **Environmental** |  | 2026-01-09 | 2026-02-20 |  |  |  |  |  |  |  |  |  |  |  |  |  |  |  |  |  |
| A6790 |  | Obtain E&S clearing permit (Camp D&C) | 30d | 2026-01-09 | 2026-02-20 | A1000, M1110 |  |  |  |  | 36.79d |  |  | Approvals and Permits dist [320 h] | UDF_G1 | AP | 6 | CMP | CA-23 | ENV | PR-19 |  |
|  | 5 | **Technical** |  | 2025-01-13 | 2025-08-14 |  |  |  |  |  |  |  |  |  |  |  |  |  |  |  |  |  |
| A6800 |  | Engage local Telecommunications provider to construct the 40m high radio repeater tower | 30d | 2025-01-13 A | 2025-01-17 A | A1000 | 100% |  | 2025-01-20 | 2025-02-28 |  |  |  |  | UDF_G1 | T |  | CMP | CA-23 |  |  |  |
| A6810 |  | Confirm operations and construction accommodation requirements | 10d | 2025-04-03 A | 2025-05-09 | A6800, A8550 | 50% | 10d | 2025-04-03 | 2025-04-29 | 25d | 0d |  |  | UDF_G1 | ENG |  | CMP | CA-23 |  |  |  |
| A6820 |  | Obtain environmental review on proposed leech drains | 10d | 2025-05-12 | 2025-05-26 | A8930, A6810 |  |  |  |  | 24.88d | 0d |  |  | UDF_G1 | T | 1 | CMP | CA-23 |  |  | UDF_G3 |
| A6830 |  | Finalise solid waste disposal strategy with environmental dept | 10d | 2025-05-26 | 2025-06-11 | A6820 |  |  |  |  | 24.88d | 0d |  |  | UDF_G1 | T | 1 | CMP | CA-23 |  |  |  |
| A6840 |  | Finalise permanent camp layout | 5d | 2025-06-11 | 2025-06-18 | A6830 |  |  |  |  | 24.88d | 0d |  |  | UDF_G1 | T | 7 | CMP | CA-23 |  |  |  |
| A6880 |  | Finalise Waste Water & Potable Water Treatment Plants system | 15d | 2025-06-11 | 2025-07-03 | A6830 |  |  |  |  | 24.88d | 0d |  |  | UDF_G1 | T | 1 | CMP | CA-23 |  |  |  |
| A6850 |  | Complete Earth Works designs to IFT | 5d | 2025-06-18 | 2025-06-25 | A6840 |  |  |  |  | 24.88d | 0d |  |  | UDF_G1 | ENG | 1 | CMP | CA-23 |  |  |  |
| A6860 |  | Complete Underground Services designs IFT | 5d | 2025-06-18 | 2025-06-25 | A6840 |  |  |  |  | 24.88d | 0d |  |  | UDF_G1 | ENG | 1 | CMP | CA-23 |  |  |  |
| A6870 |  | Complete Security Fencing and Lighting designs | 5d | 2025-06-18 | 2025-06-25 | A6840 |  |  |  |  | 29.88d | 5d |  |  | UDF_G1 | ENG | 1 | CMP | CA-23 |  |  |  |
| A6890 |  | Complete Civils and Buildings designs | 5d | 2025-06-25 | 2025-07-03 | A6850, A6860, A6840 |  |  |  |  | 24.88d | 0d |  |  | UDF_G1 | ENG | 7 | CMP | CA-23 |  |  |  |
| A6900 |  | Complete designs for accommodation camp | 30d | 2025-07-03 | 2025-08-14 | A6880, A6830, A6840, A6890, A6870 |  |  |  |  | 24.88d | 0d |  |  | UDF_G1 | ENG | 7 | CMP | CA-23 |  |  |  |
|  | 6 | **Procurement** |  | 2025-05-12 | 2026-01-08 |  |  |  |  |  |  |  |  |  |  |  |  |  |  |  |  |  |
| A6910 |  | Prepare RFT for camp D&C contract | 10d | 2025-07-31 | 2025-08-14 | A6900 FF |  |  |  |  | 24.88d | 0d |  |  | UDF_G1 | T |  | CMP | CA-23 |  | PR-13 |  |
| A6920 |  | Issue RFTs for design,construct for camp permanent facilities and receive tender | 60d | 2025-08-14 | 2025-11-07 | A6910 |  |  |  |  | 24.88d | 0d |  |  | UDF_G1 | T |  | CMP | CA-23 |  | PR-14 |  |
| A6930 |  | Adjudicate camp D&C contract | 10d | 2025-11-07 | 2025-11-21 | A6920 |  |  |  |  | 24.88d | 0d |  |  | UDF_G1 | T |  | CMP | CA-23 |  | PR-17 |  |
| A6940 |  | Conclude conform agreement for accommodation camp D&C contract | 20d | 2025-11-21 | 2026-01-08 | A6930 |  |  |  |  | 67.88d | 59.08d |  |  | UDF_G1 | T |  | CMP | CA-23 |  |  |  |

| ID | WBS | Activity | Duration | Start | Finish | Predecessors | Total float | Free float | Resources | Site Activity | Department | Level 3 WBS | Site Area | Contract Area | Process | Business Area |
| --- | --- | --- | --- | --- | --- | --- | --- | --- | --- | --- | --- | --- | --- | --- | --- | --- |
|  | 2 | **Containerised buildings** |  | 2025-05-12 | 2025-09-25 |  |  |  |  |  |  |  |  |  |  |  |
| A6950 |  | Final agreement manning ramp up strategy for accommodation | 30d | 2025-05-12 | 2025-06-24 | A6810, A8550 | 128d | 0d |  | UDF_G1 | T | 2 | CMP | CA-23 |  |  |
| A6960 |  | Prepare RFTs for containerised buildings | 10d | 2025-06-25 | 2025-07-09 | A6950 | 128d | 0d |  | UDF_G1 | T | 2 | CMP | CA-23 |  |  |
| A6970 |  | Issue RFTs to contractors, conduct site inspections and receive tenders | 30d | 2025-07-10 | 2025-08-21 | A6960 | 128d | 0d | Ground Security dist [240 h] | UDF_G3 | T | 2 | CMP | CA-23 |  |  |
| A6980 |  | Adjudicate, clarify and select preferred contractor | 10d | 2025-08-22 | 2025-09-04 | A6970 | 128d | 0d |  | UDF_G1 | T | 2 | CMP | CA-23 | PR-17 |  |
| A6990 |  | Draft contract and letter of acceptance | 10d | 2025-09-05 | 2025-09-18 | A6980 | 128d | 0d |  | UDF_G1 | T | 2 | CMP | CA-23 |  |  |
| A7000 |  | Legal review of contract | 5d | 2025-09-19 | 2025-09-25 | A6990 | 128d | 0d |  | UDF_G1 | T | 2 | CMP | CA-23 | PR-16 |  |
| A7010 |  | Conclude conform agreement for Containerised Buildings | 1d | 2025-09-25 | 2025-09-25 | A7000 FF | 128d |  |  | UDF_G1 | T | 2 | CMP | CA-23 |  |  |
|  | 1 | **Free issue equipment** |  | 2025-08-01 | 2025-11-10 |  |  |  |  |  |  |  |  |  |  |  |
| A7020 |  | Update list and specifications of free issue equipment | 10d | 2025-08-01 | 2025-08-18 | A6900 FS-9d | 96.88d | 0d |  | UDF_G1 | T | 3 | CMP | CA-23 |  |  |
| A7030 |  | Prepare RFQs | 10d | 2025-08-18 | 2025-09-01 | A7020 | 96.88d | 0d |  | UDF_G1 | T | 3 | CMP | CA-23 |  |  |
| A7040 |  | Issue RFQs to suppliers and receive quotes | 20d | 2025-09-01 | 2025-09-29 | A7030 | 96.88d | 0d |  | UDF_G1 | T | 3 | CMP | CA-23 |  |  |
| A7050 |  | Adjudicate, clarify and select preferred supplier | 20d | 2025-09-29 | 2025-10-27 | A7040 | 96.88d | 0d |  | UDF_G1 | T | 3 | CMP | CA-23 | PR-17 |  |
| A7060 |  | Draft purchase orders | 10d | 2025-10-27 | 2025-11-10 | A7050 | 96.88d |  |  | UDF_G1 | T | 3 | CMP | CA-23 |  |  |
|  | BB | **Haul Road South Contract (Phase 2)** |  | 2025-07-24 | 2026-02-05 |  |  |  |  |  |  |  |  |  |  |  |
|  | 5 | **Technical** |  | 2025-07-24 | 2025-09-19 |  |  |  |  |  |  |  |  |  |  |  |
| A7070 |  | Road design to IFT for HRS Permanent Works (Phase 2) | 40d | 2025-07-24 | 2025-09-19 | A4180 FF+15d | 9.79d | 0d |  | UDF_G1 | ENG | 1 | BB | CA-24 |  |  |
|  | 6 | **Procurement** |  | 2025-09-19 | 2026-02-05 |  |  |  |  |  |  |  |  |  |  |  |
| A7080 |  | Zutari Prepare RFT for Phase 2 (Permanent Works) | 20d | 2025-09-19 | 2025-10-17 | A4140, A7070, A4210 SS+5d | 9.79d | 0d |  | UDF_G1 | T | 2 | BB | CA-24 | PR-13 | CIV |
| A7090 |  | Issue RFT to contractors, conduct site inspections and receive tenders | 40d | 2025-10-17 | 2025-12-12 | A7080 | 9.79d | 0d | Ground Security dist [320 h] | UDF_G3 | T | 2 | BB | CA-24 | PR-14 | CIV |
| A7100 |  | Adjudicate, clarify and select preferred contractor | 20d | 2025-12-12 | 2026-01-29 | A7090, A4230 | 17.79d | 0d |  | UDF_G1 | T | 2 | BB | CA-24 | PR-17 | PRO |
| A7110 |  | Draft contract and letter of acceptance | 10d | 2026-01-15 | 2026-01-29 | A7100 FF | 47.79d | 0d |  | UDF_G1 | T | 2 | BB | CA-24 |  | CAM |
| A7120 |  | Legal review of contract | 5d | 2026-01-29 | 2026-02-05 | A7110 | 47.79d | 0d |  | UDF_G1 | T | 2 | BB | CA-24 | PR-16 | CAM |
| A7130 |  | Phase 2 Contract Ready for Award subject to FID | 1d | 2026-02-04 | 2026-02-05 | A7120 FF | 47.79d | 39d |  | UDF_G1 | T | 2 | BB | CA-24 |  | CAM |

Notes:
- A7130: Schedule Comments: This should be linked to the CAPEX completion

| ID | WBS | Activity | Duration | Start | Finish | Predecessors | Total float | Free float | Resources | Site Activity | Department | Level 3 WBS | Site Area | Contract Area | Process | Business Area |
| --- | --- | --- | --- | --- | --- | --- | --- | --- | --- | --- | --- | --- | --- | --- | --- | --- |
|  | MO | **Marine Operations Contract** |  | 2025-04-28 | 2025-09-04 |  |  |  |  |  |  |  |  |  |  |  |
|  | 6 | **Procurement** |  | 2025-04-28 | 2025-09-04 |  |  |  |  |  |  |  |  |  |  |  |
| A7140 |  | Prepare BQRs for Marine Ops | 20d | 2025-04-28 | 2025-05-23 | A1000 | 80d | 0d |  | UDF_G1 | T | 4 | BB | CA-25 | PR-13 |  |
| A7150 |  | Issue BQRs to contractors and receive tenders for Marine Ops | 60d | 2025-05-26 | 2025-08-21 | A7140 | 80d | 0d |  | UDF_G1 | T | 4 | BB | CA-25 | PR-14 |  |
| A7160 |  | Evaluate for OPEX Marine Ops | 10d | 2025-08-22 | 2025-09-04 | A7150 | 80d | 70.21d |  | UDF_G1 | T | 4 | BB | CA-25 |  |  |
|  | CP | **Camp Operations Contract** |  | 2025-07-31 | 2025-12-05 |  |  |  |  |  |  |  |  |  |  |  |
|  | 5 | **Technical** |  | 2025-08-13 | 2025-08-14 |  |  |  |  |  |  |  |  |  |  |  |
| A7190 |  | Complete Camp to IFT Complete | 1d | 2025-08-13 | 2025-08-14 | A6900 FF, A8550 | 46.88d | 0d |  | UDF_G1 | T | 1 | CMP | CA-26 |  |  |
|  | 6 | **Procurement** |  | 2025-07-31 | 2025-12-05 |  |  |  |  |  |  |  |  |  |  |  |
| A7200 |  | Prepare RFT for fly camp and permanent camp operations | 20d | 2025-07-31 | 2025-08-29 | A7190 FF+10d | 46.88d | 0d |  | UDF_G1 | T | 1 | CMP | CA-26 | PR-13 |  |
| A7210 |  | Issue RFTs to contractors, conduct site inspections and receive tenders | 30d | 2025-08-29 | 2025-10-10 | A7200 | 46.88d | 0d | Ground Security dist [240 h] | UDF_G3 | T | 1 | CMP | CA-26 | PR-14 |  |
| A7220 |  | Adjudicate, clarify and select preferred contractor for camp operations | 20d | 2025-10-10 | 2025-11-07 | A7210 | 46.88d | 0d |  | UDF_G1 | T | 1 | CMP | CA-26 | PR-17 |  |
| A7230 |  | Prepare draft contract and letter of acceptance for camp operations | 10d | 2025-11-07 | 2025-11-21 | A7220 | 77.88d | 0d |  | UDF_G1 | T | 1 | CMP | CA-26 |  |  |
| A7240 |  | Legal review of camp opertations contract | 10d | 2025-11-21 | 2025-12-05 | A7230 | 77.88d | 0d |  | UDF_G1 | T | 1 | CMP | CA-26 | PR-16 |  |
| A7250 |  | Award fly camp and permanent camp operations contract | 1d | 2025-12-04 | 2025-12-05 | A7240 FF | 77.88d | 0d |  | UDF_G1 | T | 1 | CMP | CA-26 |  |  |
| A7260 |  | Conclude conform agreement for fly camp and permanent camp operations | 1d | 2025-12-04 | 2025-12-05 | A7250 FF, A6900 FF | 77.88d | 69.08d |  | UDF_G1 | T | 1 | CMP | CA-26 |  |  |
|  | TL | **Transport & Logistics Contract** |  | 2025-04-28 | 2025-11-13 |  |  |  |  |  |  |  |  |  |  |  |
|  | 5 | **Technical** |  | 2025-04-28 | 2025-07-09 |  |  |  |  |  |  |  |  |  |  |  |
| A7270 |  | Review of T&L option study report by Base (draft logistics plan is in place) | 20d | 2025-04-28 | 2025-05-23 | A1000 FS+5d, A8510, A8550 | 40d | 0d |  | UDF_G1 | PD | 1 | HRN | CA-27 |  | LOG |
| A7280 |  | Complete logistics plan - No if containers, out of gauge equipment and delivery schedules | 30d | 2025-05-26 | 2025-07-09 | A7270 | 40d | 0d |  | UDF_G1 | PD | 2 | HRN | CA-27 |  | LOG |
|  | 6 | **Procurement** |  | 2025-07-10 | 2025-11-13 |  |  |  |  |  |  |  |  |  |  |  |
| A7290 |  | Compile tender documents for the T&L contract | 10d | 2025-07-10 | 2025-07-23 | A7280 | 40d | 0d |  | UDF_G1 | PD | 3 | HRN | CA-27 | PR-13 | LOG |
| A7300 |  | Issue and evaluate for the T&L tender | 60d | 2025-07-24 | 2025-10-16 | A7290 | 40d | 0d |  | UDF_G1 | PD | 4 | HRN | CA-27 | PR-14 | LOG |
| A7310 |  | Negotiate and select Logistics Company | 10d | 2025-10-17 | 2025-10-30 | A7300 | 40d | 0d |  | UDF_G1 | PD | 5 | HRN | CA-27 |  | LOG |
| A7320 |  | Legal Review for the T&L contract | 10d | 2025-10-31 | 2025-11-13 | A7310 | 93d | 0d |  | UDF_G1 | PD | 6 | HRN | CA-27 |  | LOG |
| A7330 |  | Conclude conform agreement for Transport and Logistics Contract | 1d | 2025-11-13 | 2025-11-13 | A7320 FF | 93d | 84.21d |  | UDF_G1 | PD | 7 | HRN | CA-27 |  | LOG |

| ID | WBS | Activity | Duration | Start | Finish | Predecessors | Complete | Remaining | Planned start | Planned finish | Total float | Constraint | Resources | Site Activity | Department | Business Area | Site Area | Process | Level 3 WBS |
| --- | --- | --- | --- | --- | --- | --- | --- | --- | --- | --- | --- | --- | --- | --- | --- | --- | --- | --- | --- |
|  | 5 | **Enabling Activities** |  | 2024-12-09 | 2026-04-15 |  |  |  |  |  |  |  |  |  |  |  |  |  |  |
|  | 1 | **Land Acquisition** |  | 2025-01-28 | 2026-04-15 |  |  |  |  |  |  |  |  |  |  |  |  |  |  |
|  | 2 | **MOIS Establishment** |  | 2025-03-17 | 2025-05-09 |  |  |  |  |  |  |  |  |  |  |  |  |  |  |
| A10310 |  | Establish MOIS structure | 15d | 2025-03-17 A | 2025-04-07 A | A1000 | 100% |  |  |  |  |  |  | UDF_G1 | LA | LND | OS | PR-21 |  |
| A10320 |  | Approval of the MOIS structure by MDAT | 10d | 2025-04-28 | 2025-05-09 | A10310 |  |  |  |  | 0d |  |  | UDF_G1 | LA | LND | OS | PR-21 |  |
|  | 1 | **DUP** |  | 2025-04-03 | 2026-04-15 |  |  |  |  |  |  |  |  |  |  |  |  |  |  |
| A10330 |  | Define the new DUP area (Done by BASE) | 10d | 2025-04-03 A | 2025-05-01 | A1000 | 60% | 4d | 2025-04-03 | 2025-04-29 | 6d | start on or after 2025-03-24 |  | UDF_G1 | LA | LND | OS | PR-21 |  |
| A10335 |  | Submit the Resettlement Policy Framework (RPF) to MDAT (TBC by CF) | 10d | 2025-04-14 A | 2025-05-07 | A10330 | 20% | 8d | 2025-05-02 | 2025-05-15 | 144d |  |  | UDF_G1 | LA | LND | OS | PR-21 |  |
| A10340 |  | Apply for the issuance of the DUP order from Ministry of mines (Commodo / In commodo) | 2d | 2025-05-12 | 2025-05-13 | A10330, A10320 |  |  |  |  | 0d |  |  | UDF_G1 | LA | LND | OS | PR-21 |  |
| A10343 |  | Issuance of Commodo/In Commodo by Minister of Mines | 5d | 2025-05-14 | 2025-05-20 | A10340 |  |  |  |  | 0d |  |  | UDF_G1 | LA | LND | OS | PR-21 |  |
| A10345 |  | Statutory Notification period of the Commodo / In commodo with PAPs | 20d | 2025-05-21 | 2025-06-19 | A10343 |  |  |  |  | 0d |  |  | UDF_G1 | LA | LND | OS | PR-21 |  |
| A10346 |  | Review and Validate of Commodo/ In Commodo list of land owners by MOIS and local authorities | 20d | 2025-06-20 | 2025-07-18 | A10345 |  |  |  |  | 0d |  |  | UDF_G1 | LA | LND | OS | PR-21 |  |
| A10350 |  | Conduct socio-economic baseline studies and topographic survey (parcel plan) | 60d | 2025-07-21 | 2025-10-13 | A10346, M1030, M1040 |  |  |  |  | 0d |  |  | UDF_G3 | LA | LND | OS | PR-21 |  |
| A10360 |  | Validate and Publish Parcel Plan | 5d | 2025-10-14 | 2025-10-20 | A10350 |  |  |  |  | 0d |  |  | UDF_G1 | LA | LND | OS | PR-21 |  |
| A10370 |  | Statutory notification period of the parcel plan | 20d | 2025-10-21 | 2025-11-17 | A10360 |  |  |  |  | 0d |  |  | UDF_G1 | LA | LND | OS | PR-21 |  |
| A10375 |  | Parcel plan grievance review and resolution | 10d | 2025-11-18 | 2025-12-01 | A10370 |  |  |  |  | 0d |  |  | UDF_G1 | LA | LND | OS | PR-21 |  |
| A10380 |  | Application for the Arete de Cessibilite | 5d | 2025-12-02 | 2025-12-08 | A10375, A10335 |  |  |  |  | 0d |  |  | UDF_G1 | LA | LND | OS | PR-21 |  |
| A3890 |  | Issue act of transferability (Arete de Cessibilite), confirms land parcels affected for signatory by Minister of lands | 10d | 2025-12-09 | 2026-01-09 | A10380 |  |  |  |  | 0d |  | Land Acquisition dist [80 h] | UDF_G1 | LA | LND | OS | PR-21 | 2 |
| A3910 |  | Establish CAE and training | 5d | 2026-01-12 | 2026-01-16 | A3890 |  |  |  |  | 0d | start on or after 2025-04-01 | Land Acquisition dist [40 h] | UDF_G1 | LA | LND | OS | PR-21 | 4 |
| A3920 |  | CAE field visits to confirm eligibility of each land owner and assets | 30d | 2026-01-19 | 2026-02-27 | A3910 |  |  |  |  | 0d | start on or after 2025-05-01 | Land Acquisition dist [240 h] | UDF_G3 | LA | LND | OS | PR-21 | 4 |
| A3950 |  | CAE negotiates and establish compensation rates with land owners associations | 10d | 2026-01-19 | 2026-01-30 | A3910 |  |  |  |  | 20d | start on or after 2025-07-01 | Land Acquisition dist [160 h] | UDF_G1 | LA | LND | OS | PR-21 | 5 |
| A3960 |  | Base pay compensation amount to GoM if required (no private agreement reached) | 20d | 2026-03-02 | 2026-03-27 | A3920, A3950 |  |  |  |  | 0d | start on or after 2025-09-03 | Land Acquisition dist [160 h] | UDF_G1 | LA | LND | OS | PR-21 | 6 |
| A3970 |  | Expropriation order | 10d | 2026-03-30 | 2026-04-14 | A3960 |  |  |  |  | 0d |  | Land Acquisition dist [160 h] | UDF_G1 | LA | LND | OS | PR-21 | 7 |
| A3980 |  | Government compensates the land owners in accordance with agreed methodology by CAE | 1d | 2026-04-15 | 2026-04-15 | A3970 |  |  |  |  | 0d | start on or after 2025-11-01 | Land Acquisition dist [440 h] | UDF_G1 | LA | LND | OS | PR-21 | 8 |

| ID | WBS | Activity | Duration | Start | Finish | Predecessors | Complete | Remaining | Planned start | Planned finish | Total float | Free float | Constraint | Calendar | Resources | Site Activity | Department | Level 3 WBS | Business Area | Site Area | Process | Contract Area | ESMS Responsibility | Schedule Comments |
| --- | --- | --- | --- | --- | --- | --- | --- | --- | --- | --- | --- | --- | --- | --- | --- | --- | --- | --- | --- | --- | --- | --- | --- | --- |
|  | 6 | **Private Treaty Agreement (Non Early works areas)** |  | 2025-01-28 | 2026-02-20 |  |  |  |  |  |  |  |  |  |  |  |  |  |  |  |  |  |  |  |
| A9920 |  | Select suitable consultant to prepare Resettlement Action Plan | 6d | 2025-01-28 A | 2025-02-05 A | A1000 | 100% |  |  |  |  |  |  |  |  | UDF_G1 | LA | 2 | LND | OS | PR-21 |  |  |  |
| A9910 |  | Re-establish resettlement working groups (RWGs) committee (PTA) | 5d | 2025-04-03 A | 2025-04-10 A | A1000 | 100% |  |  |  |  |  | start on or after 2025-04-03 |  | Land Acquisition dist [128 h] | UDF_G1 | LA | 1 | LND | OS | PR-21 |  |  |  |
| A9945 |  | Consultation on private treaty agreements (PTA) | 40d | 2025-04-28 | 2025-06-24 | A9910 |  |  |  |  | 113d | 0d |  |  | Land Acquisition dist [152 h] | UDF_G1 | LA | 6 | LND | OS | PR-21 |  |  |  |
| A9950 |  | Negotiate compensation rates and agreed amounts for assets involved (PTA) | 20d | 2025-06-25 | 2025-07-23 | A9910, A9945 |  |  |  |  | 113d | 0d |  |  | Land Acquisition dist [168 h] | UDF_G1 | LA | 5 | LND | OS | PR-21 |  |  |  |
| A9970 |  | Sign off of Resettlement action Plan (PTA) | 20d | 2025-07-24 | 2025-08-21 | A9920, A9910 FF, A9950 |  |  |  |  | 113d | 77d |  |  | Land Acquisition dist [160 h] | UDF_G1 | LA | 7 | LND | OS | PR-21 |  |  |  |
| A9980 |  | Commence compensation payments to land owners on completion of PTA | 40d | 2025-12-09 | 2026-02-20 | A9970, A10380 |  |  |  |  | 36d |  |  |  | Land Acquisition dist [320 h] | UDF_G1 | LA | 8 | LND | OS | PR-21 |  |  |  |
|  | 3 | **Private Treaty Agreement (Early works areas)** |  | 2025-04-28 | 2025-10-16 |  |  |  |  |  |  |  |  |  |  |  |  |  |  |  |  |  |  |  |
| A10405 |  | Consultation on private treaty agreements (PTA) | 40d | 2025-04-28 | 2025-06-24 | A9910 |  |  |  |  | 57d | 0d |  |  | Land Acquisition dist [152 h] | UDF_G1 | LA | 6 | LND | OS | PR-20 |  |  |  |
| A10410 |  | Negotiate compensation rates and agreed amounts for assets involved (PTA) | 20d | 2025-06-25 | 2025-07-23 | A10405 |  |  |  |  | 57d | 0d |  |  | Land Acquisition dist [168 h] | UDF_G1 | LA | 5 | LND | OS | PR-20 |  |  |  |
| A10430 |  | Sign off of Resettlement action Plan (PTA) | 20d | 2025-07-24 | 2025-08-21 | A10410 |  |  |  |  | 57d | 0d |  |  | Land Acquisition dist [160 h] | UDF_G1 | LA | 7 | LND | OS | PR-20 |  |  |  |
| A10440 |  | Commence compensation payments to land owners on completion of PTA | 40d | 2025-08-22 | 2025-10-16 | A10430 |  |  |  |  | 57d | 41.21d |  |  | Land Acquisition dist [320 h] | UDF_G1 | LA | 8 | LND | OS | PR-20 |  |  |  |
|  | 2 | **Environmental and Social Management System (ESMS)** |  | 2025-01-15 | 2026-04-10 |  |  |  |  |  |  |  |  |  |  |  |  |  |  |  |  |  |  |  |
|  | 1 | **PGE Update** |  | 2025-01-15 | 2026-04-10 |  |  |  |  |  |  |  |  |  |  |  |  |  |  |  |  |  |  |  |
| A7850 |  | Train Internal staff on Disclosure messaging | 20d | 2025-01-15 A | 2025-01-24 A | A1000 | 100% |  | 2025-01-20 | 2025-02-14 |  |  |  |  | External Affairs dist [160 h] | UDF_G1 | ESMS | 2 | ENV | OS |  | CA-01 | SOC |  |
| A7830 |  | Engage Office National pour l'Environnement (O.N.E) | 65d | 2025-01-28 A | 2025-06-19 | A1000 | 40% | 36.12d | 2025-01-28 | 2025-05-09 | 39.88d | 0d |  |  | External Affairs dist [160 h] | UDF_G1 | ESMS | 2 | ENV | OS |  | CA-01 | SOC |  |
| A7880 |  | Mobilise specialist consultants | 60d | 2025-02-04 A | 2025-06-19 | A1000 | 40% | 36.12d | 2025-02-04 | 2025-05-09 | 39.88d | 39.08d |  |  |  | UDF_G1 | ESMS | 2 | ENV | OS |  | CA-01 | ENV |  |
| A7910 |  | Develop Stakeholder disclosure supplementary report | 40d | 2025-07-03 | 2025-08-29 | M1330 FF+20d |  |  |  |  | 15.79d | 15d |  |  | External Affairs dist [160 h] | UDF_G1 | ESMS | 2 | ENV | OS |  | CA-01 | SOC |  |
| A7930 |  | Develop Baseline studies supplementary report | 40d | 2025-07-24 | 2025-09-19 | M1340 FF+25d, A2240 FF |  |  |  |  | 0.79d | 0d |  |  |  | UDF_G1 | ESMS | 2 | ENV | OS |  | CA-01 | ENV |  |
| A7940 |  | Prepare Environmental and Social Impact Assessment (ESIA) technical summary + EMP | 50d | 2025-09-19 | 2025-11-28 | A7930, A7910, A7830, A1000 |  |  |  |  | 0.79d | 0d |  |  |  | UDF_G1 | ESMS | 2 | ENV | OS |  | CA-01 | SOC |  |
| A7950 |  | Submit ESIA technical summary + EMP to O.N.E | 1d | 2025-11-28 | 2025-12-01 | A7940 |  |  |  |  | 0.79d | 0d |  |  |  | UDF_G1 | ESMS | 2 | ENV | OS |  | CA-01 | SOC |  |
| A7960 |  | O.N.E Evaluation of ESIA | 40d | 2025-11-28 | 2026-01-23 | A7950 SS |  |  |  |  | 0.79d | 0d |  | B11-Standard 5 day workweek - No Shutdown |  | UDF_G1 | ESMS | 2 | ENV | OS |  | CA-01 | SOC |  |
| A7970 |  | Receive O.N.E recommendations | 1d | 2026-01-22 | 2026-01-23 | A7960 FF |  |  |  |  | 0.79d | 0d |  |  |  | UDF_G1 | ESMS | 2 | ENV | OS |  | CA-01 | SOC |  |
| A7980 |  | Prepare draft PGE from the EMP recommendations | 30d | 2026-01-23 | 2026-03-06 | A7970 |  |  |  |  | 0.79d | 0d |  |  |  | UDF_G1 | ESMS | 2 | ENV | OS |  | CA-01 | SOC |  |
| A7990 |  | Submit draft PGE to O.N.E | 1d | 2026-03-06 | 2026-03-09 | A7980 |  |  |  |  | 0.79d | 0d |  |  |  | UDF_G1 | ESMS | 2 | ENV | OS |  | CA-01 | SOC |  |
| A8020 |  | PGE prepared by O.N.E | 20d | 2026-03-09 | 2026-04-08 | M1250 |  |  |  |  | 5.79d | 2d |  |  |  | UDF_G1 | ESMS | 2 | ENV | OS |  | CA-01 | SOC |  |
| A8000 |  | PGE translation to Malagasy and local dialect | 20d | 2026-03-10 | 2026-04-09 | A7980 FS+2d |  |  |  |  | 3.79d | 0d |  |  |  | UDF_G1 | ESMS | 2 |  | OS |  | CA-01 | SOC |  |
| A8010 |  | Popularization at CTD level | 1d | 2026-04-09 | 2026-04-10 | A8000 |  |  |  |  | 3.79d |  |  |  |  | UDF_G1 | ESMS | 2 |  | OS |  | CA-01 | SOC | CTD meaning? GJ |
| A8030 |  | PGE issued by O.N.E | 1d | 2026-04-09 | 2026-04-10 | A8020 FF, A8000 |  |  |  |  | 3.79d |  |  |  |  | UDF_G1 | ESMS | 2 | ENV | OS |  | CA-01 | SOC |  |

| ID | WBS | Activity | Duration | Start | Finish | Predecessors | Total float | Free float | Constraint | Calendar | Resources | Site Activity | Department | Site Area | Contract Area | ESMS Responsibility | Process | Business Area | Level 3 WBS | Schedule Comments |
| --- | --- | --- | --- | --- | --- | --- | --- | --- | --- | --- | --- | --- | --- | --- | --- | --- | --- | --- | --- | --- |
|  | 1 | **Stakeholder Disclosures** |  | 2025-04-22 | 2025-07-31 |  |  |  |  |  |  |  |  |  |  |  |  |  |  |  |
| A10290 |  | Mobilise Environmental Consultants (North) | 9d | 2025-04-22 | 2025-05-05 | M1030 | 0.79d | 0d |  | B11-Standard 5 day workweek - No Shutdown | Baseline Study dist [72 h] | UDF_G3 | ESMS | MS | CA-01 | ENV |  |  |  |  |
| A10300 |  | Mobilise Environment Team (South) | 9d | 2025-04-22 | 2025-05-05 | M1040 | 0.79d | 0d |  | B11-Standard 5 day workweek - No Shutdown | Baseline Study dist [72 h] | UDF_G3 | ESMS | BB | CA-01 | ENV |  |  |  |  |
| A10210 |  | Perform Stakeholder Disclosure (Whole project areas except BB) | 60d | 2025-05-05 | 2025-07-31 | M1030, A10290 | 0.79d | 0d |  |  | Baseline Study dist [400 h] | UDF_G3 | ESMS | MS | CA-01 | ENV | PR-1 |  |  |  |
| A10240 |  | Perform Stakeholder Disclosure (Batterie Beach and Marine) | 60d | 2025-05-05 | 2025-07-31 | M1040, A10300 | 0.79d | 0d |  |  | Baseline Study dist [400 h] | UDF_G3 | ESMS | BB | CA-01 | ENV | PR-1 |  |  |  |
|  | 2 | **Baseline Studies** |  | 2025-05-19 | 2025-08-14 |  |  |  |  |  |  |  |  |  |  |  |  |  |  |  |
| A10250 |  | Perform Preliminary Specialist Studies (Whole project areas except BB) | 60d | 2025-05-19 | 2025-08-14 | A10210 SS+10d | 0.79d | 0d |  |  | Baseline Study dist [480 h] | UDF_G3 | ESMS | MS | CA-01 | ENV | PR-2 |  |  |  |
| A10280 |  | Perform Preliminary Specialist Studies (Batterie Beach and Marine) | 60d | 2025-05-19 | 2025-08-14 | A10240 SS+10d | 0.79d | 0d |  |  | Baseline Study dist [480 h] | UDF_G3 | ESMS | BB | CA-01 | ENV | PR-2 |  |  |  |
|  | 3 | **Hydrocencus** |  | 2025-07-25 | 2025-12-12 |  |  |  |  |  |  |  |  |  |  |  |  |  |  |  |
| A2240 |  | Update Hydrocencus and water resource baseline | 30d | 2025-07-25 | 2025-09-08 | A2130 FF-9d | 10d | 9.21d |  |  | Baseline Study dist | UDF_G1 | ESMS | MS | CA-01 | ENV | PR-2 | ENV |  |  |
| A1580 |  | Prepare Hydrogeology report | 20d | 2025-11-14 | 2025-12-12 | A1540, A1710, A1760, A1810, A1860, A1920, A10470, A2240 | 51.79d | 10d |  |  |  | UDF_G1 | ESMS | MS | CA-01 | ENV |  | ENV |  |  |
|  | 2 | **PGES Process** |  | 2025-04-28 | 2026-03-26 |  |  |  |  |  |  |  |  |  |  |  |  |  |  |  |
| A8050 |  | O.N.E & C.T.E engagement on PGES format (ToC) and requirement | 20d | 2025-06-19 | 2025-07-18 | A7830 | 39.88d | 0d |  |  | External Affairs dist [320 h] | UDF_G1 | ESMS | OS | CA-01 | SOC |  | ENV | 3 |  |
| A8060 |  | Prepare annotated Table of Contents | 20d | 2025-06-19 | 2025-07-18 | A8050 FF | 39.88d | 0d |  |  |  | UDF_G1 | ESMS | OS | CA-01 | SOC |  | ENV | 3 |  |
| A8070 |  | O.N.E & C.T.E approve PGES ToC and requirements | 1d | 2025-07-17 | 2025-07-18 | A8060 FF | 39.88d | 8.88d |  |  |  | UDF_G1 | ESMS | OS | CA-01 | SOC |  | ENV | 3 |  |
|  | 1 | **Access Roads and Camp** |  | 2025-08-14 | 2026-01-09 |  |  |  |  |  |  |  |  |  |  |  |  |  |  |  |
| A6630 |  | Prepare access roads and accomodation camp PGES | 30d | 2025-08-14 | 2025-09-26 | A8070, A10250, A4180 FF+5d | 20.79d | 0d |  |  | PGES Preparation dist [160 h] | UDF_G1 | ESMS | CMP | CA-22 | ENV | PR-10 | ENV | 6 | In which PGES does the Ranobe road fall into? GJ? |
| A7370 |  | Submit Ranobe road and accomodation camp PGES to O.N.E | 1d | 2025-09-26 | 2025-09-29 | A6630 | 20.79d | 0d |  |  |  | UDF_G1 | ESMS | CMP | CA-22 | SOC | PR-11 | ENV |  |  |
| A6640 |  | O.N.E review access road and camp PGES | 60d | 2025-09-29 | 2026-01-09 | A7370 | 20.79d | 0d |  |  |  | UDF_G1 | ESMS | CMP | CA-22 | SOC | PR-12 | ENV | 6 |  |
|  | 2 | **Haul Road and Bridge** |  | 2025-11-06 | 2026-03-26 |  |  |  |  |  |  |  |  |  |  |  |  |  |  |  |
| A4480 |  | Engage DGF, DREDD and Protected area manager | 20d | 2025-11-06 | 2025-12-04 | M1120 FF+10d, A10210, A10250 | 3.79d | 1d | start on or after 2025-08-25 |  | External Affairs dist [160 h] | UDF_G1 | ESMS | HRN | CA-15 | SOC |  | ENV | 4 |  |
| A4490 |  | Prepare complete Haul Road PGES | 20d | 2025-12-05 | 2026-01-22 | A8070, A4480, A4710, A1000 FF, M1120, A7070, A5420 FF+5d | 2.79d | 0d |  |  | PGES Preparation dist [160 h] | UDF_G1 | ESMS | HRN | CA-15 | ENV | PR-10 | ENV | 4 |  |
| A4500 |  | Submit complete Haul Road PGES to O.N.E | 1d | 2026-01-22 | 2026-01-23 | A4490, M1120 | 2.79d | 0d |  |  |  | UDF_G1 | ESMS | HRN | CA-15 | SOC | PR-11 | ENV | 4 |  |
| A4510 |  | O.N.E review complete ahul road PGES | 45d | 2026-01-22 | 2026-03-26 | A4500 SS | 2.79d | 0d |  |  |  | UDF_G1 | ESMS | HRN | CA-15 | SOC | PR-12 | ENV | 4 |  |

Notes:
- A4510: Schedule Comments: We've reduced this activity to 40days so it does not affect the critical / path. This should in reality be 60days

| ID | WBS | Activity | Duration | Start | Finish | Predecessors | Total float | Free float | Constraint | Resources | Site Activity | Department | Level 3 WBS | Business Area | Site Area | Contract Area | Process | ESMS Responsibility | Schedule Comments |
| --- | --- | --- | --- | --- | --- | --- | --- | --- | --- | --- | --- | --- | --- | --- | --- | --- | --- | --- | --- |
|  | 5 | **Mine Site** |  | 2025-11-18 | 2026-03-17 |  |  |  |  |  |  |  |  |  |  |  |  |  |  |
| A5730 |  | Prepare mine site PGES | 30d | 2025-11-18 | 2026-01-19 | A8070, A6120 FF+1d, A10250 | 9.79d | 0d |  | PGES Preparation dist [160 h] | UDF_G1 | ESMS | 7 | ENV | MS | CA-20 | PR-10 | ENV |  |
| A7360 |  | Submit Mine site PGES to O.N.E | 1d | 2026-01-19 | 2026-01-20 | A5730 | 9.79d | 0d |  |  | UDF_G1 | ESMS |  | ENV | MS | CA-20 | PR-11 | SOC |  |
| A5740 |  | O.N.E review Mine site PGES | 40d | 2026-01-20 | 2026-03-17 | A5730, A7360 | 9.79d | 0d |  |  | UDF_G1 | ESMS | 7 | ENV | MS | CA-20 | PR-12 | SOC |  |
|  | 3 | **Export Facility** |  | 2025-11-06 | 2026-03-18 |  |  |  |  |  |  |  |  |  |  |  |  |  |  |
| A4980 |  | Prepare Marine and Export Facility PGES | 40d | 2025-11-06 | 2026-01-21 | A4960, A4970, A8070, A5140 FF+4d, A10280, A6380 | 9.79d | 0d |  | PGES Preparation dist [320 h] | UDF_G1 | ESMS | 8 | ENV | BB | CA-17 | PR-10 | ENV |  |
| A4990 |  | Submit Marine and Export Facility PGES to O.N.E | 1d | 2026-01-21 | 2026-01-22 | A4980 | 9.79d | 0d |  |  | UDF_G1 | ESMS | 8 | ENV | BB | CA-17 | PR-11 | SOC |  |
| A5000 |  | O.N.E review Marine and Export Facility PGES | 40d | 2026-01-21 | 2026-03-18 | A4990 SS | 9.79d | 0d |  |  | UDF_G1 | ESMS | 8 | ENV | BB | CA-17 | PR-12 | SOC | Ditto |
|  | 4 | **Quarries and Borrow Pits** |  | 2025-04-28 | 2026-01-28 |  |  |  |  |  |  |  |  |  |  |  |  |  |  |
|  | 1 | **Chinese quarry in Ranobe / PK32 protected area** |  | 2025-04-28 | 2026-01-28 |  |  |  |  |  |  |  |  |  |  |  |  |  |  |
| A2820 |  | Engage DGF, DREDD and Protected area manager (Chinese Quarry) | 20d | 2025-04-28 | 2025-05-23 | M1030 | 22d | 0d |  | External Affairs dist [160 h] | UDF_G1 | ESMS |  | ENV | HRN | CA-12 |  | SOC |  |
| A2830 |  | Engage O.N.E, NGOs, CSOs and IFC (Chinese Quarry) | 60d | 2025-05-26 | 2025-08-21 | A2820 | 22d | 0d |  | External Affairs dist [480 h] | UDF_G1 | ESMS |  | ENV | HRN | CA-12 |  | SOC |  |
| A2850 |  | Prepare Environment strategy for use and restoration (Chinese Quarry) | 20d | 2025-08-22 | 2025-09-18 | A10250, A2830 | 22d | 0d |  |  | UDF_G1 | ESMS |  | ENV | HRN | CA-12 |  | SOC |  |
| A2880 |  | Agreement from all parties on use and restoration (Chinese Quarry) | 40d | 2025-09-19 | 2025-11-13 | A2850 | 22d | 0d |  |  | UDF_G1 | ESMS |  | ENV | HRN | CA-12 |  | SOC |  |
| A2860 |  | Update quarry construction PGES for PE37242 (Chinese Quarry) | 20d | 2025-11-14 | 2025-12-11 | A2850, A8070, A2650, A2880 | 22d | 0d |  |  | UDF_G1 | ESMS |  | ENV | HRN | CA-12 |  | SOC |  |
| A2870 |  | Obtain E&S site disturbance permit (Chinese Quarry) | 10d | 2025-12-12 | 2026-01-14 | A2860 | 22d | 0d |  |  | UDF_G1 | ESMS |  | ENV | HRN | CA-12 | PR-19 | SOC |  |
| A2890 |  | Obtain vegetation clearing permit (Chinese Quarry) | 10d | 2025-12-12 | 2026-01-14 | A2860 | 32d | 10d |  | Approvals and Permits dist [160 h] | UDF_G1 | AP |  | ENV | HRN | CA-12 | PR-19 |  |  |
| A2900 |  | Obtain quarry operations permit (Chinese Quarry) | 10d | 2026-01-15 | 2026-01-28 | A2860, A2890 FF, A2870, A2880 FF | 22d | 15.21d |  | Approvals and Permits dist [80 h] | UDF_G1 | AP |  | ENV | HRN | CA-12 | PR-19 |  |  |
|  | 6 | **Quarries within the mine lease PE37242** |  | 2025-07-31 | 2025-10-10 |  |  |  |  |  |  |  |  |  |  |  |  |  |  |
| A2620 |  | Confirm potential locations (Quarries & Borrow Pits within mine lease) | 10d | 2025-07-31 | 2025-08-14 | A1000, M1030 | 65.79d | 0d | as late as possible | Ground Security dist [80 h] | UDF_G3 | ESMS |  | ENV | MS | CA-12 |  | ENV | Add Exploitation Permit in summary description |
| A2640 |  | Prepare quarry construction and operation PGES | 20d | 2025-08-14 | 2025-09-12 | A2620, A8070, A10250 | 65.79d | 0d |  | PGES Preparation dist [160 h] | UDF_G1 | ESMS |  | ENV | MS | CA-12 |  | ENV | Link all quarry PGES activities |
| A2650 |  | Submit PGES to O.N.E | 1d | 2025-09-12 | 2025-09-15 | A2640 | 65.79d | 9d |  |  | UDF_G1 | ESMS |  | ENV | MS | CA-12 |  | SOC |  |
| A2660 |  | Obtain E&S site disturbance permit (Quarries & Borrow Pits within mine lease) | 20d | 2025-09-12 | 2025-10-10 | A2640 | 86.79d | 0d |  |  | UDF_G1 | ESMS |  | ENV | MS | CA-12 | PR-19 | SOC |  |
| A2670 |  | Obtain vegetation clearing permit from DREDD (Quarries & Borrow Pits within mine lease) | 20d | 2025-09-12 | 2025-10-10 | A2640 | 86.79d | 0d |  | Approvals and Permits dist [160 h] | UDF_G1 | AP |  | ENV | MS | CA-12 | PR-19 |  |  |
| A2680 |  | Obtain operations permit (Quarries & Borrow Pits within mine lease) | 10d | 2025-09-26 | 2025-10-10 | A1000 FF, A2650, A2670 FF, A2660 FF | 86.79d | 86d |  | Approvals and Permits dist [80 h] | UDF_G1 | AP |  | ENV | MS | CA-12 | PR-19 |  |  |

| ID | WBS | Activity | Duration | Start | Finish | Predecessors | Remaining | Planned start | Planned finish | Total float | Free float | Constraint | Site Activity | Department | Business Area | Site Area | Contract Area | Level 3 WBS | Process |
| --- | --- | --- | --- | --- | --- | --- | --- | --- | --- | --- | --- | --- | --- | --- | --- | --- | --- | --- | --- |
|  | 3 | **Government & Legal, Funding and Marketing** |  | 2025-02-11 | 2026-03-30 |  |  |  |  |  |  |  |  |  |  |  |  |  |  |
|  | 1 | **Project Certification** |  | 2025-02-11 | 2025-10-09 |  |  |  |  |  |  |  |  |  |  |  |  |  |  |
|  | 1 | **LGIM** |  | 2025-02-11 | 2025-10-09 |  |  |  |  |  |  |  |  |  |  |  |  |  |  |
| A8300 |  | LGIM amendment | 75d | 2025-02-11 A | 2025-06-06 | M1000 | 29d |  |  | 48d | 0d |  | UDF_G1 | L | GOV | OS | CA-02 |  |  |
| A8120 |  | Investment Agreement ("IA") negotiated and signed | 60d | 2025-04-28 | 2025-07-23 | A1000 |  |  |  | 88d | 40d | start on or after 2025-03-16 | UDF_G1 | L | GOV | OS | CA-02 | 6 |  |
| A8100 |  | CGIM formed by Government | 5d | 2025-06-10 | 2025-06-16 | A1000, A8300 |  |  |  | 114d | 66d | start on or after 2025-02-01 | UDF_G1 | L | GOV | OS | CA-02 | 3 |  |
| A8110 |  | LGIM Application Submitted | 1d | 2025-06-10 | 2025-06-10 | A1000, A8300 |  |  |  | 48d | 0d |  | UDF_G1 | L | GOV | OS | CA-02 | 4 |  |
| A8180 |  | CGIM considers the LGIM application | 50d | 2025-06-11 | 2025-08-21 | A8110 |  |  |  | 48d | 0d |  | UDF_G1 | L | GOV | OS | CA-02 | 5 |  |
| A8200 |  | CGIM to submit its favorable opinion and the draft LGIM certification decree to the Minister of Mines | 1d | 2025-08-22 | 2025-08-22 | A8180, A8300 |  |  |  | 48d | 0d |  | UDF_G1 | L | GOV | OS | CA-02 | 13 |  |
| A8210 |  | CoG to approve the LGIM certification decree | 10d | 2025-08-22 | 2025-09-04 | A8200 SS, A8180 |  |  |  | 48d | 0d |  | UDF_G1 | L | GOV | OS | CA-02 | 14 |  |
| A8220 |  | Notification of the LGIM certification decree to Base Toliara | 5d | 2025-09-05 | 2025-09-11 | A8210 |  |  |  | 48d | 0d |  | UDF_G1 | L | GOV | OS | CA-02 | 15 |  |
| A8230 |  | Base Toliara to sign the commitment letter under Article 17 of the LGIM and submit it to the Minister of Mines | 5d | 2025-09-12 | 2025-09-18 | A8220 |  |  |  | 48d | 0d |  | UDF_G1 | L | GOV | OS | CA-02 | 16 |  |
| A8240 |  | Publication of the LGIM certification decree | 15d | 2025-09-19 | 2025-10-09 | A8230, A8120, A8100 |  |  |  | 48d | 0d |  | UDF_G1 | L | GOV | OS | CA-02 | 17 |  |
|  | 2 | **Monozite Licence Addition** |  |  |  |  |  |  |  |  |  |  |  |  |  |  |  |  |  |
|  | 2 | **Debt Funding** |  | 2025-03-31 | 2026-03-30 |  |  |  |  |  |  |  |  |  |  |  |  |  |  |
| A8250 |  | Develop funding strategy | 20d | 2025-03-31 A | 2025-05-07 | A1000 | 8d | 2025-03-31 | 2025-05-08 | 25d | 0d |  | UDF_G1 | F |  | OS |  |  | PR-9 |
| A8260 |  | Mandate lenders on debt funding | 30d | 2025-05-08 | 2025-06-20 | M1000 SS, A8250, A8490 FS-20d |  |  |  | 25d | 0d |  | UDF_G1 | F |  | OS |  | 1 | PR-9 |
| A8270 |  | Appoint lenders legal counsel | 20d | 2025-06-23 | 2025-07-21 | A8260 |  |  |  | 39d | 0d |  | UDF_G1 | F |  | OS |  | 2 | PR-9 |
| A8280 |  | TZMI Marketing consultants report development | 30d | 2025-06-23 | 2025-08-04 | A8260 |  |  |  | 25d | 0d |  | UDF_G1 | F |  | OS |  | 5 | PR-9 |
| A8320 |  | Negotiate and agree Term Sheet with lenders | 20d | 2025-07-22 | 2025-08-19 | A8270, A9410 FS-10d |  |  |  | 39d | 0d |  | UDF_G1 | F |  | OS |  | 4 | PR-9 |
| A8290 |  | Lender familiarisation site visit and SRK & Arcadis field validation of DD | 20d | 2025-08-05 | 2025-09-02 | A8280 |  |  |  | 25d | 0d |  | UDF_G1 | F |  | OS |  | 6 | PR-9 |
| A8310 |  | Finalize DD reports - SRK & Arcadis | 20d | 2025-09-03 | 2025-09-30 | A8290 |  |  |  | 25d | 0d |  | UDF_G1 | F |  | OS |  | 7 | PR-9 |
| A8330 |  | Adjust financial model and run sensitivities following SRK report / fiscal terms agreed / LGIM certification | 30d | 2025-10-01 | 2025-11-11 | A8310 |  |  |  | 25d | 0d |  | UDF_G1 | F |  | OS |  | 8 | PR-9 |
| A8340 |  | Final lenders DD | 30d | 2025-10-01 | 2025-11-11 | A8330 SS |  |  |  | 25d | 0d |  | UDF_G1 | F |  | OS |  | 9 | PR-9 |
| A8350 |  | 1st round Lender Credit Approval Process | 40d | 2025-11-12 | 2026-01-26 | A8340, A8400, A8240 |  |  |  | 25d | 0d |  | UDF_G1 | F |  | OS |  | 10 | PR-9 |
| A8360 |  | Loan Documentation & KYC Finalised | 70d | 2025-11-12 | 2026-03-09 | A8350 SS |  |  |  | 25d | 14.21d |  | UDF_G1 | F |  | OS |  | 14 | PR-9 |
| A8370 |  | Finalise Term Sheet | 20d | 2026-02-23 | 2026-03-23 | M1190, M1100 FF, A8350 SS, A9460, A9410 FS-10d |  |  |  | 10.69d | 0d |  | UDF_G1 | F |  | OS |  | 12 | PR-9 |
| A8380 |  | Final credit approval received | 5d | 2026-03-23 | 2026-03-30 | M1270 |  |  |  | 10.69d | 0d |  | UDF_G1 | F |  | OS |  | 13 | PR-9 |
| A8390 |  | Execution of loan documentation | 1d | 2026-03-27 | 2026-03-30 | A8360 FF, M1290 FF |  |  |  | 10.79d |  |  | UDF_G1 | F |  | OS |  | 15 | PR-9 |

| ID | WBS | Activity | Duration | Start | Finish | Predecessors | Complete | Remaining | Planned start | Planned finish | Total float | Free float | Constraint | Resources | Schedule Comments | Site Activity | Department | Level 3 WBS | Site Area | Process | Contract Area |
| --- | --- | --- | --- | --- | --- | --- | --- | --- | --- | --- | --- | --- | --- | --- | --- | --- | --- | --- | --- | --- | --- |
|  | 3 | **Equity Funding** |  | 2025-03-31 | 2026-03-12 |  |  |  |  |  |  |  |  |  |  |  |  |  |  |  |  |
| A8400 |  | Terms agreed / MoU in place | 1d | 2025-03-31 A | 2025-04-01 A | A1000 | 100% |  |  |  |  |  |  |  | To be confirmed | UDF_G1 | F | 2 | OS | PR-9 |  |
| A8410 |  | Execution of loan documentation | 1d | 2025-03-31 A | 2025-04-01 A | A8400 FF | 100% |  |  |  |  |  |  |  |  | UDF_G1 | F | 6 | OS | PR-9 |  |
| A8420 |  | Equity partner funding negotiations | 15d | 2025-04-01 A | 2025-05-12 | A8410 |  | 11d | 2025-04-01 | 2025-05-02 | 22d | 0d |  |  |  | UDF_G1 | F | 1 | OS | PR-9 |  |
| A8430 |  | Negotiate inter-creditor principles | 40d | 2025-05-13 | 2025-07-10 | A8420 |  |  |  |  | 22d | 0d |  |  |  | UDF_G1 | F | 4 | OS | PR-9 |  |
| A8440 |  | Due diligence | 60d | 2025-07-11 | 2025-10-03 | A8430 |  |  |  |  | 22d | 0d |  |  |  | UDF_G1 | F | 3 | OS | PR-9 |  |
| A8450 |  | Loan Documentation & KYC Finalised | 100d | 2025-10-06 | 2026-03-12 | A8440 |  |  |  |  | 22d |  |  |  |  | UDF_G1 | F | 5 | OS | PR-9 |  |
|  | 4 | **Marketing (Outside of JV)** |  | 2025-08-05 | 2026-02-17 |  |  |  |  |  |  |  |  |  |  |  |  |  |  |  |  |
| A8460 |  | Finalise Term Sheet with offtake partners | 26d | 2025-08-05 | 2025-09-10 | A1000, A8320 FS-10d |  |  |  |  | 39d | 0d |  |  |  | UDF_G1 | M | 2 | OS |  |  |
| A8470 |  | Verify / negotiate indicative offtake terms with customers | 100d | 2025-09-11 | 2026-02-17 | M1100 |  |  |  |  | 39d | 0d |  |  |  | UDF_G1 | M | 1 | OS |  |  |
|  | 4 | **Project Development and Board Approval** |  | 2024-12-09 | 2026-04-15 |  |  |  |  |  |  |  |  |  |  |  |  |  |  |  |  |
|  | 2 | **EPCM Awards** |  | 2024-12-09 | 2025-07-23 |  |  |  |  |  |  |  |  |  |  |  |  |  |  |  |  |
| A8510 |  | Update Lyco's pre-FID SOW | 15d | 2024-12-09 A | 2025-03-03 A | A1000 | 100% |  | 2025-01-07 | 2025-01-27 |  |  |  | Contract Preparation dist [120 h] |  | UDF_G1 | PD | 2 | OS |  | CA-03 |
| A8540 |  | Update Zutari Roads pre-FID SOW (including EW) | 30d | 2024-12-09 A | 2024-12-17 A | M1000, A4640 FF | 100% |  | 2025-01-07 | 2025-02-17 |  |  |  | Contract Preparation dist [80 h] |  | UDF_G1 | PD | 2 | OS |  | CA-03 |
| A8550 |  | Update MTLA pre-FID SOW | 5d | 2024-12-16 A | 2024-12-20 A | A3150 FF | 100% |  | 2025-01-13 | 2025-01-17 |  |  |  | Contract Preparation dist [40 h] |  | UDF_G1 | PD |  | OS |  | CA-03 |
| A8530 |  | Update Knight Piesold pre-FID SOW | 20d | 2025-01-13 A | 2025-01-18 A | M1000, A4640 FF | 100% |  | 2025-01-20 | 2025-02-14 |  |  |  | Contract Preparation dist [80 h] |  | UDF_G1 | PD | 2 | OS |  | CA-03 |
| A8560 |  | LYCOS Re-engage and revisit COLAS pre-FID SOW (Geotech at BB, Bridge, Roads, Plant,Quarries) | 20d | 2025-01-28 A | 2025-02-24 A | A8530 FF, M1000, A8510 | 100% |  |  |  |  |  |  | Contract Preparation dist [160 h] |  | UDF_G1 | PD | 2 | OS |  | CA-03 |
| A8520 |  | Update PRDW pre-FID SOW | 20d | 2025-02-17 A | 2025-03-07 A | M1000, A4130 FF | 100% |  | 2025-03-31 | 2025-05-07 |  |  | start on or after 2025-03-31 | Contract Preparation dist [80 h] |  | UDF_G1 | PD | 2 | OS |  | CA-03 |
| A8500 |  | Update Zutari Power pre-FID SOW | 10d | 2025-02-24 A | 2025-03-10 A | A1000 | 100% |  | 2025-03-31 | 2025-04-14 |  |  | start on or after 2025-03-31 | Contract Preparation dist [80 h] |  | UDF_G1 | PD | 2 | OS |  | CA-03 |
| A8570 |  | Confirm project EPCMs strategy / battery limits | 20d | 2025-04-28 | 2025-05-23 | A1000, A8530, A8540, A8500, A8520, A8550 |  |  |  |  | 110d | 0d |  | Contract Preparation dist [160 h] |  | UDF_G1 | PD |  | OS |  | CA-03 |
| A8580 |  | Prepare MTLA Implementation EPCM contract, negotiate and agree terms | 40d | 2025-05-26 | 2025-07-23 | A8570 |  |  |  |  | 110d | 0d |  | Contract Preparation dist [320 h] |  | UDF_G1 | PD |  | OS |  | CA-03 |
| A8590 |  | Prepare Zutari Roads Implementation EPCM contract, negotiate and agree terms | 40d | 2025-05-26 | 2025-07-23 | A8570 |  |  |  |  | 110d | 0d |  | Contract Preparation dist [320 h] |  | UDF_G1 | PD |  | OS |  | CA-03 |
| A8600 |  | Prepare Zutari Power Implementation EPCM contract, negotiate and agree terms | 40d | 2025-05-26 | 2025-07-23 | A8570 |  |  |  |  | 110d | 0d |  | Contract Preparation dist [320 h] |  | UDF_G1 | PD |  | OS |  | CA-03 |
| A8610 |  | Prepare PRDW Implementation EPCM contract, negotiate and agree terms | 40d | 2025-05-26 | 2025-07-23 | A8570 |  |  |  |  | 110d | 0d |  | Contract Preparation dist [320 h] |  | UDF_G1 | PD |  | OS |  | CA-03 |

| ID | WBS | Activity | Duration | Start | Finish | Predecessors | Remaining | Planned start | Planned finish | Total float | Free float | Constraint | Resources | Site Activity | Department | Site Area | Contract Area | Level 3 WBS | Schedule Comments |
| --- | --- | --- | --- | --- | --- | --- | --- | --- | --- | --- | --- | --- | --- | --- | --- | --- | --- | --- | --- |
|  | 3 | **BOD / Plans incl PIP / Systems** |  | 2025-02-10 | 2025-12-11 |  |  |  |  |  |  |  |  |  |  |  |  |  |  |
|  | 2 | **Basis of Design** |  | 2025-02-10 | 2025-06-10 |  |  |  |  |  |  |  |  |  |  |  |  |  |  |
| A8930 |  | Complete Camp and Office Buildings Basis of Design | 30d | 2025-02-10 A | 2025-05-12 | A8550 | 10.12d | 2025-02-10 | 2025-03-24 | 24.88d | 0d |  | Contract Preparation dist [240 h] | UDF_G1 | ENG | OS | CA-03 |  |  |
| A8870 |  | Complete Marine Design Criteria | 10d | 2025-04-28 | 2025-05-09 | A1000, A8520 |  |  |  | 142d | 10d |  | Contract Preparation dist [80 h] | UDF_G1 | ENG | OS | CA-03 | 5 |  |
| A8880 |  | Complete mechanical design criteria | 10d | 2025-04-28 | 2025-05-09 | A1000, A8550 |  |  |  | 60d | 0d | start on or after 2025-03-24 | Contract Preparation dist [80 h] | UDF_G1 | ENG | OS | CA-03 | 1 |  |
| A8890 |  | Complete piping design criteria | 10d | 2025-04-28 | 2025-05-09 | A1000, A8550 |  |  |  | 30d | 10d | start on or after 2025-03-24 | Contract Preparation dist [80 h] | UDF_G1 | ENG | OS | CA-03 | 2 |  |
| A8900 |  | Complete structural design criteria | 10d | 2025-04-28 | 2025-05-09 | A1000, A8550 |  |  |  | 30d | 10d | start on or after 2025-03-24 | Contract Preparation dist [80 h] | UDF_G1 | ENG | OS | CA-03 | 3 |  |
| A8910 |  | Complete Electrical, Instrumental & Control design criteria | 10d | 2025-04-28 | 2025-05-09 | A1000, A8550 |  |  |  | 30d | 10d | start on or after 2025-03-24 | Contract Preparation dist [80 h] | UDF_G1 | ENG | OS | CA-03 | 6 |  |
| A8920 |  | Complete earthworks & civils design criteria | 20d | 2025-04-28 | 2025-05-23 | M1000, A8540, A8550 |  |  |  | 20d | 0d |  | Contract Preparation dist [160 h] | UDF_G1 | ENG | OS | CA-03 | 4 |  |
| A8940 |  | Complete Project Overarching BOD | 10d | 2025-05-26 | 2025-06-10 | A8880, A8890, A8900, A8870, A8910, A8920, A8930 |  |  |  | 132d | 0d |  | Contract Preparation dist [80 h] | UDF_G1 | ENG | OS | CA-03 | 7 | MT and LYCOS schedule will be linked to this activity |
|  | 4 | **Update commissioning and operational readiness plans** |  | 2025-08-27 | 2025-11-18 |  |  |  |  |  |  |  |  |  |  |  |  |  |  |
| A9100 |  | Update Mining commissioning and operational readyness plans | 10d | 2025-08-27 | 2025-09-09 | A1000, A9250 |  |  |  | 59d | 0d |  | Contract Preparation dist [80 h] | UDF_G1 | PD | OS | CA-03 |  | Predessessors (prelim designs) |
| A9110 |  | Update Process Plants commissioning and operational readyness plans | 15d | 2025-09-10 | 2025-09-30 | A1000, A9100 |  |  |  | 59d | 0d |  | Contract Preparation dist [120 h] | UDF_G1 | PD | OS | CA-03 |  |  |
| A9120 |  | Update Utilities commissioning and operational readyness plans | 10d | 2025-10-01 | 2025-10-14 | A1000, A9110 |  |  |  | 59d | 0d |  | Contract Preparation dist [80 h] | UDF_G1 | PD | OS | CA-03 |  |  |
| A9130 |  | Update Export Facility (onshore + offshore) commissioning and operational readyness plans | 15d | 2025-10-15 | 2025-11-04 | A1000, A9120 |  |  |  | 59d | 0d |  | Contract Preparation dist [120 h] | UDF_G1 | PD | OS | CA-03 |  |  |
| A9140 |  | Update Port Marine Operations commissioning and operational readyness plans | 10d | 2025-11-05 | 2025-11-18 | A1000, A9130 |  |  |  | 59d | 58.21d |  | Contract Preparation dist [80 h] | UDF_G1 | PD | OS | CA-03 |  |  |
|  | 3 | **Update the project management plans** |  | 2025-06-18 | 2025-09-11 |  |  |  |  |  |  |  |  |  |  |  |  |  |  |
| A8960 |  | Develop Project Safety and Wellbeing Management Plan | 10d | 2025-06-18 | 2025-07-02 | A1000, A9540 |  |  |  | 102d | 10d |  | Contract Preparation dist [80 h] | UDF_G1 | PD | OS | CA-03 | 1 |  |
| A8970 |  | Develop Project Risk Management plan | 10d | 2025-06-18 | 2025-07-02 | A1000, A9540 |  |  |  | 102d | 10d |  | Contract Preparation dist [80 h] | UDF_G1 | PD | OS | CA-03 | 1 |  |
| A8980 |  | Develop Traffic Management Plan | 10d | 2025-06-18 | 2025-07-02 | A1000, A9540 |  |  |  | 92d | 0d |  | Contract Preparation dist [80 h] | UDF_G1 | PD | OS | CA-03 | 1 |  |
| A8950 |  | Develop Quality Management Plan | 10d | 2025-07-03 | 2025-07-16 | A1000, A9540, A8980 |  |  |  | 92d | 0d |  | Contract Preparation dist | UDF_G1 | PD | OS | CA-03 | 1 |  |
| A8990 |  | Develop Emergency Evacuation Plan | 10d | 2025-07-17 | 2025-07-30 | A1000, A9540, A8950, A8960, A8970 |  |  |  | 92d | 0d |  | Contract Preparation dist [80 h] | UDF_G1 | PD | OS | CA-03 | 1 |  |
| A9000 |  | Develop Engineering & Design Management Plan | 10d | 2025-07-17 | 2025-07-30 | A1000, A9540, A8950, A8960, A8970 |  |  |  | 92d | 0d |  | Contract Preparation dist [80 h] | UDF_G1 | PD | OS | CA-03 | 1 |  |
| A9010 |  | Develop Environmental Management Plan | 10d | 2025-07-17 | 2025-07-30 | A1000, A9540, A8950, A8960, A8970 |  |  |  | 102d | 10d |  | Contract Preparation dist [80 h] | UDF_G1 | PD | OS | CA-03 | 1 |  |
| A9020 |  | Develop Project Controls Plan | 10d | 2025-07-31 | 2025-08-13 | A1000, A9540, A8980, A8990, A9000 |  |  |  | 92d | 0d |  | Contract Preparation dist [80 h] | UDF_G1 | PD | OS | CA-03 | 1 |  |
| A9030 |  | Develop Communications and Stakeholder Plan | 10d | 2025-07-31 | 2025-08-13 | A1000, A9540, A8980, A8990, A9000 |  |  |  | 92d | 0d |  | Contract Preparation dist [80 h] | UDF_G1 | PD | OS | CA-03 | 1 |  |
| A9040 |  | Develop Local Content Management Plan | 10d | 2025-08-14 | 2025-08-28 | A1000, A9540, A9010, A9020, A9030 |  |  |  | 92d | 0d |  | Contract Preparation dist [80 h] | UDF_G1 | PD | OS | CA-03 | 1 |  |
| A9050 |  | Develop IT Management Plan | 10d | 2025-08-14 | 2025-08-28 | A1000, A9540, A9010, A9020, A9030 |  |  |  | 92d | 0d |  | Contract Preparation dist [80 h] | UDF_G1 | PD | OS | CA-03 | 1 |  |
| A9060 |  | Develop Contracts and Procurement Management Plan | 10d | 2025-08-14 | 2025-08-28 | A1000, A9540, A9010, A9020, A9030 |  |  |  | 92d | 0d |  | Contract Preparation dist [80 h] | UDF_G1 | PD | OS | CA-03 | 1 |  |
| A9070 |  | Develop Construction Management Plan | 10d | 2025-08-29 | 2025-09-11 | A1000, A9540, A9040, A9050, A9060 |  |  |  | 117d | 116.21d |  | Contract Preparation dist [80 h] | UDF_G1 | PD | OS | CA-03 | 1 |  |
| A9080 |  | Develop Project Review and Audit Plan | 10d | 2025-08-29 | 2025-09-11 | A1000, A9540, A9040, A9050, A9060 |  |  |  | 117d | 116.21d |  | Contract Preparation dist [80 h] | UDF_G1 | PD | OS | CA-03 | 1 |  |
| A9090 |  | Develop Project Closeout and Handover Plan | 10d | 2025-08-29 | 2025-09-11 | A1000, A9540, A9040, A9050, A9060 |  |  |  | 92d | 0d |  | Contract Preparation dist [80 h] | UDF_G1 | PD | OS | CA-03 | 1 |  |

| ID | WBS | Activity | Duration | Start | Finish | Predecessors | Total float | Free float | Resources | Site Activity | Department | Site Area | Contract Area |
| --- | --- | --- | --- | --- | --- | --- | --- | --- | --- | --- | --- | --- | --- |
|  | 1 | **Update PIP** |  | 2025-09-12 | 2025-10-02 |  |  |  |  |  |  |  |  |
| A8630 |  | 02 - Preface | 10d | 2025-09-12 | 2025-09-25 | A1000, A9090 | 92d | 0d | Project Implementation Schedule dist [80 h] | UDF_G1 | PD | OS | CA-03 |
| A8640 |  | 03 - Project Objective and Outcomes | 10d | 2025-09-12 | 2025-09-25 | A1000, A9090 | 92d | 0d | Project Implementation Schedule dist [80 h] | UDF_G1 | PD | OS | CA-03 |
| A8650 |  | 04 - Project Performance Requirements | 10d | 2025-09-12 | 2025-09-25 | A1000, A9090 | 92d | 0d | Project Implementation Schedule dist [80 h] | UDF_G1 | PD | OS | CA-03 |
| A8660 |  | 05 - Project Scope Overview | 10d | 2025-09-12 | 2025-09-25 | A1000, A9090 | 92d | 0d | Project Implementation Schedule dist [80 h] | UDF_G1 | PD | OS | CA-03 |
| A8670 |  | 06 - Health Safety and Environment | 10d | 2025-09-12 | 2025-09-25 | A1000, A9090 | 92d | 0d | Project Implementation Schedule dist [80 h] | UDF_G1 | PD | OS | CA-03 |
| A8680 |  | 07 - Security and Access Management | 10d | 2025-09-12 | 2025-09-25 | A1000, A9090 | 92d | 0d | Project Implementation Schedule dist [80 h] | UDF_G1 | PD | OS | CA-03 |
| A8690 |  | 08 - Contracting Strategy | 10d | 2025-09-12 | 2025-09-25 | A1000, A9090 | 92d | 0d | Project Implementation Schedule dist [80 h] | UDF_G1 | PD | OS | CA-03 |
| A8700 |  | 09 - Work Breakdown Structure | 10d | 2025-09-12 | 2025-09-25 | A1000, A9090 | 92d | 0d | Project Implementation Schedule dist [80 h] | UDF_G1 | PD | OS | CA-03 |
| A8710 |  | 10 - Control Budget | 10d | 2025-09-12 | 2025-09-25 | A1000, A9090 | 92d | 0d | Project Implementation Schedule dist [80 h] | UDF_G1 | PD | OS | CA-03 |
| A8720 |  | 11 - Project Schedule | 10d | 2025-09-12 | 2025-09-25 | A1000, A9090 | 92d | 0d | Project Implementation Schedule dist [80 h] | UDF_G1 | PD | OS | CA-03 |
| A8730 |  | 12 - Risk Management | 10d | 2025-09-12 | 2025-09-25 | A1000, A9090 | 92d | 0d | Project Implementation Schedule dist [80 h] | UDF_G1 | PD | OS | CA-03 |
| A8740 |  | 13 - Stakeholder Engagement Strategy | 10d | 2025-09-12 | 2025-09-25 | A1000, A9090 | 92d | 0d | Project Implementation Schedule dist [80 h] | UDF_G1 | PD | OS | CA-03 |
| A8750 |  | 14 - Project Organisation | 10d | 2025-09-12 | 2025-09-25 | A1000, A9090 | 92d | 0d | Project Implementation Schedule dist [80 h] | UDF_G1 | PD | OS | CA-03 |
| A8760 |  | 15 - Environmental and Approvals | 10d | 2025-09-12 | 2025-09-25 | A1000, A9090 | 92d | 0d | Project Implementation Schedule dist [80 h] | UDF_G1 | PD | OS | CA-03 |
| A8770 |  | 16 - Project Controls | 10d | 2025-09-12 | 2025-09-25 | A1000, A9090 | 92d | 0d | Project Implementation Schedule dist [80 h] | UDF_G1 | PD | OS | CA-03 |
| A8780 |  | 17 - Quality Management | 10d | 2025-09-12 | 2025-09-25 | A1000, A9090 | 92d | 0d | Project Implementation Schedule dist [80 h] | UDF_G1 | PD | OS | CA-03 |
| A8790 |  | 18 - Project Infrastructure | 10d | 2025-09-12 | 2025-09-25 | A1000, A9090 | 92d | 0d | Project Implementation Schedule dist [80 h] | UDF_G1 | PD | OS | CA-03 |
| A8800 |  | 19 - Engineering Management | 10d | 2025-09-12 | 2025-09-25 | A1000, A9090 | 92d | 0d | Project Implementation Schedule dist [80 h] | UDF_G1 | PD | OS | CA-03 |
| A8810 |  | 20 - Procurement Controls | 10d | 2025-09-12 | 2025-09-25 | A1000, A9090 | 92d | 0d | Project Implementation Schedule dist [80 h] | UDF_G1 | PD | OS | CA-03 |
| A8820 |  | 21 - Construction Management | 10d | 2025-09-12 | 2025-09-25 | A1000, A9090 | 92d | 0d | Project Implementation Schedule dist [80 h] | UDF_G1 | PD | OS | CA-03 |
| A8830 |  | 22 - Pre-Commisioning and Commissioning | 10d | 2025-09-12 | 2025-09-25 | A1000, A9090 | 92d | 0d | Project Implementation Schedule dist [80 h] | UDF_G1 | PD | OS | CA-03 |
| A8840 |  | 23 - Project Closeout | 10d | 2025-09-12 | 2025-09-25 | A1000, A9090 | 92d | 0d | Project Implementation Schedule dist [80 h] | UDF_G1 | PD | OS | CA-03 |
| A8850 |  | 24 - Operational Readiness | 10d | 2025-09-12 | 2025-09-25 | A1000, A9090 | 92d | 0d | Project Implementation Schedule dist [80 h] | UDF_G1 | PD | OS | CA-03 |
| A8860 |  | 25 - Project Administration | 10d | 2025-09-12 | 2025-09-25 | A1000, A9090 | 92d | 0d | Project Implementation Schedule dist [80 h] | UDF_G1 | PD | OS | CA-03 |
| A8620 |  | 01 - Summary | 10d | 2025-09-19 | 2025-10-02 | A8630 FF+5d, A8640 FF+5d, A8650 FF+5d, A8660 FF+5d, A8670 FF+5d, A8680 FF+5d, A8690 FF+5d, A8700 FF+5d, A8710 FF+5d, A8720 FF+5d, A8730 FF+5d, A8740 FF+5d, A8750 FF+5d, A8760 FF+5d, A8770 FF+5d, A8780 FF+5d, A8790 FF+5d, A8800 FF+5d, A8810 FF+5d, A8820 FF+5d, A8830 FF+5d, A8840 FF+5d, A8850 FF+5d, A8860 FF+5d | 92d | 0d | Project Implementation Schedule dist [80 h] | UDF_G1 | PD | OS | CA-03 |

| ID | WBS | Activity | Duration | Start | Finish | Predecessors | Complete | Remaining | Planned start | Planned finish | Total float | Free float | Constraint | Resources | Site Activity | Department | Level 3 WBS | Business Area | Site Area | Contract Area |
| --- | --- | --- | --- | --- | --- | --- | --- | --- | --- | --- | --- | --- | --- | --- | --- | --- | --- | --- | --- | --- |
|  | 5 | **Project Controls Systems** |  | 2025-04-28 | 2025-12-11 |  |  |  |  |  |  |  |  |  |  |  |  |  |  |  |
| A9150 |  | Develop Project cost control systems (Include Pronto Development) | 120d | 2025-04-28 | 2025-10-16 | A1000 |  |  |  |  | 42d | 0d | start on or after 2025-04-20 | Contract Preparation dist [960 h] | UDF_G1 | PD | 3 | PCS | OS | CA-03 |
| A9160 |  | Develop Project progress management system | 40d | 2025-10-17 | 2025-12-11 | A1000, A9150 |  |  |  |  | 42d | 41.21d |  | Contract Preparation dist [320 h] | UDF_G1 | PD | 3 | PCS | OS | CA-03 |
|  | 5 | **Fuel Strategy** |  | 2025-06-11 | 2025-08-06 |  |  |  |  |  |  |  |  |  |  |  |  |  |  |  |
| A9170 |  | Define fuel storage strategy (contractor involvement in design? construction?) | 20d | 2025-06-11 | 2025-07-09 | A8940, A1000 |  |  |  |  | 132d | 0d |  | Contract Preparation dist [160 h] | UDF_G1 | PD | 1 |  | OS | CA-03 |
| A9180 |  | Develop Early fuel facility strategy | 10d | 2025-07-10 | 2025-07-23 | A1000, A9170 |  |  |  |  | 132d | 0d |  | Contract Preparation dist [80 h] | UDF_G1 | PD | 2 |  | OS | CA-03 |
| A9190 |  | Develop Fuel Management Plan | 10d | 2025-07-24 | 2025-08-06 | A1000, A9180 |  |  |  |  | 132d | 131.21d |  | Contract Preparation dist [80 h] | UDF_G1 | PD | 3 |  | OS | CA-03 |
|  | 6 | **Engineering Designs and Approvals** |  | 2025-03-31 | 2026-02-12 |  |  |  |  |  |  |  |  |  |  |  |  |  |  |  |
|  | 1 | **Engineering Designs** |  | 2025-03-31 | 2025-11-27 |  |  |  |  |  |  |  |  |  |  |  |  |  |  |  |
| A9200 |  | Update P&ID's | 30d | 2025-03-31 A | 2025-05-21 | A8550 | 20% | 18d | 2025-03-31 | 2025-05-22 | 16.79d | 0d |  | Contract Preparation dist [240 h] | UDF_G1 | ENG |  |  | OS | CA-03 |
| A9210 |  | Develop DMU Scope of Work | 30d | 2025-04-28 | 2025-06-10 | A9200 SS |  |  |  |  | 203d |  |  | Contract Preparation dist [240 h] | UDF_G1 | ENG |  |  | OS | CA-03 |
| A9230 |  | Update Mechanical Equipment Packages | 60d | 2025-05-12 | 2025-08-06 | A9200 SS+20d, A8880 |  |  |  |  | 60d | 0d |  | Contract Preparation dist [480 h] | UDF_G1 | ENG |  |  | OS | CA-03 |
| A9220 |  | Develop Operating and Control Philosophy | 20d | 2025-05-22 | 2025-06-20 | A9200 |  |  |  |  | 195d |  |  | Contract Preparation dist [160 h] | UDF_G1 | ENG |  |  | OS | CA-03 |
| A9250 |  | 3D Model Updates | 65d | 2025-05-22 | 2025-08-26 | A9200 |  |  |  |  | 52d | 0d |  | Contract Preparation dist [520 h] | UDF_G1 | ENG |  |  | OS | CA-03 |
| A9240 |  | Bulk Design & Calculations (Stl/Conc/Plate/Pipe/Valves/EI) | 60d | 2025-05-26 | 2025-08-21 | A9200 FS-10d, A8890, A8900, A8910, A8920 |  |  |  |  | 20d | 0d |  | Contract Preparation dist [480 h] | UDF_G1 | ENG |  |  | OS | CA-03 |
| A9260 |  | Issue Mechanical Vendor Packages | 70d | 2025-06-11 | 2025-09-18 | A9230 SS+20d |  |  |  |  | 60d | 0d |  | Contract Preparation dist [560 h] | UDF_G1 | ENG |  |  | OS | CA-03 |
| A9270 |  | Update Electrical packages (Incl Inst & Ctrls) | 50d | 2025-07-08 | 2025-09-17 | A9200 SS+60d, A8910 |  |  |  |  | 16.79d | 0d |  | Contract Preparation dist [400 h] | UDF_G1 | ENG |  |  | OS | CA-03 |
| A9290 |  | Mechanical Bid reviews | 50d | 2025-07-24 | 2025-10-02 | A9260 SS+30d |  |  |  |  | 60d | 50.21d |  | Contract Preparation dist [400 h] | UDF_G1 | ENG |  |  | OS | CA-03 |
| A9300 |  | Issue Electrical packages (Incl Inst & Ctrls) | 55d | 2025-08-05 | 2025-10-22 | A9270 SS+20d |  |  |  |  | 16.79d | 0d |  | Contract Preparation dist [440 h] | UDF_G1 | ENG |  |  | OS | CA-03 |
| A9280 |  | Bulk BOQ's (Stl/Conc/Plate/Pipe/Valves/EI) | 30d | 2025-08-22 | 2025-10-02 | A9240 |  |  |  |  | 20d | 0d |  | Contract Preparation dist [240 h] | UDF_G1 | ENG |  |  | OS | CA-03 |
| A9310 |  | Bulk Pricing (Stl/Conc/Pipe/Valves/EI) (Lyco's D/Base) | 40d | 2025-10-03 | 2025-11-27 | A9280 |  |  |  |  | 20d | 10.21d |  | Contract Preparation dist [320 h] | UDF_G1 | ENG |  |  | OS | CA-03 |
| A9320 |  | Electrical Bid Reviews (Incl Inst & Ctrls) | 20d | 2025-10-22 | 2025-11-19 | A9300 |  |  |  |  | 16.79d | 0d |  | Contract Preparation dist [160 h] | UDF_G1 | ENG |  |  | OS | CA-03 |
|  | 4 | **Madagascar Engineering Approval** |  | 2025-07-31 | 2026-02-12 |  |  |  |  |  |  |  |  |  |  |  |  |  |  |  |
| A9330 |  | Obtain Engineering approvals for Port Causeway | 20d | 2025-07-31 | 2025-08-28 | A3580 |  |  |  |  | 87d | 80d |  | Approvals and Permits dist [160 h] | UDF_G1 | AP |  |  | OS | CA-03 |
| A9350 |  | Obtain Engineering approvals for MT scope (process plants) | 20d | 2025-08-27 | 2025-09-23 | A9250 |  |  |  |  | 130d |  |  | Approvals and Permits dist [160 h] | UDF_G1 | AP | 1 |  | OS | CA-03 |
| A9340 |  | Obtain Engineering approvals for Batterie Beach access road (EW) | 20d | 2025-08-29 | 2025-09-26 | A4180 |  |  |  |  | 71.79d | 56d |  | Approvals and Permits dist [160 h] | UDF_G1 | AP |  |  | OS | CA-03 |
| A9360 |  | Obtain Engineering approvals for Zutari scope (Roads, export facility bulk earth works) | 20d | 2025-11-20 | 2026-01-07 | A4710, A6690 |  |  |  |  | 68.79d |  |  | Approvals and Permits dist [160 h] | UDF_G1 | AP | 1 |  | OS | CA-03 |
| A9370 |  | Obtain Engineering approvals for Zutari scope (Power) | 20d | 2025-11-21 | 2026-01-07 | M1090 FS+20d |  |  |  |  | 68d |  |  | Approvals and Permits dist [160 h] | UDF_G1 | AP |  |  | OS | CA-03 |
| A9380 |  | Obtain Engineering approvals for Lycos scope (plant infrastructure, camp, bridge, export facility piling & product shed) | 20d | 2026-01-15 | 2026-02-12 | A5420, A6900, A6090, A6400 |  |  |  |  | 42.79d |  |  | Approvals and Permits dist [160 h] | UDF_G1 | AP | 1 |  | OS | CA-03 |
| A9390 |  | Obtain Engineering approvals for PRDW scope (export facility offshore) | 20d | 2026-01-15 | 2026-02-12 | A3580, A5140 |  |  |  |  | 42.79d |  |  | Approvals and Permits dist [160 h] | UDF_G1 | AP | 1 |  | OS | CA-03 |

| ID | WBS | Activity | Duration | Start | Finish | Predecessors | Complete | Remaining | Planned start | Planned finish | Total float | Free float | Constraint | Calendar | Resources | Placeholder | Site Activity | Department | Level 3 WBS | Site Area | Contract Area | Schedule Comments |
| --- | --- | --- | --- | --- | --- | --- | --- | --- | --- | --- | --- | --- | --- | --- | --- | --- | --- | --- | --- | --- | --- | --- |
|  | 9 | **Bankable Feasibility Study (BFS) and Board Pack** |  | 2025-01-28 | 2026-04-15 |  |  |  |  |  |  |  |  |  |  |  |  |  |  |  |  |  |
| A8480 |  | (With MTLA) Review Implementation SoW including additional scope (MCP & Export Facility) | 5d | 2025-01-28 A | 2025-02-04 A | A1000, A8550 FS-1d | 100% |  |  |  |  |  |  |  | Contract Preparation dist [40 h] | UDF_G2 | UDF_G1 | PD | 3 | OS | CA-04 |  |
| A9590 |  | Prepare, Issue and Receive RFQ's to obtain pricing for BFS | 40d | 2025-01-28 A | 2025-03-25 A | A8480 | 100% |  |  |  |  |  |  |  | Contract Preparation dist [320 h] | UDF_G2 | UDF_G1 | PD |  | OS | CA-04 |  |
| A9410 |  | Conclude FEED Engineering on changes | 25d | 2025-03-31 A | 2025-05-15 | A8480 | 44% | 14d |  |  | 0d | 4d |  |  | Contract Preparation dist [200 h] | UDF_G2 | UDF_G1 | PD |  | OS | CA-04 |  |
| A9780 |  | Update Estimates with the new Pricing | 30d | 2025-03-31 A | 2025-05-21 | A9410 FF | 40% | 18d | 2025-03-31 | 2025-05-22 | -4d | 0d |  |  | Contract Preparation dist [240 h] | UDF_G2 | UDF_G1 | PD |  | OS | CA-04 |  |
| A9510 |  | Update OPEX Costs (including finalise operations manning and diesel, floc etc) | 20d | 2025-04-14 A | 2025-05-21 | A9590, A9410 FS-10d |  | 18d | 2025-05-02 | 2025-05-30 | -4d | 0d |  |  | Contract Preparation dist [160 h] | UDF_G2 | UDF_G1 | PD |  | OS | CA-04 |  |
| A9790 |  | Assess feedback and pricing update | 20d | 2025-04-22 | 2025-05-20 | A9590 FS-10d |  |  |  |  | 95.79d | 0d |  | B11-Standard 5 day workweek - No Shutdown | Contract Preparation dist [160 h] | UDF_G2 | UDF_G1 | PD |  | OS | CA-04 |  |
| A8490 |  | Develop CAPEX estimate based on database pricing for funding requirements | 20d | 2025-04-28 | 2025-05-23 | A8480 |  |  |  |  | 33d | 8d |  |  | Contract Preparation dist [144 h] | UDF_G2 | UDF_G1 | PD |  | OS | CA-04 |  |
| A9540 |  | Compile Bankable Feasibility Study (BFS) report (Comprehensive Version) | 35d | 2025-04-28 | 2025-06-17 | A9800 FF+5d, A9790 FF+15d |  |  |  |  | 92d | 0d |  |  | Contract Preparation dist [280 h] | UDF_G2 | UDF_G1 | PD |  | OS | CA-04 |  |
| A9800 |  | Update Implementation Schedule | 20d | 2025-04-29 | 2025-05-27 | A9790 FF+5d |  |  |  |  | 100.79d | 8.79d |  | B11-Standard 5 day workweek - No Shutdown | Contract Preparation dist [160 h] | UDF_G2 | UDF_G1 | PD |  | OS | CA-04 |  |
| A9600 |  | Update Financial Model for BFS | 10d | 2025-05-22 | 2025-06-05 | A9510, A9780 |  |  |  |  | -4d | 0d | finish on or before 2025-05-31 |  | Contract Preparation dist [80 h] | UDF_G2 | UDF_G1 | PD |  | OS | CA-04 |  |
| A9620 |  | Compile Bankable Feasibility Study (BFS) report (Summary Version) | 10d | 2025-06-06 | 2025-06-20 | A9540 FF+3d |  |  |  |  | 112d | 0d |  |  | Contract Preparation dist [80 h] |  | UDF_G1 | PD |  | OS | CA-04 |  |
| A10000 |  | Translate BFS report | 10d | 2025-06-23 | 2025-07-07 | A9790, A9620 |  |  |  |  | 112d | 0d |  |  | Contract Preparation dist [80 h] | UDF_G2 | UDF_G1 | PD |  | OS |  |  |
| A9610 |  | Review And Publish Bankable Feasibility Study Report (BFS) by Base and Energy Fuels | 5d | 2025-07-08 | 2025-07-14 | A10000 |  |  |  |  | 180d |  |  |  | Contract Preparation dist [40 h] |  | UDF_G1 | PD |  | OS |  |  |
| A9420 |  | Issue BQR's for implementation CAPEX | 40d | 2025-09-24 | 2025-11-19 | A9320 FF, A8550 |  |  |  |  | 16.79d | 0d |  |  | Contract Preparation dist [320 h] |  | UDF_G1 | PD | 2 | OS | CA-28 | BQR ?? |
| A9400 |  | Develop and Approve Estimating Plan | 30d | 2025-10-08 | 2025-11-19 | A9420 FF, A10000 FF |  |  |  |  | 16.79d | 0d |  |  | Contract Preparation dist [240 h] |  | UDF_G1 | PD |  | OS | CA-28 |  |
| A9430 |  | CAPEX Workshop to select Contractor Pricing and Schedule timing | 10d | 2025-11-19 | 2025-12-03 | A9420, A9400 |  |  |  |  | 16.79d | 7d |  |  | Contract Preparation dist [80 h] |  | UDF_G1 | PD | 2 | OS | CA-28 |  |
| A9450 |  | Develop indirect costs | 20d | 2025-12-01 | 2026-01-16 | A9440 FF |  |  |  |  | 28.79d | 19d |  |  | Contract Preparation dist [160 h] |  | UDF_G1 | PD |  | OS | CA-28 |  |
| A9460 |  | Update Capital Cost Estimate (for Boardpack) | 30d | 2025-12-12 | 2026-02-12 | A9430, A8610, A9440 FF+5d, A7100 FF+2d, A7160, A7310, A4230, A3610, A3640, A3290, A6120 FF+1d, A6930, A9450 FF, A9310, A5140 FF+1d, A8590, A9320, A9290, A8580, A8600, A6700, M1070, A7090, A9400, A10600 FF+10d |  |  |  |  | 9.79d | 0d |  |  | Contract Preparation dist [80 h] |  | UDF_G1 | PD | 2 | OS | CA-28 |  |
| A9440 |  | Develop/Update Project Implementation Schedule | 10d | 2025-12-15 | 2026-01-16 | A3610 FF+5d, A3290 FF+5d, A5140 FF, A6120 FF, A6930 FF+5d, A5600 FF+5d |  |  |  |  | 23.79d | 0d |  |  | Contract Preparation dist [80 h] |  | UDF_G1 | PD |  | OS | CA-28 |  |
| A9470 |  | Develop implementation control budget | 30d | 2026-01-15 | 2026-02-26 | A9460 FF+10d |  |  |  |  | 32.79d |  |  |  | Contract Preparation dist [310.33 h] |  | UDF_G1 | PD | 2 | OS | CA-28 |  |
| A9550 |  | FID Executive Summary PPT (with updated CAPEX/OPEX) | 40d | 2026-01-16 | 2026-03-13 | A9180 FF+10d, A9190 FF+10d, A9170 FF+10d, A9100 FF+10d, A9110 FF+10d, A9120 FF+10d, A9130 FF+10d, A9140 FF+10d, A8210 FF+10d, A9160 FF+10d, A8960 FF, A8970 FF, A8980 FF, A8990 FF, A9000 FF, A9010 FF, A9020 FF, A8950 FF, A9030 FF, A9040 FF, A9050 FF, A9060 FF, A9070 FF, A9080 FF, A9090 FF, A9480 FF+10d, M1100 FF+10d, A3640 FF+10d, A9460 FF+10d, A3540 FF+10d, A2680 FF+10d, A2670 FF+10d, A2660 FF+10d, A2900 FF+10d, A2890 FF+10d, A2870 FF+10d, A3140 FF+5d, A3130 FF+10d, A3120 FF+10d, A3770 FF+10d, A3780 FF+10d, A3790 FF+10d, A6240 FF+10d, A3430 FF+10d, A3440 FF+10d, A3450 FF+10d, A3460 FF+10d, A2530 FF+10d, A2540 FF+10d, A2550 FF+10d, A2560 FF+10d, A2570 FF+10d, A4890 FF+10d, A4900 FF, A4910 FF, A4920 FF, A4880 FF+10d, A4930 FF, A6250 FF+10d, A6260 FF+10d, A4990 FF+5d, A5730 FF+10d, A5530 FF+10d, A6730 FF+10d, A6740 FF+10d, M1240 FF+1d, M1160 FF+10d, M1130 FF+10d, M1250 FF+4d, M1080, M1310 FF+10d, A1670 FF+10d, A3290 FF+10d, A3490 FF+10d, A8070 FF+10d, A3580 FF+10d |  |  |  |  | 0.79d | 0d |  |  | Contract Preparation dist [320 h] |  | UDF_G1 | PD |  | OS | CA-28 |  |
| A9480 |  | Finalise OPEX estimate | 20d | 2026-01-19 | 2026-02-16 | A9460 FF+2d, A6810, A7220, A6800, A5600 |  |  |  |  | 9.79d | 0d |  |  | Contract Preparation dist [160 h] |  | UDF_G1 | PD | 1 | OS | CA-28 |  |
| A9490 |  | Update Financial Model for FID | 5d | 2026-02-16 | 2026-02-23 | A9480, A9460 |  |  |  |  | 10.69d | 0d |  |  | Contract Preparation dist [40 h] |  | UDF_G1 | F | 3 | OS | CA-28 |  |

| ID | WBS | Activity | Duration | Start | Finish | Predecessors | Total float | Free float | Resources | Site Activity | Department | Level 3 WBS | Site Area | Contract Area |
| --- | --- | --- | --- | --- | --- | --- | --- | --- | --- | --- | --- | --- | --- | --- |
|  | 3 | **Board Pack Review and Approval** |  | 2026-03-16 | 2026-04-15 |  |  |  |  |  |  |  |  |  |
| A9560 |  | Prepare Board Pack (Slide Presentation) | 5d | 2026-03-16 | 2026-03-23 | A9490 FF+10d, M1190 FF+10d, A9550 FS+1d, A9180 FF+10d, A9190 FF+10d, A9170 FF+10d, A9100 FF+10d, A9110 FF+10d, A9120 FF+10d, A9130 FF+10d, A9140 FF+10d, A8210 FF+10d, A9160 FF+10d, A8960 FF, A8970 FF, A8980 FF, A8990 FF, A9000 FF, A9010 FF, A9020 FF, A8950 FF, A9030 FF, A9040 FF, A9050 FF, A9060 FF, A9070 FF, A9080 FF, A9090 FF, A9480 FF+10d, M1100 FF+10d, A3640 FF+10d, A9460 FF+10d, A3540 FF+10d, A2680 FF+10d, A2670 FF+10d, A2660 FF+10d, A2900 FF+10d, A2890 FF+10d, A2870 FF+10d, A3140 FF+10d, A3130 FF+10d, A3120 FF+10d, A3770 FF+10d, A3780 FF+10d, A3790 FF+10d, A6240 FF+10d, A3430 FF+10d, A3440 FF+10d, A3450 FF+10d, A3460 FF+10d, A2530 FF+10d, A2540 FF+10d, A2550 FF+10d, A2560 FF+10d, A2570 FF+10d, A4890 FF+10d, A4900 FF+10d, A4910 FF+5d, A4920 FF+5d, A4880 FF+10d, A4930 FF+5d, A6250 FF+10d, A6260 FF+10d, A4990 FF+10d, A5730 FF+10d, A5530 FF+10d, A6730 FF+10d, A6740 FF+10d, M1240 FF+10d, M1160 FF+10d, M1130 FF+10d, M1250 FF+10d, M1310 FF+10d, A1670 FF+10d, A3290 FF+10d, A3490 FF+10d, A8070 FF+10d, A3580 FF+10d | 0.79d | 0d | Contract Preparation dist [40 h] | UDF_G1 | PD | 2 | OS | CA-28 |
| A9570 |  | Review and Submit Board Papers | 5d | 2026-03-23 | 2026-03-30 | A9560 | 0.79d | 0d | Contract Preparation dist [40 h] | UDF_G1 | PD | 3 | OS | CA-28 |
| A9580 |  | Review of Board papers | 10d | 2026-03-30 | 2026-04-15 | A9570 | 0.79d |  | Contract Preparation dist [80 h] | UDF_G1 | PD | 4 | OS | CA-28 |

## Activity codes

| Code | Value | Meaning |
| --- | --- | --- |
| Business Area | 18 | Process Plant (200) |
| Business Area | 20 | Infrastructure (400) |
| Business Area | CAM | Contracts Administration |
| Business Area | CIV | Civil and Concrete |
| Business Area | CTY | Community |
| Business Area | ENG | Engineering Management |
| Business Area | ENV | Environmental |
| Business Area | FIN | Finance |
| Business Area | GEO | Geotechnical |
| Business Area | GOV | Government & Legal |
| Business Area | LND | Land Acquisition |
| Business Area | LOG | Logistics Management and Warehousing |
| Business Area | PCS | Project Controls (Doc Ctrl, Cost Control, Planning) |
| Business Area | PRO | Procurement |
| Contract Area | CA-01 | PGE Update |
| Contract Area | CA-02 | LGIM |
| Contract Area | CA-03 | Project Development |
| Contract Area | CA-04 | BFS Document |
| Contract Area | CA-05 | Access to Mine Site |
| Contract Area | CA-06 | Access to Batterie Beach |
| Contract Area | CA-07 | Site Survey |
| Contract Area | CA-08 | Process Water Develpment |
| Contract Area | CA-09 | Monitoring Bores |
| Contract Area | CA-10 | Construction Water |
| Contract Area | CA-12 | Quaries & Borrow Pits |
| Contract Area | CA-13 | Port Causeway |
| Contract Area | CA-14 | Batterie Beach Access & pads |
| Contract Area | CA-15 | Haul Road North |
| Contract Area | CA-16 | Haul Road Assessment Study |
| Contract Area | CA-17 | Marine (Jetty) |
| Contract Area | CA-18 | Firehenana Bridge |
| Contract Area | CA-19 | Power Supply |
| Contract Area | CA-20 | Process Plant Bulk Earthworks |
| Contract Area | CA-21 | Export Facility Piling |
| Contract Area | CA-22 | Ranobe Access Road + Camp bulk earthworks |
| Contract Area | CA-23 | Camp Design and Construction |
| Contract Area | CA-24 | Hual Road South |
| Contract Area | CA-25 | Marine Operations |
| Contract Area | CA-26 | Camp Operations |
| Contract Area | CA-27 | Transport & Logistics |
| Contract Area | CA-28 | Board Pack Development |
| Department | AP | Permits and Approvals |
| Department | CR | Community Relations |
| Department | EA | External Affairs |
| Department | ENG | Engineering |
| Department | F | Finance |
| Department | L | Government & legal |
| Department | LA | Land Acquisition |
| Department | M | Marketing |
| Department | PD | Project Development |
| Department | T | Technical |
| ESMS Responsibility | ENV | Environment |
| ESMS Responsibility | SOC | Social |
| Level 3 WBS | 1 | Official Ceremony Led by National Government |
| Level 3 WBS | 10 | Receive construction cost and schedule |
| Level 3 WBS | 11 | Conclude "in principle" agreement |
| Level 3 WBS | 12 | Negotiate EPC agreement and Legal review |
| Level 3 WBS | 13 | Award construction contract & mobilisation (at FID) |
| Level 3 WBS | 14 | Loan Documentation & KYC Finalised |
| Level 3 WBS | 15 | Execution of loan documentation |
| Level 3 WBS | 16 | Base Toliara to sign the commitment letter under Article 17 of the LGIM and submit it to the Minister of Mines |
| Level 3 WBS | 17 | Publication of the LGIM certification decree |
| Level 3 WBS | 2 | Access to the South (Batterie Beach, HRS & F.Bridge) |
| Level 3 WBS | 3 | Access to the North (Mine site, HRS, Ranobe road) |
| Level 3 WBS | 4 | Community (blessings) engagement for on the ground activities (baseline studies and geotechnical activities) |
| Level 3 WBS | 5 | Borehole 5 |
| Level 3 WBS | 6 | Consultation on private treaty agreements |
| Level 3 WBS | 7 | Sign off of RAP |
| Level 3 WBS | 8 | Commence compensation amounts to land owners on completion of Private Treaty Agreement |
| Level 3 WBS | 9 | Design peer review |
| Process | PR-1 | Stakeholder Disclosure |
| Process | PR-10 | PGES Preperation |
| Process | PR-11 | PGES Submission |
| Process | PR-12 | PGES Review |
| Process | PR-13 | RFT Preperation |
| Process | PR-14 | RFT Submission |
| Process | PR-16 | Legal Review |
| Process | PR-17 | Contractor Adjudication |
| Process | PR-18 | Contractor Site Mobilisation |
| Process | PR-19 | Construction Permitting |
| Process | PR-2 | Baseline Study |
| Process | PR-20 | Early works Land Acquisition |
| Process | PR-21 | Land Acquisition |
| Process | PR-22 | Geotechnical Investigation Test Pits |
| Process | PR-23 | Geotechnical Investigation Marine |
| Process | PR-3 | Geotechnical Investigation Mobilisation |
| Process | PR-4 | Geotechnical Investigation Drilling |
| Process | PR-5 | Geotechnical Investigation Lab |
| Process | PR-6 | Geotechnical Permitting |
| Process | PR-7 | Step Testing |
| Process | PR-8 | Borehole Drilling |
| Process | PR-9 | Funding |
| Site Area | BB | Batterie Beach and Haul Road South |
| Site Area | CMP | Ranobe road and Camp |
| Site Area | FB | Firehenana Bridge |
| Site Area | HRN | Haul Road North |
| Site Area | MS | Mine Site |
| Site Area | OS | Off Site |
| Site Area | PRT | Existing Port |

# Madagascar Community Development

Schedule from Primavera P6, 2025-09-24 to 2026-02-03, data date 2025-04-07.
Must finish by 2026-04-15

## Calendars

- BT-11 Standard 5 day Workweek - G: Mon-Fri 08:00-12:00, 13:00-17:00; Sat-Sun off. Exceptions (off unless hours are given): 2025-12-17 to 2025-12-19, 2025-12-22 to 2025-12-26, 2025-12-29 to 2026-01-02, 2026-01-05.

## Schedule

| ID | WBS | Activity | Duration | Start | Finish | Planned start | Planned finish | Total float | Free float |
| --- | --- | --- | --- | --- | --- | --- | --- | --- | --- |
|  | 3 | **Ground Water Development (Community Water)** |  |  |  |  |  |  |  |
|  | 3 | **Environmental** |  |  |  |  |  |  |  |
|  | 1 | **Construction** |  |  |  |  |  |  |  |
|  | 5 | **Tomb Construction** |  |  |  |  |  |  |  |
|  | 2 | **Recruitment and renewal of Tomb Construction Technicians and Panel** |  |  |  |  |  |  |  |
|  | 3 | **Construction of Tombs and Rituals for bone displacements** |  |  |  |  |  |  |  |
|  | 1 | **Construction of Wave 1 (20 tombs)** |  |  |  |  |  |  |  |
|  | 1 | **Rituals for bone displacement** |  |  |  |  |  |  |  |
|  | 2 | **Construction of Wave 2 (20 tombs)** |  |  |  |  |  |  |  |
|  | 1 | **Rituals for bone displacement** |  |  |  |  |  |  |  |
|  | 3 | **Construction of Wave 3 (20 tombs)** |  |  |  |  |  |  |  |
|  | 1 | **Rituals for bone displacement** |  |  |  |  |  |  |  |
|  | 4 | **Cultural Heritage Site processes** |  | 2025-09-24 | 2026-02-03 |  |  |  |  |
|  | 1 | **Mine Site Area** |  | 2025-09-24 | 2025-10-22 |  |  |  |  |
| A7720 |  | Perform Ritual ceremonies for the removal of site (Mine Site Area) | 20d | 2025-09-24 | 2025-10-22 | 2026-03-10 | 2026-04-09 | 108.79d | 109.79d |
|  | 4 | **Haul road and Firehenana Bridge** |  | 2025-11-19 | 2026-01-06 |  |  |  |  |
| A7770 |  | Perform Ritual ceremonies for the removal of site (Firehenana Bridge) | 20d | 2025-11-19 | 2026-01-06 | 2026-03-03 | 2026-03-31 | 68.79d | 69.79d |
|  | 5 | **Batterie Beach** |  | 2026-01-06 | 2026-02-03 |  |  |  |  |
| A7820 |  | Perform Ritual ceremonies for the removal of site (Batterie Beach) | 20d | 2026-01-06 | 2026-02-03 | 2026-03-10 | 2026-04-09 | 48.79d | 49.79d |
|  | 6 | **Other Construction Projects** |  |  |  |  |  |  |  |
|  | 1 | **1) Ranobe (Commune Ankilimalinke) Hospital** |  |  |  |  |  |  |  |
|  | 2 | **2) Maromiandra (Commune Maromiandra) Hospital** |  |  |  |  |  |  |  |
|  | 3 | **3) Anketrake (Urban Commune) Dispenser** |  |  |  |  |  |  |  |
|  | 4 | **4) Ranobe (Commune Ankilimalinike) School** |  |  |  |  |  |  |  |
|  | 5 | **5) Maromiandra (Commune Maromiandra) School** |  |  |  |  |  |  |  |
|  | 6 | **6) Ambohitsabo (Urban Commune) Creche** |  |  |  |  |  |  |  |
|  | 7 | **7) Rehabilitation of Benetse Borehole Solar pump water tower** |  |  |  |  |  |  |  |
|  | 8 | **8) Tsianasiha Water tank tower fence** |  |  |  |  |  |  |  |
|  | 9 | **9) Ranobe water tank tower fence** |  |  |  |  |  |  |  |
|  | 10 | **10) Tsiafanoka water tower and fence** |  |  |  |  |  |  |  |
|  | 11 | **11) Public Laundries** |  |  |  |  |  |  |  |
|  | 12 | **12) Fokontany Electricity and Water supply** |  |  |  |  |  |  |  |
|  | 13 | **13) Rehabilitiation of Football fields** |  |  |  |  |  |  |  |
|  | 14 | **14) Rehabilitation of Basket ball court at Manarapenitre Hospital** |  |  |  |  |  |  |  |
|  | 15 | **15) Rehabilitation of Basket ball court at FJKM Church** |  |  |  |  |  |  |  |
|  | 16 | **16) Seeds Program** |  |  |  |  |  |  |  |
|  | 17 | **17) Dregging of the Andoharano Irrigation channel** |  |  |  |  |  |  |  |
|  | 18 | **18) Batterrie Beach Fishermen's community support project** |  |  |  |  |  |  |  |
|  | 19 | **19) Livelihood Project** |  |  |  |  |  |  |  |
|  | 20 | **20) Tutudesk** |  |  |  |  |  |  |  |
|  | 21 | **(New WBS)** |  |  |  |  |  |  |  |
|  | 22 | **22) Community School Kits** |  |  |  |  |  |  |  |
|  | 23 | **23) Donation** |  |  |  |  |  |  |  |
|  | 24 | **24) Rehabilitation of community football fields with equipment** |  |  |  |  |  |  |  |
|  | 25 | **25) Village Drill** |  |  |  |  |  |  |  |
|  | 26 | **26) Agri Project** |  |  |  |  |  |  |  |
|  | 27 | **27) Distribution of school suplies for the 05 Fokotany** |  |  |  |  |  |  |  |
|  | 28 | **28) Distribution of medicines for common diseases** |  |  |  |  |  |  |  |
|  | 29 | **29) Electricity Supply for Ambohitsabo, Anketrake, Besakoa** |  |  |  |  |  |  |  |
|  | 30 | **30) Cleaning and slight rehabilitation at for Ambohitsabo, Anketrake, Besakoa** |  |  |  |  |  |  |  |
|  | 31 | **31) Supply of Table-bench or tutorialbench to primary schools** |  |  |  |  |  |  |  |
|  | 32 | **32) Road signs of the Urban Commune of Toliara** |  |  |  |  |  |  |  |
